How a schedule from MS Project changed from version to version. A marks actual dates.

## Version 1 (saved 2010-06-28)

Note of the change: git-svn-id: https://ncisvn.nci.nih.gov/svn/cacoresdk/trunk@1036 221b6c9c-8bdd-4aed-8ce9-b1cbd18b7e1b

| ID | WBS | Task | Duration | Start | Finish | Predecessors | Total float | Constraint |
| --- | --- | --- | --- | --- | --- | --- | --- | --- |
| 2 | 1 | **Project management and set-up tasks** | 108d | 2010-05-20 | 2010-10-21 |  | 0d |  |
| 3 | 1.1 | **Inception** | 21d | 2010-05-20 | 2010-06-18 |  | 87d |  |
| 4 |  | Project awarded | 0d | 2010-05-20 | 2010-05-20 |  | 108d | start no earlier than 2010-05-20 |
| 5 |  | Kickoff meeting | 1d | 2010-05-28 | 2010-05-28 |  | 101d | start no earlier than 2010-05-28 |
| 6 |  | Draft Project Management Plan | 10d | 2010-06-07 | 2010-06-18 |  | 87d | start no earlier than 2010-06-07 |
| 7 | 1.1.4 | **New member ramp-up & SDK training** | 6d | 2010-06-07 | 2010-06-14 |  | 91d |  |
| 8 |  | Self study | 5d | 2010-06-07 | 2010-06-11 |  | 92d | start no earlier than 2010-06-07 |
| 9 |  | SDK training class | 1d | 2010-06-14 | 2010-06-14 |  | 91d | start no earlier than 2010-06-14 |
| 10 | 1.2 | **Elaboration** | 10d | 2010-06-21 | 2010-07-02 |  | 77d |  |
| 11 |  | Review and deliver Project Management Plan | 5d | 2010-06-21 | 2010-06-25 |  | 82d | start no earlier than 2010-06-21 |
| 12 |  | Scope document | 10d | 2010-06-21 | 2010-07-02 |  | 77d | start no earlier than 2010-06-21 |
| 13 |  | Design Review Package - note: will not be 10 days before C1 | 10d | 2010-06-21 | 2010-07-02 | 12FF, 54FF, 87FF | 77d |  |
| 14 | 1.3 | **Transition** | 5d | 2010-10-01 | 2010-10-07 |  | 0d | start no earlier than 2010-09-27 |
| 15 |  | Project Summary Report | 5d | 2010-10-01 | 2010-10-07 | 77 | -1d | finish no later than 2010-10-07 |
| 16 | 1.4 | **Monthly status reports** | 86d | 2010-06-10 | 2010-10-11 |  | 8d |  |
| 17 |  | Monthly status report 1 | 1d | 2010-06-10 | 2010-06-10 |  | 93d | start no earlier than 2010-06-10 |
| 18 |  | Monthly status report 2 | 1d | 2010-07-12 | 2010-07-12 |  | 72d | start no earlier than 2010-07-10 |
| 19 |  | Monthly status report 3 | 1d | 2010-08-10 | 2010-08-10 |  | 51d | start no earlier than 2010-08-10 |
| 20 |  | Monthly status report 4 | 1d | 2010-09-10 | 2010-09-10 |  | 29d | start no earlier than 2010-09-10 |
| 21 |  | Monthly status report 5 | 1d | 2010-10-11 | 2010-10-11 |  | 8d | start no earlier than 2010-10-10 |
| 22 |  | Project Completion | 0d | 2010-10-21 | 2010-10-21 |  | 0d | must finish on 2010-10-21 |
| 24 | 2 | **SDK 4.3 release** | 19d | 2010-05-28 | 2010-06-24 |  | 83d |  |
| 25 |  | QA support | 6d | 2010-05-28 | 2010-06-07 |  | 96d | start no earlier than 2010-05-28 |
| 26 |  | Unit testing | 6d | 2010-06-02 | 2010-06-09 |  | 94d | start no earlier than 2010-06-02 |
| 27 | 2.3 | **Update guides** | 5d | 2010-06-01 | 2010-06-07 |  | 96d |  |
| 28 |  | Workbench Users Guide | 1d | 2010-06-01 | 2010-06-01 |  | 96d | start no earlier than 2010-06-01 |
| 29 |  | SDK Programmers Guide | 1d | 2010-06-02 | 2010-06-02 | 28 | 96d |  |
| 30 |  | UML Modeling Guide | 1d | 2010-06-03 | 2010-06-03 | 29 | 96d |  |
| 31 |  | Object Relational Mapping Guide | 1d | 2010-06-04 | 2010-06-04 | 30 | 96d |  |
| 32 |  | How To Use SDK Guide | 1d | 2010-06-07 | 2010-06-07 | 31 | 96d |  |
| 33 | 2.4 | **Update documentation** | 10d | 2010-06-07 | 2010-06-18 |  | 87d |  |
| 34 |  | ISO Common Architectural Overview | 2d | 2010-06-07 | 2010-06-08 |  | 87d | start no earlier than 2010-06-07 |
| 35 |  | SDK release notes | 2d | 2010-06-09 | 2010-06-10 | 34 | 87d |  |
| 36 |  | Workbench release notes | 2d | 2010-06-11 | 2010-06-14 | 35 | 87d |  |
| 37 |  | ISO Common release notes | 1d | 2010-06-15 | 2010-06-15 | 36 | 87d |  |
| 38 |  | SDK:Example/ISOExample readme | 1d | 2010-06-16 | 2010-06-16 | 37 | 87d |  |
| 39 |  | Workbench readme | 1d | 2010-06-17 | 2010-06-17 | 38 | 87d |  |
| 40 |  | ISO Common readme | 1d | 2010-06-18 | 2010-06-18 | 39 | 87d |  |
| 41 |  | Release preparation (gforge, download center, etc.) | 10d | 2010-06-07 | 2010-06-18 |  | 87d | start no earlier than 2010-06-07 |
| 42 |  | Workbench deployment, release packaging, readme | 3d | 2010-06-11 | 2010-06-15 |  | 90d | start no earlier than 2010-06-11 |
| 43 |  | User acceptance testing | 5d | 2010-06-14 | 2010-06-18 |  | 87d | start no earlier than 2010-06-14 |
| 44 |  | Release ready | 0d | 2010-06-21 | 2010-06-21 |  | 83d | start no earlier than 2010-06-21 |
| 45 |  | Release announcement | 0d | 2010-06-22 | 2010-06-22 |  | 86d | start no earlier than 2010-06-22 |
| 46 |  | Software Code Base (4.3) | 1d | 2010-06-24 | 2010-06-24 | 44FS+3d | 83d | start no earlier than 2010-06-15 |
| 47 |  | Deployment Package (4.3) | 1d | 2010-06-24 | 2010-06-24 | 44FS+3d | 83d | start no earlier than 2010-06-15 |
| 49 | 3 | **ISO 21090 Java library 2.2** | 79d | 2010-06-21 | 2010-10-11 |  | 8d |  |
| 50 | 3.1 | **Elaboration** | 10d | 2010-06-21 | 2010-07-02 |  | 58d | start no earlier than 2010-06-21 |
| 51 | 3.1.1 | **E1 - Sprint 1** | 10d | 2010-06-21 | 2010-07-02 |  | 58d |  |
| 52 |  | Gap Analysis | 4d | 2010-06-21 | 2010-06-24 |  | 58d |  |
| 53 |  | Functional Specifications | 3d | 2010-06-25 | 2010-06-29 | 52 | 58d | start no earlier than 2010-06-21 |
| 54 |  | Design Specifications | 3d | 2010-06-30 | 2010-07-02 | 53 | 58d | start no earlier than 2010-06-15 |
| 55 | 3.2 | **Construction** | 58d | 2010-07-06 | 2010-09-24 |  | 19d |  |
| 56 | 3.2.1 | **C1- Sprint 2** | 19d | 2010-07-06 | 2010-07-30 |  | 58d | start no earlier than 2010-07-06 |
| 57 |  | Finalized requirements from PODS/COPPA | 0d | 2010-07-06 | 2010-07-06 | 54 | 58d |  |
| 58 |  | Add data types for PODS/COPPA if required | 0d | 2010-07-06 | 2010-07-06 | 57 | 58d | start no earlier than 2010-06-28 |
| 59 |  | Support all attributes for existing datatypes | 16d | 2010-07-06 | 2010-07-27 | 58 | 58d |  |
| 60 |  | Sprint C1 Integration | 3d | 2010-07-28 | 2010-07-30 | 59 | 58d |  |
| 61 | 3.2.2 | **C2 - Sprint 3** | 20d | 2010-08-02 | 2010-08-27 |  | 38d | start no earlier than 2010-08-02 |
| 62 |  | Define new data types to add | 2d | 2010-08-02 | 2010-08-03 |  | 38d | start no earlier than 2010-06-28 |
| 63 |  | Add additional data types (with all attributes) | 13d | 2010-08-04 | 2010-08-20 | 62 | 38d |  |
| 64 |  | Test Plan | 5d | 2010-08-06 | 2010-08-13 | 66FF | 49d |  |
| 65 |  | Revisit new data types listing and adjust test plan | 1d | 2010-08-12 | 2010-08-13 | 64FF | 49d |  |
| 66 |  | Test Plan Due | 0d | 2010-08-13 | 2010-08-13 |  | 49d | start no earlier than 2010-08-13 |
| 67 |  | Sprint C2 Integration | 5d | 2010-08-23 | 2010-08-27 | 63 | 38d |  |
| 68 | 3.2.3 | **C3 - Sprint 4 (QA)** | 19d | 2010-08-30 | 2010-09-24 |  | -1d | start no earlier than 2010-08-30 |
| 69 |  | Code base available for QA | 0d | 2010-08-30 | 2010-08-30 |  | 38d |  |
| 70 |  | QA Support | 19d | 2010-08-30 | 2010-09-24 |  | -1d |  |
| 71 | 3.2.3.3 | **Update documentation** | 5d | 2010-08-30 | 2010-09-03 |  | 13d |  |
| 72 |  | ISO Common Architectural Overview | 2d | 2010-08-30 | 2010-08-31 |  | 13d |  |
| 73 |  | ISO Common release notes | 2d | 2010-09-01 | 2010-09-02 | 72 | 13d |  |

| ID | WBS | Task | Duration | Start | Finish | Predecessors | Total float | Constraint |
| --- | --- | --- | --- | --- | --- | --- | --- | --- |
| 74 |  | ISO Common readme | 1d | 2010-09-03 | 2010-09-03 | 73 | 13d |  |
| 75 |  | Download Center updates | 2d | 2010-09-23 | 2010-09-24 |  | -1d | finish no earlier than 2010-09-24 |
| 76 | 3.3 | **Transition** | 11d | 2010-09-27 | 2010-10-11 |  | -1d |  |
| 77 |  | User Acceptance Testing | 5d | 2010-09-27 | 2010-10-01 | 70, 71, 75 | -1d |  |
| 78 |  | Test Package | 1d | 2010-10-04 | 2010-10-04 | 77 | 8d |  |
| 79 |  | ISO 21090 Java Library 2.2 Release | 1d | 2010-10-05 | 2010-10-05 | 78 | 8d |  |
| 80 |  | Software Code Base (2.2) | 1d | 2010-10-11 | 2010-10-11 | 79FS+3d | 8d |  |
| 81 |  | Deployment Package (2.2) | 1d | 2010-10-11 | 2010-10-11 | 79FS+3d | 8d |  |
| 83 | 4 | **SDK 4.4 release (using 2.1 library, integrated with caGrid 1.4)** | 79d | 2010-06-21 | 2010-10-11 |  | 8d |  |
| 84 | 4.1 | **Elaboration** | 10d | 2010-06-21 | 2010-07-02 |  | 77d |  |
| 85 | 4.1.1 | **E1 - Sprint 1** | 10d | 2010-06-21 | 2010-07-02 |  | 77d |  |
| 86 |  | Functional Specifications | 5d | 2010-06-21 | 2010-06-25 |  | 77d | start no earlier than 2010-06-21 |
| 87 |  | Design Specifications | 5d | 2010-06-28 | 2010-07-02 | 86 | 77d | start no earlier than 2010-06-15 |
| 88 | 4.2 | **Construction** | 58d | 2010-07-06 | 2010-09-24 |  | 19d |  |
| 89 | 4.2.1 | **C1- Sprint 2** | 19d | 2010-07-06 | 2010-07-30 |  | 38d | start no earlier than 2010-07-06 |
| 90 |  | caGrid code freeze | 0d | 2010-07-06 | 2010-07-06 |  | 77d | start no earlier than 2010-07-06 |
| 91 |  | Meet with SI regarding metadata repository integration | 10d | 2010-07-06 | 2010-07-19 |  | 47d | start no earlier than 2010-06-28 |
| 92 |  | Known issues from 4.3 | 4d | 2010-07-06 | 2010-07-09 |  | 73d | start no earlier than 2010-06-21 |
| 93 |  | Known issues from 4.3 | 4d | 2010-07-20 | 2010-07-23 | 135 | 63d | start no earlier than 2010-06-28 |
| 94 |  | Web Tier / UI widgets | 14d | 2010-07-06 | 2010-07-23 |  | 38d | start no earlier than 2010-06-15 |
| 95 |  | caGrid 1.4 integration | 10d | 2010-07-12 | 2010-07-23 |  | 38d | start no earlier than 2010-07-12 |
| 96 |  | Sprint C1 Integration | 5d | 2010-07-26 | 2010-07-30 | 94, 95 | 38d | start no earlier than 2010-06-15 |
| 97 | 4.2.2 | **C2 - Sprint 3** | 20d | 2010-08-02 | 2010-08-27 |  | 38d | start no earlier than 2010-08-02 |
| 98 |  | Metada repository integration (MMS) | 15d | 2010-08-02 | 2010-08-20 | 91 | 38d | start no earlier than 2010-06-28 |
| 99 |  | Query-by-example | 15d | 2010-08-02 | 2010-08-20 | 96 | 38d | start no earlier than 2010-06-23 |
| 100 |  | CQL capability | 4d | 2010-08-02 | 2010-08-05 |  | 54d | start no earlier than 2010-06-28 |
| 101 |  | Test Plan | 5d | 2010-08-06 | 2010-08-13 | 102FF | 38d |  |
| 102 |  | Test Plan Due | 0d | 2010-08-13 | 2010-08-13 |  | 38d | start no earlier than 2010-08-13 |
| 103 |  | RESTful API's | 6d | 2010-08-13 | 2010-08-20 | 101 | 38d | start no earlier than 2010-06-28 |
| 104 |  | Sprint C2 Integration | 5d | 2010-08-23 | 2010-08-27 | 98, 99, 103 | 38d | start no earlier than 2010-07-26 |
| 105 | 4.2.3 | **C3 - Sprint 4 (QA)** | 19d | 2010-08-30 | 2010-09-24 |  | 19d | start no earlier than 2010-08-30 |
| 106 |  | Code base available for QA | 0d | 2010-08-30 | 2010-08-30 |  | 38d | start no earlier than 2010-06-23 |
| 107 |  | QA Support | 19d | 2010-08-30 | 2010-09-24 |  | 19d | start no earlier than 2010-06-15 |
| 108 | 4.2.3.3 | **Update documentation** | 7d | 2010-09-01 | 2010-09-10 |  | 29d |  |
| 109 |  | SDK release notes | 2d | 2010-09-01 | 2010-09-02 |  | 34d | start no earlier than 2010-09-01 |
| 110 |  | Workbench release notes | 2d | 2010-09-03 | 2010-09-07 |  | 32d | start no earlier than 2010-09-03 |
| 111 |  | SDK:Example/ISOExample readme | 1d | 2010-09-09 | 2010-09-09 |  | 30d | start no earlier than 2010-09-09 |
| 112 |  | Workbench readme | 1d | 2010-09-10 | 2010-09-10 |  | 29d | start no earlier than 2010-09-10 |
| 113 | 4.2.3.4 | **Update guides** | 16d | 2010-08-30 | 2010-09-21 |  | 22d |  |
| 114 |  | Workbench Users Guide | 4d | 2010-08-30 | 2010-09-02 |  | 34d | start no earlier than 2010-06-21 |
| 115 |  | SDK Programmers Guide | 4d | 2010-09-03 | 2010-09-09 |  | 30d | start no earlier than 2010-09-03 |
| 116 |  | UML Modeling Guide | 4d | 2010-09-09 | 2010-09-14 |  | 27d | start no earlier than 2010-09-09 |
| 117 |  | Object Relational Mapping Guide | 4d | 2010-09-15 | 2010-09-20 |  | 23d | start no earlier than 2010-09-15 |
| 118 |  | How To Use SDK Guide | 4d | 2010-09-16 | 2010-09-21 |  | 22d | start no earlier than 2010-09-16 |
| 119 |  | Download Center updates | 2d | 2010-09-23 | 2010-09-24 |  | 19d | finish no earlier than 2010-09-24 |
| 120 | 4.3 | **Transition** | 11d | 2010-09-27 | 2010-10-11 |  | 8d |  |
| 121 |  | User Acceptance Testing | 5d | 2010-09-27 | 2010-10-01 |  | 14d | start no earlier than 2010-09-27 |
| 122 |  | Test Package | 1d | 2010-10-04 | 2010-10-04 |  | 13d | start no earlier than 2010-10-04 |
| 123 |  | SDK 4.4 Release | 1d | 2010-10-05 | 2010-10-05 |  | 8d | start no earlier than 2010-10-05 |
| 124 |  | Software Code Base (4.4) | 1d | 2010-10-11 | 2010-10-11 | 123FS+3d | 8d | start no earlier than 2010-06-15 |
| 125 |  | Deployment Package (4.4) | 1d | 2010-10-11 | 2010-10-11 | 123FS+3d | 8d | start no earlier than 2010-06-15 |
| 127 | 5 | **Tool enhancement prototypes** | 78d | 2010-06-21 | 2010-10-08 |  | 9d |  |
| 128 | 5.1 | **Elaboration** | 10d | 2010-06-21 | 2010-07-02 |  | 38d |  |
| 129 | 5.1.1 | **E1 - Sprint 1** | 10d | 2010-06-21 | 2010-07-02 |  | 38d |  |
| 130 |  | Top-down analysis paper - research and rough cut | 10d | 2010-06-21 | 2010-07-02 |  | 63d | start no earlier than 2010-06-21 |
| 131 |  | Bottom-up analysis paper - research and rough cut | 10d | 2010-06-21 | 2010-07-02 |  | 38d | start no earlier than 2010-06-21 |
| 132 |  | Eclipse service creation wizard research | 10d | 2010-06-21 | 2010-07-02 |  | 38d | start no earlier than 2010-06-21 |
| 133 | 5.2 | **Construction** | 58d | 2010-07-06 | 2010-09-24 |  | 19d |  |
| 134 | 5.2.1 | **C1- Sprint 2** | 19d | 2010-07-06 | 2010-07-30 |  | 38d | start no earlier than 2010-07-06 |
| 135 |  | Top-down analysis paper | 10d | 2010-07-06 | 2010-07-19 | 130 | 63d | start no earlier than 2010-06-15 |
| 136 |  | Bottom-up analysis paper | 10d | 2010-07-06 | 2010-07-19 | 131 | 38d | start no earlier than 2010-06-15 |
| 137 |  | Eclipse service creation wizard - initial prototype | 19d | 2010-07-06 | 2010-07-30 | 132 | 38d | start no earlier than 2010-06-21 |
| 138 |  | Eclipse EMF prototype research | 9d | 2010-07-20 | 2010-07-30 | 136 | 38d | start no earlier than 2010-06-15 |
| 139 | 5.2.2 | **C2 - Sprint 3** | 20d | 2010-08-02 | 2010-08-27 |  | 38d | start no earlier than 2010-08-02 |
| 140 |  | Eclipse service creation wizard refinements | 20d | 2010-08-02 | 2010-08-27 | 137 | 38d | start no earlier than 2010-06-21 |
| 141 |  | Eclipse EMF prototype | 20d | 2010-08-02 | 2010-08-27 | 138 | 38d | start no earlier than 2010-06-21 |
| 142 | 5.2.3 | **C3 - Sprint 4 (QA)** | 19d | 2010-08-30 | 2010-09-24 |  | 19d | start no earlier than 2010-08-30 |
| 143 |  | TBD | 19d | 2010-08-30 | 2010-09-24 |  | 19d | start no earlier than 2010-06-15 |
| 144 | 5.3 | **Transition** | 10d | 2010-09-27 | 2010-10-08 |  | 9d | start no earlier than 2010-09-27 |
| 145 |  | TBD | 10d | 2010-09-27 | 2010-10-08 |  | 9d | start no earlier than 2010-06-28 |

| ID | WBS | Task | Duration | Start | Finish | Total float | Constraint |
| --- | --- | --- | --- | --- | --- | --- | --- |
| 147 |  | User support - ongoing | 93d | 2010-05-28 | 2010-10-08 | 9d | start no earlier than 2010-05-28 |
| 149 | 7 | **Major events affecting availability** | 75d | 2010-06-01 | 2010-09-15 | 26d |  |
| 150 |  | VCDE-Architecture Face To Face & Prep | 4d | 2010-06-01 | 2010-06-04 | 97d | start no earlier than 2010-06-01 |
| 151 |  | caBIG Annual Meeting & Prep | 5d | 2010-09-09 | 2010-09-15 | 26d | start no earlier than 2010-09-09 |
| 153 | 8 | **Vacation** | 24d | 2010-07-20 | 2010-08-20 | 19d |  |
| 154 |  | Greg | 1d | 2010-07-20 | 2010-07-20 | 66d | start no earlier than 2010-07-20 |
| 155 |  | Greg | 5d | 2010-08-09 | 2010-08-13 | 48d | start no earlier than 2010-08-09 |
| 156 |  | Vijay | 5d | 2010-08-16 | 2010-08-20 | 0d | must start on 2010-08-16 |
| 158 |  | Contract deliverables are in blue | 0d | 2010-05-20 | 2010-05-20 | 108d |  |
| 159 |  | Key dates for interactions with external teams are in green | 0d | 2010-06-23 | 2010-06-23 | 85d | start no earlier than 2010-06-23 |

## Version 2 (saved 2010-07-08)

Note of the change: git-svn-id: https://ncisvn.nci.nih.gov/svn/cacoresdk/trunk@1043 221b6c9c-8bdd-4aed-8ce9-b1cbd18b7e1b

Last finish stays 2010-10-21.

Added:

| ID | Task | Duration | Start | Finish | Predecessors | Constraint | Resources |
| --- | --- | --- | --- | --- | --- | --- | --- |
| 57 | Design specifications | 4d | 2010-07-06 | 2010-07-09 | 54 | start no earlier than 2010-07-06 | Vijay; Santhosh |
| 91 | Design specifications | 4d | 2010-07-06 | 2010-07-09 |  | start no earlier than 2010-07-06 | Dan |

Changed:

| ID | Task | Start | Finish | Duration | Total float | Predecessors | Other |
| --- | --- | --- | --- | --- | --- | --- | --- |
| 10 | **Elaboration** |  | 2010-07-02 → 2010-07-09 (+7d) | 10d → 14d | 77d → 73d |  |  |
| 12 | Scope document |  | 2010-07-02 → 2010-07-07 (+5d) | 10d → 12d | 77d → 75d |  |  |
| 13 | Design Review Package - note: will not be 10 days before C1 | 2010-06-21 → 2010-06-25 (+4d) | 2010-07-02 → 2010-07-09 (+7d) |  | 77d → 73d | 12FF, 54FF, 88FF → 12FF, 57FF, 91FF |  |
| 52 | Gap Analysis |  |  |  |  |  | resources none → Vijay |
| 58 | Finalized requirements from PODS/COPPA |  |  |  | 58d → 62d | 54 → none |  |
| 60 | Support all attributes for existing datatypes | 2010-07-06 → 2010-07-12 (+6d) |  | 16d → 12d |  | 59 → 59, 57 |  |
| 96 | Web Tier / UI widgets | 2010-07-06 → 2010-07-12 (+6d) |  | 14d → 10d |  | none → 91 |  |

## Version 3 (saved 2010-07-13)

Note of the change: git-svn-id: https://ncisvn.nci.nih.gov/svn/cacoresdk/trunk@1060 221b6c9c-8bdd-4aed-8ce9-b1cbd18b7e1b

Last finish stays 2010-10-21. Complete tasks 0 → 36.

Added:

| ID | Task | Duration | Start | Finish | Predecessors | Constraint | Resources |
| --- | --- | --- | --- | --- | --- | --- | --- |
| 64 | Finalized design documents to QA | 0d | 2010-08-09 | 2010-08-09 |  | start no earlier than 2010-08-09 |  |
| 76 | Final product documentation to QA | 0d | 2010-09-20 | 2010-09-20 |  | start no earlier than 2010-09-20 |  |
| 78 | QA Complete | 0d | 2010-09-24 | 2010-09-24 |  | start no earlier than 2010-09-24 |  |
| 94 | SDK_4.4_ISO_Data_Type_Support_within_Web_UI_Design_Document.docx | 4d | 2010-07-06 A | 2010-07-09 A | 90 |  | Dan |
| 95 | SDK 4.4_ISO_Data_Type_Support.EAP | 4d | 2010-07-06 A | 2010-07-09 A | 90 |  | Dan |
| 96 | RESTfulAPI_Design.docx | 4d | 2010-07-06 A | 2010-07-09 A | 90 |  | Santhosh |
| 97 | Using JAXB with ISO 21090 data types.doc | 1d | 2010-07-08 A | 2010-07-08 A |  | start no earlier than 2010-07-08 | Prasad |
| 108 | Finalized design documents to QA | 0d | 2010-08-09 | 2010-08-09 |  | start no earlier than 2010-08-09 |  |
| 127 | Final product documentation to QA | 0d | 2010-09-20 | 2010-09-20 |  | start no earlier than 2010-09-20 |  |
| 129 | QA Complete | 0d | 2010-09-24 | 2010-09-24 |  | start no earlier than 2010-09-24 |  |
| 158 | Training development support | 10d? | 2010-07-19 | 2010-07-30 |  | start no earlier than 2010-07-19 | Satish |
| 170 | Non-contract deliverables are in maroon | 0d | 2010-07-13 | 2010-07-13 |  | start no earlier than 2010-07-13 |  |

Removed: 53 Functional Specifications; 94 Known issues from 4.3

Changed:

| ID | Task | Start | Finish | Duration | Complete | Total float | Predecessors | Other |
| --- | --- | --- | --- | --- | --- | --- | --- | --- |
| 2 | **Project management and set-up tasks** | 2010-05-20 A |  |  | 0% → 67% |  |  |  |
| 3 | **Inception** | 2010-05-20 A | 2010-06-18 A |  | 0% → 100% | 87d → none |  |  |
| 4 | Project awarded | 2010-05-20 A | 2010-05-20 A |  | 0% → 100% | 108d → none |  |  |
| 5 | Kickoff meeting | 2010-05-28 A | 2010-05-28 A |  | 0% → 100% | 101d → none |  |  |
| 6 | Draft Project Management Plan | 2010-06-07 A | 2010-06-18 A |  | 0% → 100% | 87d → none |  |  |
| 7 | **New member ramp-up & SDK training** | 2010-06-07 A | 2010-06-14 A |  | 0% → 100% | 91d → none |  |  |
| 8 | Self study | 2010-06-07 A | 2010-06-11 A |  | 0% → 100% | 92d → none |  |  |
| 9 | SDK training class | 2010-06-14 A | 2010-06-14 A |  | 0% → 100% | 91d → none |  |  |
| 10 | **Elaboration** | 2010-06-21 A | 2010-07-09 → 2010-07-14 (+5d) | 14d → 17d | 0% → 63% | 73d → 70d |  |  |
| 11 | Review and deliver Project Management Plan | 2010-06-21 A | 2010-06-25 A |  | 0% → 100% | 82d → none |  |  |
| 12 | Scope document (charter) | 2010-06-21 A | 2010-07-07 A |  | 0% → 100% | 75d → none |  | was named Scope document |
| 13 | Design Review Package - note: will not be 10 days before C1 | 2010-06-25 → 2010-06-30 (+5d) | 2010-07-09 → 2010-07-14 (+5d) |  |  | 73d → 70d |  |  |
| 16 | **Monthly status reports** | 2010-06-10 A |  |  | 0% → 40% |  |  |  |
| 17 | Monthly status report 1 | 2010-06-10 A | 2010-06-10 A |  | 0% → 100% | 93d → none |  |  |
| 18 | Monthly status report 2 | 2010-07-12 A | 2010-07-12 A |  | 0% → 100% | 72d → none |  |  |
| 24 | **SDK 4.3 release** | 2010-05-28 A |  |  | 0% → 96% |  |  |  |
| 25 | QA support | 2010-05-28 A | 2010-06-07 A |  | 0% → 100% | 96d → none |  |  |
| 26 | Unit testing | 2010-06-02 A | 2010-06-09 A |  | 0% → 100% | 94d → none |  |  |
| 27 | **Update guides** | 2010-06-01 A | 2010-06-07 A |  | 0% → 100% | 96d → none |  |  |
| 28 | Workbench Users Guide | 2010-06-01 A | 2010-06-01 A |  | 0% → 100% | 96d → none |  |  |
| 29 | SDK Programmers Guide | 2010-06-02 A | 2010-06-02 A |  | 0% → 100% | 96d → none |  |  |
| 30 | UML Modeling Guide | 2010-06-03 A | 2010-06-03 A |  | 0% → 100% | 96d → none |  |  |
| 31 | Object Relational Mapping Guide | 2010-06-04 A | 2010-06-04 A |  | 0% → 100% | 96d → none |  |  |
| 32 | How To Use SDK Guide | 2010-06-07 A | 2010-06-07 A |  | 0% → 100% | 96d → none |  |  |
| 33 | **Update documentation** | 2010-06-07 A | 2010-06-18 A |  | 0% → 100% | 87d → none |  |  |
| 34 | ISO Common Architectural Overview | 2010-06-07 A | 2010-06-08 A |  | 0% → 100% | 87d → none |  |  |
| 35 | SDK release notes | 2010-06-09 A | 2010-06-10 A |  | 0% → 100% | 87d → none |  |  |
| 36 | Workbench release notes | 2010-06-11 A | 2010-06-14 A |  | 0% → 100% | 87d → none |  |  |
| 37 | ISO Common release notes | 2010-06-15 A | 2010-06-15 A |  | 0% → 100% | 87d → none |  |  |
| 38 | SDK:Example/ISOExample readme | 2010-06-16 A | 2010-06-16 A |  | 0% → 100% | 87d → none |  |  |
| 39 | Workbench readme | 2010-06-17 A | 2010-06-17 A |  | 0% → 100% | 87d → none |  |  |
| 40 | ISO Common readme | 2010-06-18 A | 2010-06-18 A |  | 0% → 100% | 87d → none |  |  |
| 41 | Release preparation (gforge, download center, etc.) | 2010-06-07 A | 2010-06-18 A |  | 0% → 100% | 87d → none |  |  |
| 42 | Workbench deployment, release packaging, readme | 2010-06-11 A | 2010-06-15 A |  | 0% → 100% | 90d → none |  |  |
| 43 | User acceptance testing | 2010-06-14 A | 2010-06-18 A |  | 0% → 100% | 87d → none |  |  |
| 44 | Release ready | 2010-06-21 A | 2010-06-21 A |  | 0% → 100% | 83d → none |  |  |
| 45 | Release announcement | 2010-06-22 A | 2010-06-22 A |  | 0% → 100% | 86d → none |  |  |
| 49 | **ISO 21090 Java library 2.2** | 2010-06-21 A |  |  | 0% → 17% |  |  |  |
| 50 | **Elaboration** | 2010-06-21 A | 2010-07-02 A |  | 0% → 100% | 58d → none |  |  |
| 51 | **E1 - Sprint 1** | 2010-06-21 A | 2010-07-02 A |  | 0% → 100% | 58d → none |  |  |
| 52 | Gap Analysis | 2010-06-21 A | 2010-06-24 A |  | 0% → 100% | 58d → none |  |  |
| 53 | Requirements and Design Specifications | 2010-06-30 → 2010-06-25 A (-5d) | 2010-07-02 A | 3d → 6d | 0% → 100% | 58d → none | Functional Specifications → 52 | was named Design Specifications |
| 54 | **Construction** | 2010-07-06 A |  |  | 0% → 7% |  |  |  |
| 55 | **C1- Sprint 2** | 2010-07-06 A |  |  | 0% → 28% |  |  |  |
| 56 | Requirements and Design specifications (cont) | 2010-07-06 A | 2010-07-09 → 2010-07-14 (+5d) | 4d → 7d | 0% → 75% |  |  | was named Design specifications; resources Vijay; Santhosh → Vijay |
| 59 | Support all attributes for existing datatypes | 2010-07-12 → 2010-07-15 (+3d) |  | 12d → 9d |  |  |  |  |
| 81 | (Test Package) |  |  |  |  |  |  | was named Test Package |
| 86 | **SDK 4.4 release (using 2.1 library, integrated with caGrid 1.4)** | 2010-06-21 A |  |  | 0% → 14% |  |  |  |
| 87 | **Elaboration** | 2010-06-21 A | 2010-07-02 A |  | 0% → 100% | 77d → none |  |  |
| 88 | **E1 - Sprint 1** | 2010-06-21 A | 2010-07-02 A |  | 0% → 100% | 77d → none |  |  |
| 89 | Functional Analysis | 2010-06-21 A | 2010-06-25 A |  | 0% → 100% | 77d → none |  | was named Functional Specifications |
| 90 | Requirements and Design Specifications | 2010-06-28 A | 2010-07-02 A |  | 0% → 100% | 77d → none |  | was named Design Specifications; resources Dan → Dan; Santhosh |
| 91 | **Construction** | 2010-07-06 A |  |  | 0% → 9% |  |  |  |
| 92 | **C1- Sprint 2** | 2010-07-06 A |  |  | 0% → 25% | 38d → 58d |  |  |
| 93 | **Requirements and Design specifications (cont)** | 2010-07-06 A | 2010-07-09 A |  | 0% → 100% | 38d → none |  | was named Design specifications; constraint start no earlier than 2010-07-06 → none; resources Dan → none |
| 132 | (Test Package) |  |  |  |  |  |  | was named Test Package |
| 145 | Top-down analysis paper |  |  |  |  |  |  | constraint start no earlier than 2010-06-15 → none; resources Satish; Prasad → none |
| 146 | Bottom-up analysis paper |  |  |  |  |  |  | constraint start no earlier than 2010-06-15 → none |
| 171 | Key dates/tasks for interactions with external teams are in green |  |  |  |  |  |  | was named Key dates for interactions with external teams are in green |

## Version 4 (saved 2010-07-21)

Note of the change: git-svn-id: https://ncisvn.nci.nih.gov/svn/cacoresdk/trunk@1068 221b6c9c-8bdd-4aed-8ce9-b1cbd18b7e1b

Last finish stays 2010-10-21. Complete tasks 36 → 39.

Added:

| ID | Task | Duration | Start | Finish | Predecessors | Constraint | Resources |
| --- | --- | --- | --- | --- | --- | --- | --- |
| 54 | Design analysis | 6d | 2010-06-25 A | 2010-07-02 A | 53 |  | Vijay |
| 58 | **Requirements and Design Specification (cont.)** | 7d | 2010-07-06 A | 2010-07-14 A | 57 |  |  |
| 62 | JAXB Transformers | 4d | 2010-07-23 | 2010-07-28 | 61 | start no earlier than 2010-07-21 | Vijay |
| 67 | PIM Document update | 3d | 2010-08-11 | 2010-08-13 | 65 | start no earlier than 2010-08-11 | Vijay |
| 72 | CI Server | 3d | 2010-08-23 | 2010-08-25 | 66 | start no earlier than 2010-08-23 | Vijay |
| 106 | Conversion of RESTful query to ISO object | 5d | 2010-07-12 A | 2010-07-16 | 101 |  | Santhosh |
| 107 | Query Translator ISO object to HQL Query | 5d | 2010-07-19 A | 2010-07-23 | 106 |  | Santhosh |
| 108 | JUnit test cases (query/object conversions) | 3d | 2010-07-26 | 2010-07-28 | 106, 107 | start no earlier than 2010-07-21 | Santhosh |
| 110 | Modify / unit test Workbench changes to remove API enabling restrictions | 1d | 2010-07-12 A | 2010-07-12 A | 98 |  | Dan |
| 111 | Modify / unit test build scripts to remove API enabling restrictions | 1d | 2010-07-13 A | 2010-07-13 A | 110 |  | Dan |
| 112 | Support Search Criteria input from HTML for all supported ISO data types | 9d | 2010-07-14 A | 2010-07-26 | 111 |  | Dan |
| 116 | Class Cache Map for Searchable fields for GUI | 7d | 2010-08-02 | 2010-08-10 |  | start no earlier than 2010-07-21 | Santhosh |
| 117 | XSLT for GETHTML and GETJSON | 7d | 2010-08-11 | 2010-08-19 |  | start no earlier than 2010-08-11 | Santhosh |
| 118 | Junit test cases (class cache, XSLT) | 2d | 2010-08-20 | 2010-08-23 | 116, 117 | start no earlier than 2010-08-20 | Santhosh |
| 119 | Integrate metadata to only selectively generate ISO data type input fields that are actually mapped to the database | 3d | 2010-08-02 | 2010-08-04 |  | start no earlier than 2010-07-21 | Dan |
| 120 | Integrate submitted ISO data type criteria with existing search functionality | 3d | 2010-08-05 | 2010-08-09 | 119 | start no earlier than 2010-07-21 | Dan |
| 121 | Implement and unit test client-side form validation | 8d | 2010-08-10 | 2010-08-19 | 120 | start no earlier than 2010-07-21 | Dan |
| 159 | Updates, reviews and refinements | 14d | 2010-07-06 | 2010-07-23 |  |  | Prasad |
| 160 | Next Generation caCORE Infrastructure (document) | 0d | 2010-07-23 | 2010-07-23 | 159 |  | Prasad |
| 161 | caCORE Infrastructure - Next Generation Tooling (presentation) | 0d | 2010-07-23 | 2010-07-23 | 159 |  | Prasad |
| 163 | Updates, reviews and refinements | 14d | 2010-07-06 | 2010-07-23 |  |  | Bediako |
| 164 | Next Generation SDK (document) | 0d | 2010-07-23 | 2010-07-23 | 163 | start no earlier than 2010-07-21 | Bediako |
| 165 | Future SDK - Technical Treatment (presentation) | 0d | 2010-07-23 | 2010-07-23 | 163 | start no earlier than 2010-07-21 | Bediako |
| 166 | **Develop enhancement/protoype plan** | 8d | 2010-07-21 | 2010-07-30 |  |  |  |
| 167 | Develop task/work plan for enhancements | 2d | 2010-07-21 | 2010-07-22 |  | start no earlier than 2010-07-21 | Satish |
| 168 | Create workflows | 2d | 2010-07-23 | 2010-07-26 | 167 | start no earlier than 2010-07-21 | Satish |
| 169 | Design and design documentation | 4d | 2010-07-27 | 2010-07-30 | 168 | start no earlier than 2010-07-21 | Satish |
| 173 | Implement XMI/DDL/UML to ECORE | 1d? | 2010-08-02 | 2010-08-02 |  | start no earlier than 2010-07-21 |  |
| 174 | Implement workflows | 1d? | 2010-08-02 | 2010-08-02 |  | start no earlier than 2010-07-21 |  |
| 175 | Reference service implementation | 1d? | 2010-08-02 | 2010-08-02 |  | start no earlier than 2010-07-21 |  |
| 177 | Scripts | 1d? | 2010-08-30 | 2010-08-30 |  | start no earlier than 2010-07-21 |  |
| 178 | Integration | 1d? | 2010-08-30 | 2010-08-30 |  | start no earlier than 2010-07-21 |  |
| 179 | Demo | 1d? | 2010-08-30 | 2010-08-30 |  | start no earlier than 2010-07-21 |  |
| 201 | **Reference to objectives** | 1d? | 2010-07-21 | 2010-07-21 |  |  |  |
| 202 | 1) Maintenance of and technical support for the ISO 21090 Java Library | 1d? | 2010-07-21 | 2010-07-21 |  | start no earlier than 2010-07-21 |  |
| 203 | 2) caCORE SDK support for new data types | 1d? | 2010-07-21 | 2010-07-21 |  | start no earlier than 2010-07-21 |  |
| 204 | 3) Provide querying of new data types via Java API, remote API, RESTful API, and caGrid service | 1d? | 2010-07-21 | 2010-07-21 |  | start no earlier than 2010-07-21 |  |
| 205 | 4) Provide a solution for the SDK web interface to support query building for ISO 21090 data types. Enhance the QBE translator and integrate with the CQL query translator to support new data types. | 1d? | 2010-07-21 | 2010-07-21 |  | start no earlier than 2010-07-21 |  |
| 206 | 5) Provide an easy user interface for users to navigate the domain model browser. From the domain model browser, users should be able to query the system using the query builder. | 1d? | 2010-07-21 | 2010-07-21 |  | start no earlier than 2010-07-21 |  |
| 207 | 6) Support caGrid and Introduce with regard to CQL changes and data types used by COPPA/PODS | 1d? | 2010-07-21 | 2010-07-21 |  | start no earlier than 2010-07-21 |  |
| 208 | 7) Extension of the ISO 21090 library to support operations on data types | 1d? | 2010-07-21 | 2010-07-21 |  | start no earlier than 2010-07-21 |  |
| 209 | 8) Maintain, enhance, and/or extend the existing tools to support rapid development of services that are compatible with the caBIG infrastructure and allow services to support data sharing securely and efficiently | 1d? | 2010-07-21 | 2010-07-21 |  | start no earlier than 2010-07-21 |  |
| 210 | 9) Evaluate existing tools for their ability to support service development in BIG HEAS, enhance existing tools, and develop new tools to support the emerging business needs | 1d? | 2010-07-21 | 2010-07-21 |  | start no earlier than 2010-07-21 |  |
| 211 | 10) Full life cycle operational and user support of SDK, CSM, and CLM | 1d? | 2010-07-21 | 2010-07-21 |  | start no earlier than 2010-07-21 |  |
| 212 | 11) Enhance caGrid’s Metadata Model Service (MMS) to read the metadata from the target semantic infrastructure... | 1d? | 2010-07-21 | 2010-07-21 |  | start no earlier than 2010-07-21 |  |
| 213 | 12) Enhance Data Service infrastructure to support new MMS | 1d? | 2010-07-21 | 2010-07-21 |  | start no earlier than 2010-07-21 |  |

Removed: 101 Web Tier / UI widgets; 106 Query-by-example; 107 CQL capability; 111 RESTful API's; 150 Eclipse service creation wizard refinements; 151 Eclipse EMF prototype

Changed:

| ID | Task | Start | Finish | Duration | Complete | Total float | Predecessors | Other |
| --- | --- | --- | --- | --- | --- | --- | --- | --- |
| 25 | QA support |  |  |  |  |  |  | resources Santhosh; Vijay → Santhosh; Vijay [75%] |
| 26 | Unit testing |  |  |  |  |  |  | resources John; Vijay → John [50%]; Vijay [25%] |
| 34 | ISO Common Architectural Overview |  |  |  |  |  |  | resources Prasad; Dan → Prasad; Dan [50%] |
| 35 | SDK release notes |  |  |  |  |  |  | resources Prasad; Dan → Prasad; Dan [50%] |
| 36 | Workbench release notes |  |  |  |  |  |  | resources Prasad; Dan → Prasad; Dan [50%] |
| 37 | ISO Common release notes |  |  |  |  |  |  | resources Prasad; Dan → Prasad; Dan [50%] |
| 38 | SDK:Example/ISOExample readme |  |  |  |  |  |  | resources Prasad; Dan → Prasad; Dan [50%] |
| 39 | Workbench readme |  |  |  |  |  |  | resources Prasad; Dan → Prasad; Dan [50%] |
| 40 | ISO Common readme |  |  |  |  |  |  | resources Prasad; Dan → Prasad; Dan [50%] |
| 41 | Release preparation (gforge, download center, etc.) |  |  |  |  |  |  | resources Dan → Dan [50%] |
| 49 | **ISO 21090 Java library 2.2** |  |  |  | 17% → 23% |  |  |  |
| 52 | **Requirements and Design Specifications** | 2010-06-25 A → 2010-06-21 A (-4d) |  | 6d → 10d |  |  | 53 → none | constraint start no earlier than 2010-06-15 → none; resources Vijay; Santhosh → none |
| 53 | GAP_Analysis_Iso21090.doc |  |  |  |  |  |  | was named Gap Analysis |
| 55 | **Construction** |  |  |  | 7% → 15% |  |  |  |
| 56 | **C1- Sprint 2** |  |  |  | 28% → 53% |  |  |  |
| 57 | Finalized requirements from PODS/COPPA |  |  |  |  | 65d → 68d | none → 54 |  |
| 59 | ISO 21090 Common Library version 2.2 Design.doc |  | 2010-07-14 A |  | 75% → 100% | 58d → none | 52 → none | was named Requirements and Design specifications (cont) |
| 60 | [Add data types for PODS/COPPA if required] |  |  |  |  | 65d → 68d |  | was named Add data types for PODS/COPPA if required |
| 61 | Java API expansion implementation | 2010-07-15 A | 2010-07-27 → 2010-07-22 (-5d) | 9d → 6d | 0% → 50% |  |  | was named Support all attributes for existing datatypes |
| 63 | Sprint C1 Integration | 2010-07-28 → 2010-07-29 (+1d) |  | 3d → 2d |  |  | 61 → 62 | resources Vijay; Santhosh → Vijay |
| 64 | **C2 - Sprint 3** |  | 2010-08-27 → 2010-08-30 (+3d) | 20d → 21d |  | 38d → 37d |  |  |
| 65 | Revisit req doc with regard to data types successfully implemented |  | 2010-08-03 → 2010-08-02 (-1d) | 2d → 1d |  | 38d → 45d |  | was named Define new data types to add; resources Vijay; Santhosh → Vijay |
| 66 | Junit test cases | 2010-08-04 → 2010-08-03 (-1d) | 2010-08-20 → 2010-08-10 (-10d) | 13d → 6d |  | 38d → 45d |  | was named Add additional data types (with all attributes); resources Santhosh → Vijay |
| 69 | Test Plan |  |  |  |  |  |  | resources Vijay; Santhosh → Vijay |
| 70 | Revisit new data types listing and adjust test plan |  |  |  |  |  |  | resources none → Vijay |
| 73 | Sprint C2 Integration | 2010-08-23 → 2010-08-26 (+3d) | 2010-08-27 → 2010-08-30 (+3d) | 5d → 3d |  | 38d → 37d | 66 → 72 | resources Vijay; Santhosh → Vijay |
| 91 | **SDK 4.4 release (using 2.1 library, integrated with caGrid 1.4)** |  |  |  | 14% → 20% |  |  |  |
| 96 | **Construction** |  |  |  | 9% → 15% |  |  |  |
| 97 | **C1- Sprint 2** |  |  |  | 25% → 42% |  |  |  |
| 99 | SDK_4.4_ISO_Data_Type_Support_within_Web_UI_Design_Document.docx |  | 2010-07-09 A → 2010-07-07 A (-2d) | 4d → 2d |  |  |  |  |
| 100 | SDK 4.4_ISO_Data_Type_Support.EAP | 2010-07-06 A → 2010-07-08 A (+2d) |  | 4d → 2d |  |  | 95 → 99 |  |
| 104 | caGrid 1.4 integration | 2010-07-12 → 2010-07-06 (-6d) | 2010-07-23 → 2010-07-06 (-17d) | 10d → 0d |  | 38d → 75d | none → 103 | constraint start no earlier than 2010-07-12 → none; resources Santhosh → none |
| 109 | Known issues from 4.3 | 2010-07-20 → 2010-07-26 (+6d) | 2010-07-23 → 2010-07-29 (+6d) |  |  | 63d → 59d |  |  |
| 113 | Sprint C1 Integration | 2010-07-26 → 2010-07-29 (+3d) |  | 5d → 2d |  | 38d → 58d | Web Tier / UI widgets, 104 → 104, 112, 108 |  |
| 115 | Metada repository integration (MMS) |  | 2010-08-20 → 2010-08-02 (-18d) | 15d → 0d |  | 38d → 54d |  | resources Prasad → none |
| 125 | Sprint C2 Integration | 2010-08-23 → 2010-08-24 (+1d) |  | 5d → 4d |  |  | 115, Query-by-example, RESTful API's → 115, 118 |  |
| 150 | **Tool enhancement prototypes** |  |  | 78d → 78d? |  |  |  |  |
| 153 | Top-down analysis paper - research and rough cut |  |  |  |  | 63d → 59d |  | resources Satish; Prasad → Satish [25%]; Prasad |
| 154 | Bottom-up analysis paper - research and rough cut |  |  |  |  | 38d → 54d |  | resources Bediako; Satish → Bediako; Satish [25%] |
| 156 | **Construction** |  | 2010-09-24 → 2010-08-30 (-25d) | 58d → 40d? |  | 19d → 37d |  |  |
| 157 | **C1- Sprint 2** |  | 2010-07-30 → 2010-08-05 (+6d) | 19d → 23d |  | 38d → 54d |  |  |
| 158 | **Top-down analysis paper** |  | 2010-07-19 → 2010-07-23 (+4d) | 10d → 14d |  | 63d → 59d |  |  |
| 162 | **Bottom-up analysis paper** |  | 2010-07-19 → 2010-07-23 (+4d) | 10d → 14d |  | 38d → 54d |  | resources Bediako; Satish → none |
| 171 | Eclipse EMF prototype research | 2010-07-20 → 2010-07-26 (+6d) | 2010-07-30 → 2010-08-05 (+6d) |  |  | 38d → 54d |  |  |
| 172 | **C2 - Sprint 3** |  | 2010-08-27 → 2010-08-02 (-25d) | 20d → 1d? |  | 38d → 57d |  |  |
| 176 | **C3 - Sprint 4** |  | 2010-09-24 → 2010-08-30 (-25d) | 19d → 1d? |  | 19d → 37d |  | was named C3 - Sprint 4 (QA) |
| 180 | Documentation |  | 2010-09-24 → 2010-08-30 (-25d) | 19d → 1d? |  | 19d → 37d |  | was named TBD |
| 185 | Training development support | 2010-07-19 → 2010-08-02 (+14d) | 2010-07-30 → 2010-08-13 (+14d) |  |  | 58d → 48d |  | constraint start no earlier than 2010-07-19 → start no earlier than 2010-08-02 |
| 194 | Vijay |  |  |  |  |  |  | resources none → Vijay |

## Version 5 (saved 2010-07-28)

Note of the change: git-svn-id: https://ncisvn.nci.nih.gov/svn/cacoresdk/trunk@1085 221b6c9c-8bdd-4aed-8ce9-b1cbd18b7e1b

Last finish stays 2010-10-21. Complete tasks 39 → 63.

Added:

| ID | Task | Duration | Start | Finish | Predecessors | Constraint | Resources |
| --- | --- | --- | --- | --- | --- | --- | --- |
| 63 | Java API expansion implementation - rnd 2 | 2d | 2010-07-23 A | 2010-07-26 A | 62 | start no earlier than 2010-07-22 |  |
| 64 | JAXB transformers - rnd 2 | 2d | 2010-07-27 | 2010-07-28 | 63 | start no earlier than 2010-07-22 |  |
| 83 | Limitations and known issues | 2d | 2010-09-07 | 2010-09-08 |  | start no earlier than 2010-09-07 | Vijay |
| 84 | Variations between ISO 21090 XSD and UML/pdf | 2d | 2010-09-09 | 2010-09-10 |  | start no earlier than 2010-09-09 | Vijay |
| 110 | Meet with caGrid to discuss integration | 0d | 2010-07-15 A | 2010-07-15 A | 109 | start no earlier than 2010-07-15 | Greg; Satish |
| 122 | caGrid integration (CQL 2.0) | 7d | 2010-08-13 | 2010-08-23 | 110 | start no earlier than 2010-08-13 | Santhosh |
| 145 | Configuring query filters in db for security | 2d | 2010-08-30 | 2010-08-31 |  |  | Dan |
| 146 | Modifying HBM files for ISO 21090 and the writable API | 2d | 2010-08-30 | 2010-08-31 |  |  | Dan |
| 169 | Design document | 3d | 2010-07-28 | 2010-07-30 | 166 | start no earlier than 2010-07-22 | Prasad |
| 174 | Design document | 5d | 2010-07-26 | 2010-07-30 | 171 | start no earlier than 2010-07-22 | Bediako |
| 178 | **Eclipse integration** | 19d | 2010-07-06 A | 2010-07-30 |  |  |  |
| 180 | Project creation wizard - simplistic multi-page with progress | 5d | 2010-07-08 A | 2010-07-14 A | 179 |  | John |
| 181 | Project creation wizard - listeners, button start, minor additions | 2d | 2010-07-15 A | 2010-07-16 A | 180 |  | John |
| 182 | Eclipse EMF research | 5d | 2010-07-19 A | 2010-07-23 |  | start no earlier than 2010-07-19 | John |
| 183 | Convert EMF models to EA | 5d | 2010-07-26 | 2010-07-30 | 182 |  | John |
| 226 | 13) Enhanced instance-level and attribute-level security and enhanced security in the runtime system | 1d? | 2010-05-20 | 2010-05-20 |  | start no earlier than 2010-05-20 |  |
| 227 | 14) Develop or enhance the writable API functions to support persistence through the ISO 21090 data types | 1d? | 2010-05-20 | 2010-05-20 |  |  |  |

Removed: 104 caGrid 1.4 integration; 169 Design and design documentation; 171 Eclipse EMF prototype research

Changed:

| ID | Task | Start | Finish | Duration | Complete | Total float | Predecessors | Other |
| --- | --- | --- | --- | --- | --- | --- | --- | --- |
| 49 | **ISO 21090 Java library 2.2 (embedded in SDK)** |  |  |  | 23% → 27% |  |  | was named ISO 21090 Java library 2.2 |
| 55 | **Construction** |  |  |  | 15% → 20% |  |  |  |
| 56 | **C1- Sprint 2** |  |  |  | 53% → 78% |  |  |  |
| 61 | Java API expansion implementation -rnd 1 |  | 2010-07-22 → 2010-07-19 A (-3d) | 6d → 3d | 50% → 100% | 58d → none |  | was named Java API expansion implementation |
| 62 | JAXB transformers - rnd 1 | 2010-07-23 → 2010-07-21 A (-2d) | 2010-07-28 → 2010-07-22 A (-6d) | 4d → 2d | 0% → 100% | 58d → none |  | was named JAXB Transformers |
| 65 | Sprint C1 Integration |  |  |  |  |  | 62 → 64 | resources Vijay → Vijay; Santosh; Dan |
| 79 | **Update documentation** |  | 2010-09-03 → 2010-09-10 (+7d) | 5d → 9d |  | 13d → 9d |  |  |
| 80 | ISO Common Architectural Overview |  |  |  |  | 13d → 16d |  | resources Vijay; Santhosh → Vijay |
| 81 | ISO Common release notes |  |  |  |  | 13d → 14d | 80 → none | constraint none → start no earlier than 2010-09-01; resources Vijay; Santhosh → Vijay |
| 82 | ISO Common readme |  |  |  |  |  | 81 → none | constraint none → start no earlier than 2010-09-03; resources Vijay; Santhosh → Vijay |
| 95 | **SDK 4.4 release (using 2.1 library, integrated with caGrid 1.4)** |  |  |  | 20% → 29% |  |  |  |
| 100 | **Construction** |  |  |  | 15% → 26% |  |  |  |
| 101 | **C1- Sprint 2** |  |  |  | 42% → 91% |  |  |  |
| 107 | caGrid code freeze | 2010-07-06 A | 2010-07-06 A |  | 0% → 100% | 75d → none |  |  |
| 108 | Meet with SI regarding metadata repository integration | 2010-07-06 A | 2010-07-19 → 2010-07-06 A (-13d) | 10d → 0d | 0% → 100% | 63d → none |  |  |
| 109 | Conversion of RESTful query to ISO object |  | 2010-07-16 → 2010-07-15 A (-1d) | 5d → 4d | 60% → 100% | 61d → none |  |  |
| 111 | Query Translator ISO object to HQL Query | 2010-07-19 A → 2010-07-16 A (-3d) | 2010-07-23 → 2010-07-21 A (-2d) | 5d → 4d | 60% → 100% | 58d → none | 109 → 110 |  |
| 112 | JUnit test cases (query/object conversions) | 2010-07-26 → 2010-07-22 A (-4d) | 2010-07-28 → 2010-07-23 A (-5d) | 3d → 2d | 0% → 100% | 58d → none |  |  |
| 113 | Class Cache Map for Searchable fields for GUI | 2010-08-02 → 2010-07-26 A (-7d) | 2010-08-10 → 2010-07-28 A (-13d) | 7d → 3d | 0% → 100% | 45d → none | none → 112 | constraint start no earlier than 2010-07-21 → none; resources Santhosh → Santhosh [22.2%] |
| 116 | Support Search Criteria input from HTML for all supported ISO data types |  | 2010-07-26 → 2010-07-23 A (-3d) | 9d → 8d | 40% → 100% | 60d → none |  |  |
| 117 | Integrate metadata to only selectively generate ISO data type input fields that are actually mapped to the database | 2010-08-02 → 2010-07-26 A (-7d) | 2010-08-04 → 2010-07-28 (-7d) |  | 0% → 50% | 44d → 49d | none → 116, 113SS | constraint start no earlier than 2010-07-21 → none |
| 118 | Sprint C1 Integration |  |  |  |  |  | caGrid 1.4 integration, 116, 112 → 112, 117 |  |
| 120 | XSLT for GETHTML and GETJSON | 2010-08-11 → 2010-08-02 (-9d) | 2010-08-19 → 2010-08-10 (-9d) |  |  | 38d → 47d |  | constraint start no earlier than 2010-08-11 → start no earlier than 2010-08-02 |
| 121 | Junit test cases (class cache, XSLT) | 2010-08-20 → 2010-08-11 (-9d) | 2010-08-23 → 2010-08-12 (-11d) |  |  | 38d → 47d | 113, 120 → 120 | constraint start no earlier than 2010-08-20 → none |
| 123 | Integrate submitted ISO data type criteria with existing search functionality | 2010-08-05 → 2010-08-02 (-3d) | 2010-08-09 → 2010-08-04 (-5d) |  |  | 44d → 47d |  |  |
| 124 | Implement and unit test client-side form validation | 2010-08-10 → 2010-08-05 (-5d) | 2010-08-19 → 2010-08-16 (-3d) |  |  | 44d → 47d |  |  |
| 125 | Metada repository integration (MMS) - spreadsheet approach | 2010-08-02 → 2010-08-17 (+15d) | 2010-08-02 → 2010-08-23 (+21d) | 0d → 5d |  | 54d → 40d |  | was named Metada repository integration (MMS); constraint start no earlier than 2010-06-28 → start no earlier than 2010-08-17; resources none → Dan |
| 126 | Known issues from 4.3 | 2010-07-26 → 2010-08-24 (+29d) | 2010-07-29 → 2010-08-25 (+27d) | 4d → 2d |  | 59d → 38d |  | constraint start no earlier than 2010-06-28 → start no earlier than 2010-08-24; resources Prasad → Santhosh; Dan |
| 130 | Sprint C2 Integration | 2010-08-24 → 2010-08-26 (+2d) |  | 4d → 2d |  |  | 125, 121 → 125, 121, 126 |  |
| 135 | SDK release notes |  |  |  |  |  |  | resources Prasad; Santhosh → Santhosh |
| 136 | Workbench release notes |  |  |  |  |  |  | resources Prasad; Santhosh → Santhosh |
| 137 | SDK:Example/ISOExample readme |  |  |  |  |  |  | resources Prasad; Santhosh → Santhosh |
| 138 | Workbench readme |  |  |  |  |  |  | resources Prasad; Santhosh → Santhosh |
| 157 | **Tool enhancement prototypes** | 2010-06-21 A |  |  | 0% → 67% |  |  |  |
| 158 | **Elaboration** | 2010-06-21 A | 2010-07-02 A |  | 0% → 100% | 54d → none |  |  |
| 159 | **E1 - Sprint 1** | 2010-06-21 A | 2010-07-02 A |  | 0% → 100% | 54d → none |  |  |
| 160 | Top-down analysis paper - research and rough cut | 2010-06-21 A | 2010-07-02 A |  | 0% → 100% | 59d → none |  |  |
| 161 | Bottom-up analysis paper - research and rough cut | 2010-06-21 A | 2010-07-02 A |  | 0% → 100% | 54d → none |  |  |
| 162 | Eclipse service creation wizard research | 2010-06-21 A | 2010-07-02 A |  | 0% → 100% | 38d → none |  |  |
| 163 | **Construction** | 2010-07-06 A |  |  | 0% → 63% |  |  |  |
| 164 | **C1- Sprint 2** | 2010-07-06 A | 2010-08-05 → 2010-07-30 (-6d) | 23d → 19d | 0% → 70% | 54d → 58d |  |  |
| 165 | **Top-down analysis paper** | 2010-07-06 A | 2010-07-23 → 2010-07-30 (+7d) | 14d → 19d | 0% → 84% | 59d → 54d |  |  |
| 166 | Updates, reviews and refinements | 2010-07-06 A | 2010-07-23 → 2010-07-27 A (+4d) | 14d → 16d | 0% → 100% | 59d → none |  |  |
| 167 | Next Generation caCORE Infrastructure (document) | 2010-07-23 → 2010-07-27 A (+4d) | 2010-07-23 → 2010-07-27 A (+4d) |  | 0% → 100% | 59d → none |  |  |
| 168 | caCORE Infrastructure - Next Generation Tooling (presentation) | 2010-07-23 → 2010-07-27 A (+4d) | 2010-07-23 → 2010-07-27 A (+4d) |  | 0% → 100% | 59d → none |  |  |
| 170 | **Bottom-up analysis paper** | 2010-07-06 A | 2010-07-23 → 2010-07-30 (+7d) | 14d → 19d | 0% → 74% | 54d → 58d |  |  |
| 171 | Updates, reviews and refinements | 2010-07-06 A | 2010-07-23 A |  | 0% → 100% | 34d → none |  |  |
| 172 | Next Generation SDK (document) | 2010-07-23 A | 2010-07-23 A |  | 0% → 100% | 54d → none |  |  |
| 173 | Future SDK - Technical Treatment (presentation) | 2010-07-23 A | 2010-07-23 A |  | 0% → 100% | 34d → none |  |  |
| 175 | **Develop enhancement/protoype plan** | 2010-07-21 A |  |  | 0% → 50% |  |  |  |
| 176 | Develop task/work plan for enhancements | 2010-07-21 A | 2010-07-22 → 2010-07-26 A (+4d) | 2d → 4d | 0% → 100% | 38d → none |  |  |
| 177 | Create workflows | 2010-07-23 → 2010-07-27 (+4d) | 2010-07-26 → 2010-07-30 (+4d) | 2d → 4d |  | 38d → 58d |  |  |
| 179 | Initial research | 2010-07-06 A | 2010-07-30 → 2010-07-07 A (-23d) | 19d → 2d | 0% → 100% | 58d → none |  | was named Eclipse service creation wizard - initial prototype |
| 185 | TBD - Implement XMI/DDL/UML to ECORE |  |  |  |  |  |  | was named Implement XMI/DDL/UML to ECORE |
| 186 | TBD - Implement workflows |  |  |  |  |  |  | was named Implement workflows |
| 187 | TBD - Reference service implementation |  |  |  |  |  |  | was named Reference service implementation |
| 189 | TBD - Scripts |  |  |  |  |  |  | was named Scripts |
| 190 | TBD - Integration |  |  |  |  |  |  | was named Integration |
| 191 | TBD - Demo |  |  |  |  |  |  | was named Demo |
| 192 | TBD - Documentation |  |  |  |  |  |  | was named Documentation |
| 203 | **Vacation** |  | 2010-08-20 → 2010-08-27 (+7d) | 24d → 29d |  |  |  |  |
| 206 | Vijay |  | 2010-08-20 → 2010-08-27 (+7d) | 5d → 10d |  |  |  |  |
| 213 | **Reference to objectives** | 2010-07-21 → 2010-05-20 (-62d) | 2010-07-21 → 2010-05-20 (-62d) |  |  | 65d → 107d |  |  |
| 214 | 1) Maintenance of and technical support for the ISO 21090 Java Library | 2010-07-21 → 2010-05-20 (-62d) | 2010-07-21 → 2010-05-20 (-62d) |  |  | 65d → 107d |  | constraint start no earlier than 2010-07-21 → start no earlier than 2010-05-20 |
| 215 | 2) caCORE SDK support for new data types | 2010-07-21 → 2010-05-20 (-62d) | 2010-07-21 → 2010-05-20 (-62d) |  |  | 65d → 107d |  | constraint start no earlier than 2010-07-21 → start no earlier than 2010-05-20 |
| 216 | 3) Provide querying of new data types via Java API, remote API, RESTful API, and caGrid service | 2010-07-21 → 2010-05-20 (-62d) | 2010-07-21 → 2010-05-20 (-62d) |  |  | 65d → 107d |  | constraint start no earlier than 2010-07-21 → start no earlier than 2010-05-20 |
| 217 | 4) Provide a solution for the SDK web interface to support query building for ISO 21090 data types. Enhance the QBE translator and integrate with the CQL query translator to support new data types. | 2010-07-21 → 2010-05-20 (-62d) | 2010-07-21 → 2010-05-20 (-62d) |  |  | 65d → 107d |  | constraint start no earlier than 2010-07-21 → start no earlier than 2010-05-20 |
| 218 | 5) Provide an easy user interface for users to navigate the domain model browser. From the domain model browser, users should be able to query the system using the query builder. | 2010-07-21 → 2010-05-20 (-62d) | 2010-07-21 → 2010-05-20 (-62d) |  |  | 65d → 107d |  | constraint start no earlier than 2010-07-21 → start no earlier than 2010-05-20 |
| 219 | 6) Support caGrid and Introduce with regard to CQL changes and data types used by COPPA/PODS | 2010-07-21 → 2010-05-20 (-62d) | 2010-07-21 → 2010-05-20 (-62d) |  |  | 65d → 107d |  | constraint start no earlier than 2010-07-21 → start no earlier than 2010-05-20 |
| 220 | 7) Extension of the ISO 21090 library to support operations on data types | 2010-07-21 → 2010-05-20 (-62d) | 2010-07-21 → 2010-05-20 (-62d) |  |  | 65d → 107d |  | constraint start no earlier than 2010-07-21 → start no earlier than 2010-05-20 |

| ID | Task | Start | Finish | Total float | Other |
| --- | --- | --- | --- | --- | --- |
| 221 | 8) Maintain, enhance, and/or extend the existing tools to support rapid development of services that are compatible with the caBIG infrastructure and allow services to support data sharing securely and efficiently | 2010-07-21 → 2010-05-20 (-62d) | 2010-07-21 → 2010-05-20 (-62d) | 65d → 107d | constraint start no earlier than 2010-07-21 → start no earlier than 2010-05-20 |
| 222 | 9) Evaluate existing tools for their ability to support service development in BIG HEAS, enhance existing tools, and develop new tools to support the emerging business needs | 2010-07-21 → 2010-05-20 (-62d) | 2010-07-21 → 2010-05-20 (-62d) | 65d → 107d | constraint start no earlier than 2010-07-21 → start no earlier than 2010-05-20 |
| 223 | 10) Full life cycle operational and user support of SDK, CSM, and CLM | 2010-07-21 → 2010-05-20 (-62d) | 2010-07-21 → 2010-05-20 (-62d) | 65d → 107d | constraint start no earlier than 2010-07-21 → start no earlier than 2010-05-20 |
| 224 | 11) Enhance caGrid’s Metadata Model Service (MMS) to read the metadata from the target semantic infrastructure... | 2010-07-21 → 2010-05-20 (-62d) | 2010-07-21 → 2010-05-20 (-62d) | 65d → 107d | constraint start no earlier than 2010-07-21 → start no earlier than 2010-05-20 |
| 225 | 12) Enhance Data Service infrastructure to support new MMS | 2010-07-21 → 2010-05-20 (-62d) | 2010-07-21 → 2010-05-20 (-62d) | 65d → 107d | constraint start no earlier than 2010-07-21 → start no earlier than 2010-05-20 |

## Version 6 (saved 2010-08-07)

Note of the change: git-svn-id: https://ncisvn.nci.nih.gov/svn/cacoresdk/trunk@1098 221b6c9c-8bdd-4aed-8ce9-b1cbd18b7e1b

Last finish stays 2010-10-21. Complete tasks 63 → 77.

Added:

| ID | Task | Duration | Start | Finish | Predecessors | Constraint | Resources |
| --- | --- | --- | --- | --- | --- | --- | --- |
| 68 | 2.1.1 patch library | 4d | 2010-08-03 A | 2010-08-06 A |  | start no earlier than 2010-08-03 | Vijay |
| 120 | XSLT for GETJSON (with unit tests) | 5d | 2010-08-09 | 2010-08-13 |  | start no earlier than 2010-08-09 | Santhosh |
| 121 | JSON HTML script changes for ISO data types | 5d | 2010-08-16 | 2010-08-20 |  | start no earlier than 2010-08-16 | Santhosh |
| 125 | integration of v2.2 library (and bkwd comp w/ 2.1.1) | 5d | 2010-08-09 | 2010-08-13 |  | start no earlier than 2010-08-09 | Dan |
| 127 | CQL 2.0 - attempt to reuse w/o caGrid 1.4 changes or conflicts | 4d | 2010-08-19 | 2010-08-24 |  | start no earlier than 2010-08-19 | Dan |
| 128 | CQL 2.0 - integration with SDK | 2d | 2010-08-25 | 2010-08-26 | 127 |  | Dan |
| 188 | Eclipse-EA integration testing | 5d | 2010-08-02 A | 2010-08-06 A |  |  | John |
| 189 | SDK Generator Design Document | 5d | 2010-08-02 A | 2010-08-06 A |  |  | Bediako |
| 190 | Service Development Framework Design Document | 5d | 2010-08-02 A | 2010-08-06 A |  |  | Prasad |
| 191 | Sub-project setup: repository, tasking, etc. | 1d | 2010-08-09 | 2010-08-09 |  | start no earlier than 2010-08-09 | Bediako |
| 192 | **Eclipse Application** | 7d | 2010-08-10 | 2010-08-18 |  |  |  |
| 193 | Design Eclipse Application | 6d | 2010-08-10 | 2010-08-17 | 191 |  | Bediako; Prasad; John |
| 194 | Build Eclipse Application | 1d | 2010-08-18 | 2010-08-18 | 193 |  |  |
| 195 | **Model Explorer and Translators** | 13d | 2010-08-10 | 2010-08-26 |  |  |  |
| 196 | Design Model Explorer | 3d | 2010-08-10 | 2010-08-12 | 193SS, 191 |  | Bediako; Prasad; John |
| 197 | Build Ecore to XMI translator | 1d | 2010-08-13 | 2010-08-13 | 196 | start no earlier than 2010-08-13 | John |
| 198 | Build EA to Ecore translator | 1d | 2010-08-16 | 2010-08-16 | 196, 197 |  | John |
| 199 | Build Meaning Model Explorer | 3d | 2010-08-18 | 2010-08-20 | 193, 198 |  | John |
| 200 | Build Presentation Model Explorer | 3d | 2010-08-24 | 2010-08-26 | 193, 196 | start no earlier than 2010-08-24 | John |
| 201 | **Generator** | 8d | 2010-08-13 | 2010-08-24 |  |  |  |
| 202 | Design Generator Manager | 1d | 2010-08-13 | 2010-08-13 | 196, 191 |  | Bediako; Prasad; John |
| 203 | Design SDK Generator | 1d | 2010-08-16 | 2010-08-16 | 202 |  | Bediako |
| 204 | Build SDK Generator Framework | 5d | 2010-08-18 | 2010-08-24 | 193 |  | Bediako |
| 205 | **Sample/Reference Implementation** | 5.5d | 2010-08-17 | 2010-08-24 |  |  |  |
| 206 | Design Sample/Reference Implementation | 2.5d | 2010-08-17 | 2010-08-19 | 203 |  | Prasad |
| 207 | Create persistence logic generator | 3d | 2010-08-19 | 2010-08-24 | 206 |  | Prasad |
| 208 | Create service logic generator | 3d | 2010-08-19 | 2010-08-24 | 206 |  | Prasad |
| 209 | Sprint integration | 2d | 2010-08-27 | 2010-08-30 | 192, 195, 201 |  | Bediako; Prasad; John |
| 211 | **Model Explorer and Translators** | 9d | 2010-08-30 | 2010-09-10 |  |  |  |
| 212 | Build Persistence Model Explorer | 3d | 2010-08-30 | 2010-09-01 | 196 |  | John |
| 213 | Build Validation Model Explorer | 3d | 2010-09-02 | 2010-09-07 | 196 | start no earlier than 2010-09-02 | John |
| 214 | Build Security Model Explorer | 3d | 2010-09-08 | 2010-09-10 | 196 | start no earlier than 2010-09-08 | John |
| 215 | **Generator** | 10d | 2010-08-30 | 2010-09-13 |  |  |  |
| 216 | Integrate SDK Generator with Eclipse plugin | 5d | 2010-08-30 | 2010-09-03 | 204 |  | Bediako |
| 217 | **Sample/Reference Implementation** | 9d | 2010-08-30 | 2010-09-10 |  |  |  |
| 218 | Create service validation logic generator | 3d | 2010-08-30 | 2010-09-01 | 206 |  | Prasad |
| 219 | Create presentation logic generator | 3d | 2010-09-02 | 2010-09-07 | 206 | start no earlier than 2010-09-02 | Prasad |
| 220 | Create ECCF documentation generator | 3d | 2010-09-08 | 2010-09-10 | 206 | start no earlier than 2010-09-08 | Prasad |
| 221 | Integrate SDK Generator with Sample/Reference Implementation | 5d | 2010-09-07 | 2010-09-13 | 216, 217FF |  | Bediako |
| 222 | Test Eclipse IDE (Model explorer, translators, generators) | 5d | 2010-09-14 | 2010-09-20 | 211, 215 |  | Bediako; John |
| 223 | Test Sample/Reference Implementation | 6d | 2010-09-13 | 2010-09-20 | 217 |  | Prasad |
| 224 | Integrated test | 4d | 2010-09-21 | 2010-09-24 | 222, 223 |  | Bediako [75%]; Prasad [75%]; John [75%] |
| 227 | Installer | 5d | 2010-09-27 | 2010-10-01 |  |  | John |
| 228 | Demo | 1d | 2010-10-04 | 2010-10-04 |  | start no earlier than 2010-10-04 |  |

Removed: 67 Revisit req doc with regard to data types successfully implemented; 71 Test Plan; 121 Junit test cases (class cache, XSLT); 185 TBD - Implement XMI/DDL/UML to ECORE; 186 TBD - Implement workflows; 187 TBD - Reference service implementation; 189 TBD - Scripts; 190 TBD - Integration; 191 TBD - Demo; 192 TBD - Documentation

Changed:

| ID | Task | Start | Finish | Duration | Complete | Total float | Predecessors | Other |
| --- | --- | --- | --- | --- | --- | --- | --- | --- |
| 49 | **ISO 21090 Java library 2.2 (embedded in SDK)** |  |  |  | 27% → 42% |  |  |  |
| 55 | **Construction** |  |  |  | 20% → 38% |  |  |  |
| 56 | **C1- Sprint 2** |  |  |  | 78% → 99% |  |  |  |
| 60 | [Add data types for PODS/COPPA if required] | 2010-07-06 A | 2010-07-06 A |  | 0% → 100% | 77d → none |  |  |
| 64 | JAXB transformers - rnd 2 | 2010-07-27 A | 2010-07-28 A |  | 0% → 100% | 58d → none |  |  |
| 65 | Sprint C1 Integration | 2010-07-29 A | 2010-07-30 A |  | 0% → 100% | 58d → none |  |  |
| 66 | **C2 - Sprint 3** | 2010-08-02 A | 2010-08-30 → 2010-08-27 (-3d) | 21d → 19d | 0% → 42% | 37d → 39d |  |  |
| 67 | Junit test cases | 2010-08-03 → 2010-08-02 A (-1d) | 2010-08-10 → 2010-08-02 A (-8d) | 6d → 1d | 0% → 100% | 45d → none | Revisit req doc with regard to data types successfully implemented → none |  |
| 69 | Final listing of actual data type support in v 2.2 | 2010-08-12 → 2010-08-09 (-3d) | 2010-08-13 → 2010-08-09 (-4d) |  |  | 49d → 52d | Test PlanFF → none | was named Revisit new data types listing and adjust test plan; constraint none → start no earlier than 2010-08-09 |
| 70 | Finalized design documents to QA |  |  |  |  | 53d → 52d | none → 69 | resources none → Vijay |
| 71 | PIM Document update | 2010-08-11 → 2010-08-10 (-1d) | 2010-08-13 → 2010-08-12 (-1d) |  |  | 48d → 49d | Revisit req doc with regard to data types successfully implemented → none | constraint start no earlier than 2010-08-11 → start no earlier than 2010-08-10 |
| 72 | CI Server | 2010-08-23 → 2010-08-13 (-10d) | 2010-08-25 → 2010-08-17 (-8d) |  |  | 37d → 46d | 67 → none | constraint start no earlier than 2010-08-23 → start no earlier than 2010-08-13 |
| 73 | (Test Plan Due - embedded in SDK) |  |  |  |  |  |  | was named Test Plan Due |
| 74 | (Sprint C2 Integration -embedded in SDK) | 2010-08-26 → 2010-08-27 (+1d) | 2010-08-30 → 2010-08-27 (-3d) | 3d → 0d |  | 37d → 39d | 72 → none | was named Sprint C2 Integration; constraint none → start no earlier than 2010-08-27; resources Vijay → none |
| 94 | **SDK 4.4 release (using 2.1 library, integrated with caGrid 1.4)** |  |  |  | 29% → 35% |  |  |  |
| 99 | **Construction** |  |  |  | 26% → 33% |  |  |  |
| 100 | **C1- Sprint 2** |  | 2010-07-30 A |  | 91% → 100% | 58d → none |  |  |
| 116 | Integrate metadata to only selectively generate ISO data type input fields that are actually mapped to the database |  | 2010-07-28 A |  | 50% → 100% | 49d → none |  |  |
| 117 | Sprint C1 Integration | 2010-07-29 A | 2010-07-30 A |  | 0% → 100% | 58d → none |  |  |
| 118 | **C2 - Sprint 3** | 2010-08-02 A |  |  | 0% → 13% |  |  |  |
| 119 | XSLT for GETHTML (with unit tests) | 2010-08-02 A | 2010-08-10 → 2010-08-06 A (-4d) | 7d → 5d | 0% → 100% | 47d → none |  | was named XSLT for GETHTML and GETJSON |
| 122 | Known issues from 4.3 | 2010-08-24 → 2010-08-23 (-1d) |  | 2d → 3d |  | 38d → 40d |  | constraint start no earlier than 2010-08-24 → start no earlier than 2010-08-23; resources Santhosh; Dan → Santhosh |
| 123 | Integrate submitted ISO data type criteria with existing search functionality |  | 2010-08-04 → 2010-08-03 (-1d) | 3d → 2d |  | 47d → 56d |  |  |
| 124 | Implement and unit test client-side form validation | 2010-08-05 → 2010-08-04 (-1d) | 2010-08-16 → 2010-08-06 (-10d) | 8d → 3d |  | 47d → 53d | 123 → none | constraint start no earlier than 2010-07-21 → start no earlier than 2010-08-04 |
| 126 | caGrid integration - test SDK compatibility with caGrid 1.4 | 2010-08-13 → 2010-08-16 (+3d) | 2010-08-23 → 2010-08-18 (-5d) | 7d → 3d |  | 42d → 45d |  | was named caGrid integration (CQL 2.0); constraint start no earlier than 2010-08-13 → start no earlier than 2010-08-16; resources Santhosh → Dan |
| 129 | Metada repository integration (MMS) - write-up of XML/XMI modifications | 2010-08-17 → 2010-08-26 (+9d) | 2010-08-23 → 2010-08-26 (+3d) | 5d → 1d |  | 40d → 39d |  | was named Metada repository integration (MMS) - spreadsheet approach; constraint start no earlier than 2010-08-17 → start no earlier than 2010-08-26; resources Dan → Satish |
| 131 | Test Plan - JUnit test cases to QA | 2010-08-06 → 2010-08-09 (+3d) | 2010-08-13 → 2010-08-09 (-4d) | 5d → 1d |  | 49d → 52d | 132FF → 132FF-3d | was named Test Plan |
| 133 | Sprint C2 Integration | 2010-08-26 → 2010-08-27 (+1d) |  | 2d → 1d |  |  | 129, Junit test cases (class cache, XSLT), 122 → none | constraint start no earlier than 2010-07-26 → start no earlier than 2010-08-27; resources Vijay; Santhosh; Dan → Santhosh; Dan |
| 160 | **Tool enhancement prototypes** |  | 2010-10-08 → 2010-10-04 (-4d) | 78d? → 74d | 67% → 51% | 9d → 13d |  |  |
| 166 | **Construction** |  | 2010-08-30 → 2010-09-24 (+25d) | 40d? → 58d | 63% → 46% | 37d → 19d |  |  |
| 167 | **C1- Sprint 2** |  |  |  | 70% → 89% |  |  |  |
| 173 | **Bottom-up analysis paper** |  | 2010-07-30 A |  | 74% → 100% | 58d → none |  |  |
| 177 | Design document | 2010-07-26 A | 2010-07-30 A |  | 0% → 100% | 58d → none |  |  |
| 179 | Develop work plan for enhancements |  |  |  |  |  |  | was named Develop task/work plan for enhancements |
| 181 | **Eclipse integration** |  | 2010-07-30 A |  | 61% → 100% | 58d → none |  |  |
| 185 | Eclipse EMF research |  | 2010-07-23 A |  | 50% → 100% | 58d → none |  |  |
| 186 | Convert EMF models to EA | 2010-07-26 A | 2010-07-30 A |  | 0% → 100% | 58d → none |  |  |
| 187 | **C2 - Sprint 3** | 2010-08-02 A | 2010-08-02 → 2010-08-30 (+28d) | 1d? → 21d | 0% → 29% | 57d → 37d |  |  |
| 210 | **C3 - Sprint 4** |  | 2010-08-30 → 2010-09-24 (+25d) | 1d? → 19d |  | 37d → 19d |  |  |
| 225 | **Transition** |  | 2010-10-08 → 2010-10-04 (-4d) | 10d → 6d |  | 9d → 13d |  |  |
| 226 | Documentation and demo preparation |  | 2010-10-08 → 2010-10-01 (-7d) | 10d → 5d |  | 9d → 14d |  | was named TBD; resources none → Bediako; Prasad |
| 231 | Training development support | 2010-08-02 → 2010-08-16 (+14d) | 2010-08-13 → 2010-08-27 (+14d) |  |  | 48d → 38d |  | constraint start no earlier than 2010-08-02 → start no earlier than 2010-08-16 |

## Version 7 (saved 2010-08-18)

Note of the change: git-svn-id: https://ncisvn.nci.nih.gov/svn/cacoresdk/trunk@1123 221b6c9c-8bdd-4aed-8ce9-b1cbd18b7e1b

Last finish stays 2010-10-21. Complete tasks 77 → 87.

Changed:

| ID | Task | Start | Finish | Complete | Total float |
| --- | --- | --- | --- | --- | --- |
| 2 | **Project management and set-up tasks** |  |  | 67% → 87% |  |
| 10 | **Elaboration** |  | 2010-07-14 A | 63% → 100% | 70d → none |
| 13 | Design Review Package - note: will not be 10 days before C1 | 2010-06-30 A | 2010-07-14 A | 0% → 100% | 70d → none |
| 16 | **Monthly status reports** |  |  | 40% → 60% |  |
| 19 | Monthly status report 3 | 2010-08-10 A | 2010-08-10 A | 0% → 100% | 51d → none |
| 24 | **SDK 4.3 release** |  | 2010-06-24 A | 96% → 100% | 83d → none |
| 46 | Software Code Base (4.3) | 2010-06-24 A | 2010-06-24 A | 0% → 100% | 83d → none |
| 47 | Deployment Package (4.3) | 2010-06-24 A | 2010-06-24 A | 0% → 100% | 83d → none |
| 94 | **SDK 4.4 release (using 2.1 library, integrated with caGrid 1.4)** |  |  | 35% → 46% |  |
| 99 | **Construction** |  |  | 33% → 45% |  |
| 118 | **C2 - Sprint 3** |  |  | 13% → 53% |  |
| 119 | XSLT for GETHTML (with unit tests) |  | 2010-08-06 A → 2010-08-06 | 100% → 80% | none → 53d |
| 120 | XSLT for GETJSON (with unit tests) | 2010-08-09 A | 2010-08-13 A | 0% → 100% | 48d → none |
| 121 | JSON HTML script changes for ISO data types | 2010-08-16 A | 2010-08-20 A | 0% → 100% | 43d → none |
| 124 | Implement and unit test client-side form validation | 2010-08-04 A | 2010-08-06 A | 0% → 100% | 53d → none |
| 125 | integration of v2.2 library (and bkwd comp w/ 2.1.1) | 2010-08-09 A |  | 0% → 80% |  |
| 160 | **Tool enhancement prototypes** |  |  | 51% → 57% |  |
| 166 | **Construction** |  |  | 46% → 53% |  |
| 187 | **C2 - Sprint 3** |  |  | 29% → 50% |  |
| 192 | **Eclipse Application** | 2010-08-10 A |  | 0% → 86% | 22d → 43d |
| 193 | Design Eclipse Application | 2010-08-10 A | 2010-08-17 A | 0% → 100% | 22d → none |
| 195 | **Model Explorer and Translators** | 2010-08-10 A |  | 0% → 27% | 31.5d → 37d |
| 196 | Design Model Explorer | 2010-08-10 A | 2010-08-12 A | 0% → 100% | 31.5d → none |
| 201 | **Generator** | 2010-08-13 A |  | 0% → 13% | 25d → 39d |
| 202 | Design Generator Manager | 2010-08-13 A | 2010-08-13 A | 0% → 100% | 31.5d → none |
| 203 | Design SDK Generator | 2010-08-16 A | 2010-08-16 A | 0% → 100% | 31.5d → none |

## Version 8 (saved 2010-08-25)

Note of the change: git-svn-id: https://ncisvn.nci.nih.gov/svn/cacoresdk/trunk@1131 221b6c9c-8bdd-4aed-8ce9-b1cbd18b7e1b

Last finish stays 2010-10-21. Complete tasks 87 → 102.

Added:

| ID | Task | Duration | Start | Finish | Predecessors | Constraint | Resources |
| --- | --- | --- | --- | --- | --- | --- | --- |
| 125 | Bug fixes | 3d | 2010-08-16 A | 2010-08-18 A |  |  | Dan |
| 127 | Tab order issue | 1d | 2010-08-24 A | 2010-08-24 A |  | start no earlier than 2010-08-24 | Dan |
| 190 | **Design** | 15d | 2010-08-02 A | 2010-08-20 A |  |  |  |
| 192 | ServiceGenerationFramework_SRS.doc | 2d | 2010-08-02 A | 2010-08-03 A |  |  | Prasad |
| 195 | Detailed design of Eclipse Application, Model Explorer, and Generator Manager | 5d | 2010-08-09 A | 2010-08-13 A | 191, 194 |  | Bediako; Prasad; John |
| 196 | SDKEclipsePluginDesign.pdf | 4d | 2010-08-17 A | 2010-08-20 A | 195, 203 |  | Bediako |
| 204 | **Build SDK Generator Framework** | 4d | 2010-08-23 A | 2010-08-26 |  |  |  |
| 205 | Build script executor | 2d | 2010-08-23 A | 2010-08-24 A | 203 | start no earlier than 2010-08-23 | Bediako |
| 206 | Build script context | 2d | 2010-08-25 | 2010-08-26 | 203 | start no earlier than 2010-08-25 | Bediako |
| 209 | Create service implementation templates | 3d | 2010-08-19 A | 2010-08-24 | 208 |  | Prasad |
| 210 | Create service interface templates | 2d | 2010-08-25 A | 2010-08-26 | 208 | start no earlier than 2010-08-25 | Prasad |
| 214 | Build Meaning Model Explorer - continued | 1d | 2010-08-30 | 2010-08-30 | 201 |  | John |
| 217 | Build Representation Model Explorer | 2d | 2010-09-07 | 2010-09-08 | 195 | start no earlier than 2010-09-07 | John |
| 220 | Integrate Generator Manager | 2d | 2010-09-22 | 2010-09-23 | 195 | start no earlier than 2010-09-22 | John |
| 222 | **Build SDK Generator Framework** | 7d | 2010-08-30 | 2010-09-08 |  |  |  |
| 223 | Build model validation level 0 | 2d | 2010-08-30 | 2010-08-31 | 203 |  | Bediako |
| 224 | Build generator workflow logic | 2d | 2010-09-01 | 2010-09-02 | 203 | start no earlier than 2010-09-01 | Bediako |
| 225 | Build core generator | 3d | 2010-09-03 | 2010-09-08 | 203 | start no earlier than 2010-09-03 | Bediako |
| 227 | Create Pojo Generator | 1d | 2010-08-30 A | 2010-08-30 | 208 |  | Prasad |
| 228 | Create Deployment/Build Scripts | 1d | 2010-09-01 A | 2010-09-01 | 208 | start no earlier than 2010-09-01 | Prasad |
| 229 | Create POJO validation templates | 2d | 2010-09-02 | 2010-09-03 | 208 | start no earlier than 2010-09-02 | Prasad |
| 230 | Create SA-WSDL Generator | 2d | 2010-09-07 | 2010-09-08 | 208 | start no earlier than 2010-09-07 | Prasad |
| 232 | Create Test (Junit) Code Generator | 2d | 2010-09-16 | 2010-09-17 | 208 | start no earlier than 2010-09-16 | Prasad |
| 233 | Create DAO interface templates | 2d | 2010-09-20 | 2010-09-21 | 208 | start no earlier than 2010-09-20 | Bediako |
| 234 | Create Level 1 Validation Logic | 2d | 2010-09-20 | 2010-09-21 | 208 | start no earlier than 2010-09-20 | Bediako |
| 235 | Create DDL Generator | 2d | 2010-09-22 | 2010-09-23 | 208 | start no earlier than 2010-09-22 | Bediako |
| 240 | Additional test and bug fixes | 5d | 2010-09-27 | 2010-10-01 |  |  | Bediako |

Removed: 192 Eclipse Application; 193 Design Eclipse Application; 194 Build Eclipse Application; 196 Design Model Explorer; 202 Design Generator Manager; 204 Build SDK Generator Framework; 208 Create service logic generator; 216 Integrate SDK Generator with Eclipse plugin; 218 Create service validation logic generator; 219 Create presentation logic generator; 220 Create ECCF documentation generator; 221 Integrate SDK Generator with Sample/Reference Implementation; 222 Test Eclipse IDE (Model explorer, translators, generators); 223 Test Sample/Reference Implementation

Changed:

| ID | Task | Start | Finish | Duration | Complete | Total float | Predecessors | Other |
| --- | --- | --- | --- | --- | --- | --- | --- | --- |
| 49 | **ISO 21090 Java library 2.2 (embedded in SDK)** |  |  |  | 42% → 43% |  |  |  |
| 55 | **Construction** |  |  |  | 38% → 40% |  |  |  |
| 66 | **C2 - Sprint 3** |  |  |  | 42% → 99% |  |  |  |
| 69 | Final listing of actual data type support in v 2.2 | 2010-08-09 → 2010-08-23 A (+14d) | 2010-08-09 → 2010-08-23 A (+14d) |  | 0% → 100% | 52d → none |  | constraint start no earlier than 2010-08-09 → start no earlier than 2010-08-23; resources Vijay → Dan |
| 70 | Finalized design documents to QA | 2010-08-09 → 2010-08-23 A (+14d) | 2010-08-09 → 2010-08-23 A (+14d) |  | 0% → 100% | 52d → none |  | resources Vijay → Dan |
| 76 | PIM Document update | 2010-08-10 → 2010-08-30 (+20d) | 2010-08-12 → 2010-09-01 (+20d) |  |  | 49d → 35d |  |  |
| 77 | CI Server | 2010-08-13 → 2010-09-02 (+20d) | 2010-08-17 → 2010-09-07 (+21d) |  |  | 46d → 32d |  | constraint start no earlier than 2010-08-13 → start no earlier than 2010-09-02 |
| 78 | **Update documentation** | 2010-08-30 → 2010-09-08 (+9d) | 2010-09-10 → 2010-09-20 (+10d) |  |  | 9d → 3d |  |  |
| 79 | ISO Common Architectural Overview | 2010-08-30 → 2010-09-08 (+9d) | 2010-08-31 → 2010-09-09 (+9d) |  |  | 16d → 10d |  | constraint none → start no earlier than 2010-09-08 |
| 80 | ISO Common release notes | 2010-09-01 → 2010-09-10 (+9d) | 2010-09-02 → 2010-09-13 (+11d) |  |  | 14d → 8d |  | constraint start no earlier than 2010-09-01 → start no earlier than 2010-09-10 |
| 81 | ISO Common readme | 2010-09-03 → 2010-09-14 (+11d) | 2010-09-03 → 2010-09-14 (+11d) |  |  | 13d → 7d |  | constraint start no earlier than 2010-09-03 → start no earlier than 2010-09-14 |
| 82 | Limitations and known issues | 2010-09-07 → 2010-09-15 (+8d) | 2010-09-08 → 2010-09-16 (+8d) |  |  | 11d → 5d |  | constraint start no earlier than 2010-09-07 → start no earlier than 2010-09-15 |
| 83 | Variations between ISO 21090 XSD and UML/pdf | 2010-09-09 → 2010-09-17 (+8d) | 2010-09-10 → 2010-09-20 (+10d) |  |  | 9d → 3d |  | constraint start no earlier than 2010-09-09 → start no earlier than 2010-09-17 |
| 94 | **SDK 4.4 release (using 2.1 library, integrated with caGrid 1.4)** |  |  |  | 46% → 55% |  |  |  |
| 99 | **Construction** |  |  |  | 45% → 55% |  |  |  |
| 118 | **C2 - Sprint 3** |  |  |  | 53% → 90% |  |  |  |
| 119 | XSLT for GETHTML (with unit tests) |  | 2010-08-06 A |  | 80% → 100% | 53d → none |  |  |
| 121 | JSON HTML script changes for ISO data types |  | 2010-08-20 A → 2010-08-17 A (-3d) | 5d → 2d |  |  |  |  |
| 122 | Integrate submitted ISO data type criteria with existing search functionality | 2010-08-02 A | 2010-08-03 A |  | 0% → 100% | 56d → none |  |  |
| 124 | Integration of v2.2 library (and bkwd comp w/ 2.1.1) |  | 2010-08-13 A |  | 80% → 100% | 48d → none |  | was named integration of v2.2 library (and bkwd comp w/ 2.1.1) |
| 126 | Test Plan - JUnit test cases and updated documentation to QA | 2010-08-09 → 2010-08-19 A (+10d) | 2010-08-09 → 2010-08-20 A (+11d) | 1d → 2d | 0% → 100% | 52d → none |  | was named Test Plan - JUnit test cases to QA; constraint none → start no earlier than 2010-08-19; resources Vijay → Dan |
| 128 | caGrid integration - test SDK compatibility with caGrid 1.4 | 2010-08-16 → 2010-08-25 (+9d) | 2010-08-18 → 2010-08-26 (+8d) | 3d → 2d |  | 45d → 39d |  | constraint start no earlier than 2010-08-16 → start no earlier than 2010-08-25 |
| 129 | - not feasible - CQL 2.0 - attempt to reuse w/o caGrid 1.4 changes or conflicts | 2010-08-19 A | 2010-08-24 → 2010-08-19 A (-5d) | 4d → 0d | 0% → 100% | 39d → none |  | was named CQL 2.0 - attempt to reuse w/o caGrid 1.4 changes or conflicts; resources Dan → none |
| 130 | - not feasible - CQL 2.0 - integration with SDK | 2010-08-25 → 2010-08-19 A (-6d) | 2010-08-26 → 2010-08-19 A (-7d) | 2d → 0d | 0% → 100% | 39d → none |  | was named CQL 2.0 - integration with SDK; resources Dan → none |
| 131 | Finalized design documents to QA | 2010-08-09 A | 2010-08-09 A |  | 0% → 100% | 53d → none |  |  |
| 137 | Metada repository integration (MMS) - write-up of XML/XMI modifications | 2010-08-26 → 2010-08-30 (+4d) | 2010-08-26 → 2010-08-30 (+4d) |  |  | 39d → 37d |  |  |
| 138 | Known issues from 4.3 - review and fixes | 2010-08-23 → 2010-09-01 (+9d) | 2010-08-25 → 2010-09-03 (+9d) |  |  | 40d → 33d |  | was named Known issues from 4.3; constraint start no earlier than 2010-08-23 → start no earlier than 2010-09-01; resources Santhosh → Satish |
| 144 | **Update guides** |  | 2010-09-21 → 2010-09-20 (-1d) | 16d → 15d |  | 22d → 23d |  |  |
| 145 | Workbench Users Guide |  | 2010-09-02 → 2010-09-01 (-1d) | 4d → 3d |  | 34d → 35d |  |  |
| 146 | SDK Programmers Guide | 2010-09-03 → 2010-09-02 (-1d) | 2010-09-09 → 2010-09-07 (-2d) | 4d → 3d |  | 30d → 32d |  | constraint start no earlier than 2010-09-03 → start no earlier than 2010-09-02 |
| 147 | UML Modeling Guide | 2010-09-09 → 2010-09-08 (-1d) | 2010-09-14 → 2010-09-10 (-4d) | 4d → 3d |  | 27d → 29d |  | constraint start no earlier than 2010-09-09 → start no earlier than 2010-09-08 |
| 148 | Object Relational Mapping Guide | 2010-09-15 → 2010-09-13 (-2d) | 2010-09-20 → 2010-09-15 (-5d) | 4d → 3d |  | 23d → 26d |  | constraint start no earlier than 2010-09-15 → start no earlier than 2010-09-13 |
| 149 | How To Use SDK Guide |  | 2010-09-21 → 2010-09-20 (-1d) | 4d → 3d |  | 22d → 23d |  |  |
| 150 | Configuring query filters in db for security | 2010-08-30 → 2010-09-07 (+8d) | 2010-08-31 → 2010-09-08 (+8d) |  |  | 36d → 31d |  | constraint none → start no earlier than 2010-09-07; resources Dan → Satish |
| 151 | Modifying HBM files for ISO 21090 and the writable API | 2010-08-30 → 2010-09-09 (+10d) | 2010-08-31 → 2010-09-10 (+10d) |  |  | 36d → 29d |  | constraint none → start no earlier than 2010-09-09; resources Dan → Satish |
| 162 | **Tool enhancement prototypes** |  |  |  | 57% → 64% |  |  |  |
| 168 | **Construction** |  |  |  | 53% → 64% |  |  |  |
| 189 | **C2 - Sprint 3** |  | 2010-08-30 → 2010-08-27 (-3d) | 21d → 20d | 50% → 81% | 37d → 38d |  |  |
| 191 | SDKGeneratorDesign.pdf |  |  |  |  |  |  | was named SDK Generator Design Document |
| 193 | Next Generation Service Development Framework.docx | 2010-08-02 A → 2010-08-04 A (+2d) |  | 5d → 3d |  |  | none → 192 | was named Service Development Framework Design Document |
| 194 | Eclipse-EA integration testing |  |  |  |  |  | none → 193 |  |
| 197 | Sub-project setup: repository, tasking, etc. | 2010-08-09 → 2010-08-20 (+11d) | 2010-08-09 → 2010-08-20 (+11d) | 1d → 0d |  | 52d → 44d |  | constraint start no earlier than 2010-08-09 → start no earlier than 2010-08-20 |
| 198 | **Model Explorer and Translators** | 2010-08-10 A → 2010-08-16 A (+6d) |  | 13d → 9d | 27% → 80% |  |  |  |
| 199 | - abandoned - Build Ecore to EA (XMI) translator | 2010-08-13 → 2010-08-16 A (+3d) | 2010-08-13 → 2010-08-18 A (+5d) | 1d → 3d | 0% → 100% | 42d → none | Design Model Explorer → 195 | was named Build Ecore to XMI translator |
| 200 | Build EA (XMI) to Ecore translator | 2010-08-16 → 2010-08-18 A (+2d) | 2010-08-16 → 2010-08-24 A (+8d) | 1d → 5d | 0% → 100% | 42d → none | Design Model Explorer, 199 → 195 | was named Build EA to Ecore translator; constraint none → start no earlier than 2010-08-18 |
| 201 | Build Meaning Model Explorer - partial | 2010-08-18 → 2010-08-25 (+7d) | 2010-08-20 → 2010-08-26 (+6d) | 3d → 2d |  | 41d → 37d | Design Eclipse Application, 200 → 195 | was named Build Meaning Model Explorer; constraint none → start no earlier than 2010-08-25 |
| 202 | **Generator** | 2010-08-13 A → 2010-08-16 A (+3d) | 2010-08-24 → 2010-08-26 (+2d) | 8d → 9d | 13% → 52% | 39d → 38d |  |  |
| 203 | Design SDK Generator |  |  |  |  |  | Design Generator Manager → none |  |
| 207 | **Sample/Reference Implementation** | 2010-08-17 A | 2010-08-24 → 2010-08-26 (+2d) | 5.5d → 8d | 0% → 47% | 31.5d → 38d |  |  |
| 208 | Design Sample/Reference Implementation | 2010-08-17 A | 2010-08-19 A |  | 0% → 100% | 31.5d → none |  |  |
| 211 | Sprint integration |  | 2010-08-30 → 2010-08-27 (-3d) | 2d → 1d |  | 37d → 38d | Eclipse Application, 198, 202 → 198, 202 |  |
| 212 | **C3 - Sprint 4** | 2010-08-30 A |  |  | 0% → 1% |  |  |  |
| 213 | **Model Explorer and Translators** |  | 2010-09-10 → 2010-09-23 (+13d) | 9d → 18d |  | 20d → 19d |  |  |
| 215 | Build Presentation Model Explorer | 2010-08-24 → 2010-08-31 (+7d) | 2010-08-26 → 2010-09-01 (+6d) | 3d → 2d |  | 37d → 34d | Design Eclipse Application, Design Model Explorer → 195 | constraint start no earlier than 2010-08-24 → start no earlier than 2010-08-31 |
| 216 | Build Validation Model Explorer |  | 2010-09-07 → 2010-09-03 (-4d) | 3d → 2d |  | 23d → 32d | Design Model Explorer → 195 |  |
| 218 | Build Persistence Model Explorer | 2010-08-30 → 2010-09-16 (+17d) | 2010-09-01 → 2010-09-17 (+16d) | 3d → 2d |  | 26d → 23d | Design Model Explorer → 195 | constraint none → start no earlier than 2010-09-16 |
| 219 | Build Security Model Explorer | 2010-09-08 → 2010-09-20 (+12d) | 2010-09-10 → 2010-09-21 (+11d) | 3d → 2d |  | 20d → 21d | Design Model Explorer → 195 | constraint start no earlier than 2010-09-08 → start no earlier than 2010-09-20 |
| 221 | **Generator** | 2010-08-30 A | 2010-09-13 → 2010-09-23 (+10d) | 10d → 18d | 0% → 2% |  |  |  |
| 226 | **Sample/Reference Implementation** | 2010-08-30 A | 2010-09-10 → 2010-09-23 (+13d) | 9d → 18d | 0% → 3% |  |  |  |
| 231 | Create persistence logic generator | 2010-08-19 → 2010-09-16 (+28d) | 2010-08-24 → 2010-09-22 (+29d) | 3d → 5d |  | 39.5d → 20d |  | constraint none → start no earlier than 2010-09-16 |
| 236 | Integrated test | 2010-09-21 → 2010-09-24 (+3d) |  | 4d → 1d |  |  | Test Eclipse IDE (Model explorer, translators, generators), Test Sample/Reference Implementation → 213, 221 | resources Bediako [75%]; Prasad [75%]; John [75%] → Bediako; Prasad; John |
| 238 | Documentation and demo preparation |  |  |  |  |  |  | resources Bediako; Prasad → Prasad |

## Version 9 (saved 2010-09-01)

Note of the change: git-svn-id: https://ncisvn.nci.nih.gov/svn/cacoresdk/trunk@1213 221b6c9c-8bdd-4aed-8ce9-b1cbd18b7e1b

Last finish stays 2010-10-21. Complete tasks 102 → 110.

Added:

| ID | Task | Duration | Start | Finish | Predecessors | Constraint | Resources |
| --- | --- | --- | --- | --- | --- | --- | --- |
| 137 | Additional system testing | 5d | 2010-08-30 | 2010-09-03 |  |  | Santhosh |
| 139 | caGrid integration revisited | 2d | 2010-09-09 | 2010-09-10 |  | start no earlier than 2010-09-09 | Vijay |
| 217 | Core Model Explorer Design | 4d | 2010-08-30 A | 2010-09-02 | 197 |  |  |

Removed: 201 Build Meaning Model Explorer - partial; 215 Build Presentation Model Explorer; 217 Build Representation Model Explorer; 219 Build Security Model Explorer; 232 Create Test (Junit) Code Generator; 233 Create DAO interface templates; 234 Create Level 1 Validation Logic; 235 Create DDL Generator; 240 Additional test and bug fixes

Changed:

| ID | Task | Start | Finish | Duration | Complete | Total float | Predecessors | Other |
| --- | --- | --- | --- | --- | --- | --- | --- | --- |
| 76 | CI Server | 2010-09-02 → 2010-09-16 (+14d) | 2010-09-07 → 2010-09-20 (+13d) |  |  | 32d → 23d |  | constraint start no earlier than 2010-09-02 → start no earlier than 2010-09-16 |
| 77 | PIM Document update | 2010-08-30 → 2010-09-21 (+22d) | 2010-09-01 → 2010-09-23 (+22d) |  |  | 35d → 20d |  | constraint start no earlier than 2010-08-10 → start no earlier than 2010-09-21 |
| 94 | **SDK 4.4 release (using 2.1 library, integrated with caGrid 1.4)** |  |  |  | 55% → 53% |  |  |  |
| 99 | **Construction** |  |  |  | 55% → 54% |  |  |  |
| 118 | **C2 - Sprint 3** |  |  |  | 90% → 97% |  |  |  |
| 128 | caGrid integration - test SDK compatibility with caGrid 1.4 | 2010-08-25 A | 2010-08-26 A |  | 0% → 100% | 39d → none |  |  |
| 153 | Metada repository integration (MMS) - write-up of XML/XMI modifications | 2010-08-30 → 2010-09-16 (+17d) | 2010-08-30 → 2010-09-16 (+17d) |  |  | 37d → 25d |  | constraint start no earlier than 2010-08-26 → start no earlier than 2010-09-16 |
| 164 | **Tool enhancement prototypes** |  |  |  | 64% → 77% |  |  |  |
| 170 | **Construction** |  |  |  | 64% → 78% |  |  |  |
| 191 | **C2 - Sprint 3** |  |  |  | 81% → 99% |  |  |  |
| 200 | **Model Explorer and Translators** |  | 2010-08-26 A |  | 80% → 100% | 37d → none |  |  |
| 202 | Build EA (XMI) to Ecore translator |  | 2010-08-24 A → 2010-08-26 A (+2d) | 5d → 7d |  |  |  |  |
| 203 | **Generator** |  | 2010-08-26 A |  | 52% → 100% | 38d → none |  |  |
| 205 | **Build SDK Generator Framework** |  | 2010-08-26 A |  | 50% → 100% | 38d → none |  |  |
| 207 | Build script context | 2010-08-25 A | 2010-08-26 A |  | 0% → 100% | 38d → none |  |  |
| 208 | **Sample/Reference Implementation** |  | 2010-08-26 → 2010-08-24 A (-2d) | 8d → 6d | 47% → 100% | 38d → none |  |  |
| 209 | Design Sample/Reference Implementation |  | 2010-08-19 A → 2010-08-18 A (-1d) | 2.5d → 2d |  |  |  |  |
| 210 | Create service implementation templates |  | 2010-08-24 → 2010-08-19 A (-5d) | 3d → 1d | 20% → 100% | 40.5d → none |  |  |
| 211 | Create service interface templates | 2010-08-25 A → 2010-08-20 A (-5d) | 2010-08-26 → 2010-08-20 A (-6d) | 2d → 1d | 20% → 100% | 38d → none |  | constraint start no earlier than 2010-08-25 → start no earlier than 2010-08-20 |
| 212 | Create Pojo Generator | 2010-08-30 A → 2010-08-23 A (-7d) | 2010-08-30 → 2010-08-23 A (-7d) |  | 20% → 100% | 36d → none |  | constraint none → start no earlier than 2010-08-23 |
| 213 | Create Deployment/Build Scripts | 2010-09-01 A → 2010-08-24 A (-8d) | 2010-09-01 → 2010-08-24 A (-8d) |  | 30% → 100% | 34d → none |  | constraint start no earlier than 2010-09-01 → start no earlier than 2010-08-24 |
| 214 | Sprint integration | 2010-08-27 A | 2010-08-27 A |  | 0% → 100% | 38d → none |  | resources Bediako; Prasad; John → Bediako; John |
| 215 | **C3 - Sprint 4** |  |  |  | 1% → 17% |  |  |  |
| 216 | **Model Explorer and Translators** | 2010-08-30 A | 2010-09-23 → 2010-09-22 (-1d) | 18d → 17d | 0% → 14% |  |  |  |
| 218 | Build Meaning Model Explorer | 2010-08-30 → 2010-09-03 (+4d) | 2010-08-30 → 2010-09-08 (+9d) | 1d → 3d |  | 36d → 29d | Build Meaning Model Explorer - partial → 217 | was named Build Meaning Model Explorer - continued |
| 219 | Build Validation Model Explorer | 2010-09-02 → 2010-09-09 (+7d) | 2010-09-03 → 2010-09-10 (+7d) |  |  | 32d → 27d | 197 → 217 | constraint start no earlier than 2010-09-02 → start no earlier than 2010-09-09 |
| 220 | Build Persistence Model Explorer |  |  |  |  | 23d → 22d | 197 → 217 |  |
| 221 | Integrate Generator Manager | 2010-09-22 → 2010-09-20 (-2d) | 2010-09-23 → 2010-09-22 (-1d) | 2d → 3d |  |  | 197 → 217 | constraint start no earlier than 2010-09-22 → start no earlier than 2010-09-20 |
| 222 | **Generator** |  | 2010-09-23 → 2010-09-22 (-1d) | 18d → 17d | 2% → 23% |  |  |  |
| 223 | **Build SDK Generator Framework** | 2010-08-30 A | 2010-09-08 → 2010-09-07 (-1d) | 7d → 6d | 0% → 50% |  |  |  |
| 224 | Build generator workflow logic | 2010-09-01 → 2010-08-30 A (-2d) | 2010-09-02 → 2010-08-31 A (-2d) |  | 0% → 100% | 33d → none |  | constraint start no earlier than 2010-09-01 → start no earlier than 2010-08-30 |
| 225 | Build core generator | 2010-09-03 → 2010-09-01 A (-2d) | 2010-09-08 → 2010-09-02 (-6d) | 3d → 2d | 0% → 50% | 30d → 32d |  | constraint start no earlier than 2010-09-03 → start no earlier than 2010-09-01 |
| 226 | Build model validation level 0 | 2010-08-30 → 2010-09-03 (+4d) | 2010-08-31 → 2010-09-07 (+7d) |  |  | 35d → 30d |  | constraint none → start no earlier than 2010-09-03 |
| 227 | **Sample/Reference Implementation** | 2010-08-30 A → 2010-09-08 (+9d) | 2010-09-23 → 2010-09-22 (-1d) | 18d → 11d | 3% → 0% |  |  |  |
| 228 | Create POJO validation templates | 2010-09-02 → 2010-09-08 (+6d) | 2010-09-03 → 2010-09-09 (+6d) |  |  | 32d → 28d |  | constraint start no earlier than 2010-09-02 → start no earlier than 2010-09-08; resources Prasad → Bediako |
| 229 | Create SA-WSDL Generator | 2010-09-07 → 2010-09-16 (+9d) | 2010-09-08 → 2010-09-17 (+9d) |  |  | 30d → 22d |  | constraint start no earlier than 2010-09-07 → start no earlier than 2010-09-16; resources Prasad → Bediako |
| 230 | Create persistence logic generator | 2010-09-16 → 2010-09-20 (+4d) |  | 5d → 3d |  | 20d → 19d |  | constraint start no earlier than 2010-09-16 → start no earlier than 2010-09-20; resources Prasad → Bediako |
| 231 | Integrated test | 2010-09-24 → 2010-09-23 (-1d) |  | 1d → 2d |  |  |  | resources Bediako; Prasad; John → Bediako; John |
| 233 | Documentation and demo preparation |  |  |  |  |  |  | resources Prasad → Bediako |

## Version 10 (saved 2010-09-08)

Note of the change: git-svn-id: https://ncisvn.nci.nih.gov/svn/cacoresdk/trunk@1234 221b6c9c-8bdd-4aed-8ce9-b1cbd18b7e1b

Last finish stays 2010-10-21. Complete tasks 110 → 117.

Changed:

| ID | Task | Start | Finish | Complete | Total float | Other |
| --- | --- | --- | --- | --- | --- | --- |
| 73 | **C3 - Sprint 4 (QA)** | 2010-08-30 A |  |  | -1d → 19d |  |
| 74 | Code base available for QA | 2010-08-30 A | 2010-08-30 A | 0% → 100% | 38d → none |  |
| 94 | **SDK 4.4 release (using 2.1 library, integrated with caGrid 1.4)** |  |  | 53% → 58% |  |  |
| 99 | **Construction** |  |  | 54% → 58% |  |  |
| 118 | **C2 - Sprint 3** |  | 2010-08-27 A | 97% → 100% | 38d → none |  |
| 132 | Test Plan Due | 2010-08-13 A | 2010-08-13 A | 0% → 100% | 49d → none |  |
| 133 | Sprint C2 Integration | 2010-08-27 A | 2010-08-27 A | 0% → 100% | 38d → none |  |
| 134 | **C3 - Sprint 4 (QA)** | 2010-08-30 A |  | 0% → 9% |  |  |
| 135 | Code base available for QA | 2010-08-30 A | 2010-08-30 A | 0% → 100% | 38d → none |  |
| 137 | Additional system testing | 2010-08-30 A | 2010-09-03 A | 0% → 100% | 33d → none |  |
| 164 | **Tool enhancement prototypes** |  |  | 77% → 78% |  |  |
| 170 | **Construction** |  |  | 78% → 80% |  |  |
| 215 | **C3 - Sprint 4** |  |  | 17% → 28% |  |  |
| 216 | **Model Explorer and Translators** |  |  | 14% → 29% |  |  |
| 217 | Core Model Explorer Design |  | 2010-09-02 A | 50% → 100% | 29d → none |  |
| 222 | **Generator** |  |  | 23% → 31% |  |  |
| 223 | **Build SDK Generator Framework** |  |  | 50% → 67% |  |  |
| 225 | Build core generator |  | 2010-09-02 A | 50% → 100% | 32d → none |  |
| 228 | Create POJO validation templates (scope?) |  |  |  |  | was named Create POJO validation templates |
| 229 | Create SA-WSDL Generator (scope?) |  |  |  |  | was named Create SA-WSDL Generator |
| 230 | Create persistence logic generator (scope?) |  |  |  |  | was named Create persistence logic generator |

## Version 11 (saved 2010-09-20)

Note of the change: git-svn-id: https://ncisvn.nci.nih.gov/svn/cacoresdk/trunk@1283 221b6c9c-8bdd-4aed-8ce9-b1cbd18b7e1b

Last finish stays 2010-10-21. Complete tasks 117 → 135.

Added:

| ID | Task | Duration | Start | Finish | Constraint | Resources |
| --- | --- | --- | --- | --- | --- | --- |
| 139 | WebSSO knowledge transfer | 2d | 2010-09-09 A | 2010-09-10 A | start no earlier than 2010-09-09 | Vijay; Santhosh |
| 158 | Spreadsheet of license requirements | 2d | 2010-09-28 | 2010-09-29 | start no earlier than 2010-09-28 | Vijay |
| 220 | Meaning Model - properties, operations, relationships | 5d | 2010-09-20 | 2010-09-24 | start no earlier than 2010-09-20 | Bediako |
| 226 | **Infrastructure** | 10d | 2010-09-03 A | 2010-09-17 A |  |  |
| 227 | Logging | 1d | 2010-09-03 A | 2010-09-03 A | start no earlier than 2010-09-03 | Bediako |
| 228 | Package handling utilities | 1d | 2010-09-07 A | 2010-09-07 A | start no earlier than 2010-09-06 | Bediako |
| 229 | Study Eclipse IDE and existing UI code | 2d | 2010-09-08 A | 2010-09-09 A | start no earlier than 2010-09-08 | Bediako |
| 230 | Integration | 2d | 2010-09-16 A | 2010-09-17 A | start no earlier than 2010-09-16 | Bediako; John |
| 232 | Model Converter Screen | 2d | 2010-09-27 | 2010-09-28 |  | Bediako; John |
| 242 | caBIG Annual Meeting prep | 3d | 2010-09-07 | 2010-09-09 | start no earlier than 2010-09-07 |  |

Removed: 139 caGrid integration revisited; 219 Build Validation Model Explorer; 220 Build Persistence Model Explorer; 226 Build model validation level 0; 227 Sample/Reference Implementation; 228 Create POJO validation templates (scope?); 229 Create SA-WSDL Generator (scope?); 230 Create persistence logic generator (scope?); 231 Integrated test

Changed:

| ID | Task | Start | Finish | Duration | Complete | Total float | Other |
| --- | --- | --- | --- | --- | --- | --- | --- |
| 2 | **Project management and set-up tasks** |  |  |  | 87% → 89% |  |  |
| 16 | **Monthly status reports** |  |  |  | 60% → 80% |  |  |
| 20 | Monthly status report 4 | 2010-09-10 A | 2010-09-10 A |  | 0% → 100% | 29d → none |  |
| 49 | **ISO 21090 Java library 2.2 (embedded in SDK)** |  |  |  | 43% → 69% |  |  |
| 55 | **Construction** |  |  |  | 40% → 77% |  |  |
| 73 | **C3 - Sprint 4 (QA)** |  |  |  | 0% → 55% |  |  |
| 75 | QA Support | 2010-08-30 A |  |  | 0% → 75% |  |  |
| 76 | PIM_21090.pdf | 2010-09-21 → 2010-09-20 (-1d) | 2010-09-23 → 2010-09-21 (-2d) | 3d → 2d |  | 20d → 22d | was named PIM Document update; constraint start no earlier than 2010-09-21 → start no earlier than 2010-09-20 |
| 77 | **Update documentation** | 2010-09-08 A | 2010-09-20 → 2010-09-24 (+4d) | 9d → 13d |  | 3d → -1d |  |
| 78 | ISO Common Architectural Overview (no changes) | 2010-09-08 A | 2010-09-09 → 2010-09-08 A (-1d) | 2d → 0d | 0% → 100% | 10d → none | was named ISO Common Architectural Overview; resources Vijay → none |
| 79 | ISO Common release notes | 2010-09-10 → 2010-09-22 (+12d) | 2010-09-13 → 2010-09-22 (+9d) | 2d → 0.5d |  | 8d → 1.5d | constraint start no earlier than 2010-09-10 → start no earlier than 2010-09-22 |
| 80 | ISO Common readme | 2010-09-14 → 2010-09-22 (+8d) | 2010-09-14 → 2010-09-22 (+8d) | 1d → 0.5d |  | 7d → 1.5d | constraint start no earlier than 2010-09-14 → start no earlier than 2010-09-22 |
| 81 | Limitations and known issues | 2010-09-15 → 2010-09-23 (+8d) | 2010-09-16 → 2010-09-23 (+7d) | 2d → 1d |  | 5d → 0d | constraint start no earlier than 2010-09-15 → start no earlier than 2010-09-23 |
| 82 | Variations between ISO 21090 XSD and UML/pdf | 2010-09-17 → 2010-09-24 (+7d) | 2010-09-20 → 2010-09-24 (+4d) | 2d → 1d |  | 3d → -1d | constraint start no earlier than 2010-09-17 → start no earlier than 2010-09-24 |
| 87 | Check CI Server (exceptions previously fixed) | 2010-09-16 → 2010-09-27 (+11d) | 2010-09-20 → 2010-09-27 (+7d) | 3d → 1d |  | 23d → 18d | was named CI Server; constraint start no earlier than 2010-09-16 → start no earlier than 2010-09-27 |
| 94 | **SDK 4.4 release (using 2.1 library, integrated with caGrid 1.4)** |  |  |  | 58% → 87% |  |  |
| 99 | **Construction** |  |  |  | 58% → 94% |  |  |
| 134 | **C3 - Sprint 4 (QA)** |  |  |  | 9% → 84% |  |  |
| 136 | QA Support | 2010-08-30 A |  |  | 0% → 75% |  |  |
| 138 | Known issues from 4.3 - review | 2010-09-01 → 2010-09-08 A (+7d) | 2010-09-03 → 2010-09-08 A (+5d) | 3d → 0.5d | 0% → 100% | 33d → none | was named Known issues from 4.3 - review and fixes; constraint start no earlier than 2010-09-01 → start no earlier than 2010-09-08; resources Satish → Satish; Greg |
| 140 | **Update documentation** | 2010-09-01 A | 2010-09-10 A | 7d → 6d | 0% → 100% | 29d → none |  |
| 141 | caCORE SDK 4.4 Release Notes (wiki) | 2010-09-01 A | 2010-09-02 A |  | 0% → 100% | 34d → none | was named SDK release notes |
| 142 | caCORE Workbench 0.2 Release Notes (wiki) | 2010-09-03 A | 2010-09-07 A |  | 0% → 100% | 32d → none | was named Workbench release notes |
| 143 | SDK:Example/ISOExample readme (no changes) | 2010-09-09 A | 2010-09-09 A | 1d → 0d | 0% → 100% | 30d → none | was named SDK:Example/ISOExample readme; resources Santhosh → none |
| 144 | Workbench readme (no changes) | 2010-09-10 A | 2010-09-10 A | 1d → 0d | 0% → 100% | 29d → none | was named Workbench readme; resources Santhosh → none |
| 145 | **Update guides** | 2010-08-30 A | 2010-09-20 → 2010-09-22 (+2d) | 15d → 16d | 0% → 83% | 23d → 22d |  |
| 146 | caCORE Workbench Version 0.2 Guide (wiki) | 2010-08-30 A | 2010-09-01 A |  | 0% → 100% | 35d → none | was named Workbench Users Guide |
| 147 | caCORE SDK Programmers Guide for 4.4 (wiki) | 2010-09-02 A |  |  | 0% → 50% |  | was named SDK Programmers Guide |
| 148 | UML Modeling Guide (no changes) | 2010-09-08 A | 2010-09-10 → 2010-09-08 A (-2d) | 3d → 0d | 0% → 100% | 29d → none | was named UML Modeling Guide; resources Dan → none |
| 149 | caCORE SDK Version 4.4 Object Relational Mapping (wiki) | 2010-09-13 A | 2010-09-15 A |  | 0% → 100% | 26d → none | was named Object Relational Mapping Guide |
| 150 | How To Use SDK Guide (no changes) | 2010-09-16 A | 2010-09-20 → 2010-09-16 A (-4d) | 3d → 0d | 0% → 100% | 23d → none | was named How To Use SDK Guide; resources Dan → none |
| 151 | Modifying HBM files for ISO 21090 and the writable API - in programmers guide | 2010-09-09 → 2010-09-20 (+11d) | 2010-09-10 → 2010-09-20 (+10d) | 2d → 0d |  | 29d → 24d | was named Modifying HBM files for ISO 21090 and the writable API; constraint start no earlier than 2010-09-09 → start no earlier than 2010-09-20; resources Satish → none |
| 152 | Configuring query filters in db for security - in programmers guide | 2010-09-07 → 2010-09-22 (+15d) | 2010-09-08 → 2010-09-22 (+14d) | 2d → 0d |  | 31d → 22d | was named Configuring query filters in db for security; constraint start no earlier than 2010-09-07 → start no earlier than 2010-09-22; resources Satish → none |
| 153 | Metada repository integration (MMS) -not applicable | 2010-09-16 A | 2010-09-16 A | 1d → 0d | 0% → 100% | 25d → none | was named Metada repository integration (MMS) - write-up of XML/XMI modifications; resources Satish → none |
| 155 | Download Center updates | 2010-09-23 A |  |  | 0% → 90% |  | resources none → Dan |
| 165 | **Tool enhancement prototypes** |  |  |  | 78% → 85% |  |  |
| 171 | **Construction** |  |  |  | 80% → 88% |  |  |
| 216 | **C3 - Sprint 4** |  |  |  | 28% → 66% |  |  |
| 217 | **Model Explorer and Translators** |  | 2010-09-22 → 2010-09-24 (+2d) | 17d → 19d | 29% → 47% |  |  |
| 219 | Build Meaning Model Explorer - main screen | 2010-09-03 A | 2010-09-08 → 2010-09-10 A (+2d) | 3d → 5d | 0% → 100% | 29d → none | was named Build Meaning Model Explorer |
| 221 | Generator Manager Screen |  | 2010-09-22 → 2010-09-24 (+2d) | 3d → 5d |  |  | was named Integrate Generator Manager |
| 222 | **Generator** |  | 2010-09-22 → 2010-09-02 A (-20d) | 17d → 4d | 31% → 100% | 19d → none |  |
| 223 | **Build SDK Generator Framework** |  | 2010-09-07 → 2010-09-02 A (-5d) | 6d → 4d | 67% → 100% | 30d → none |  |
| 233 | Test, debug, and demo preparation | 2010-09-27 → 2010-09-29 (+2d) |  | 5d → 3d |  |  | was named Documentation and demo preparation; constraint start no earlier than 2010-06-28 → start no earlier than 2010-09-29; resources Bediako → Bediako; John |
| 234 | Refactor requirements and design documentation |  |  |  |  |  | was named Installer; resources John → Satish |
| 243 | caBIG Annual Meeting | 2010-09-09 → 2010-09-13 (+4d) |  | 5d → 3d |  |  | was named caBIG Annual Meeting & Prep; constraint start no earlier than 2010-09-09 → start no earlier than 2010-09-13 |

## Version 12 (saved 2010-09-21)

Note of the change: git-svn-id: https://ncisvn.nci.nih.gov/svn/cacoresdk/trunk@1285 221b6c9c-8bdd-4aed-8ce9-b1cbd18b7e1b

Last finish stays 2010-10-21. Complete tasks 135 → 142.

Changed:

| ID | Task | Start | Finish | Duration | Complete | Total float | Predecessors | Other |
| --- | --- | --- | --- | --- | --- | --- | --- | --- |
| 49 | **ISO 21090 Java library 2.2 (embedded in SDK)** |  |  |  | 69% → 72% |  |  |  |
| 55 | **Construction** |  |  |  | 77% → 82% |  |  |  |
| 73 | **C3 - Sprint 4 (QA)** |  |  |  | 55% → 64% |  |  |  |
| 76 | PIM_21090.pdf | 2010-09-20 → 2010-09-21 A (+1d) | 2010-09-21 → 2010-09-22 (+1d) |  | 0% → 50% | 22d → 21d |  | constraint start no earlier than 2010-09-20 → start no earlier than 2010-09-21 |
| 77 | **Update documentation** |  |  | 13d → 12.5d |  | -1d → -0.5d |  |  |
| 79 | ISO Common release notes | 2010-09-22 → 2010-09-23 (+1d) | 2010-09-22 → 2010-09-23 (+1d) |  |  | 1.5d → 0.5d |  | constraint start no earlier than 2010-09-22 → start no earlier than 2010-09-23 |
| 80 | ISO Common readme | 2010-09-22 → 2010-09-23 (+1d) | 2010-09-22 → 2010-09-23 (+1d) |  |  | 1.5d → 0.5d |  | constraint start no earlier than 2010-09-22 → start no earlier than 2010-09-23 |
| 81 | Limitations and known issues | 2010-09-23 → 2010-09-24 (+1d) | 2010-09-23 → 2010-09-24 (+1d) | 1d → 0.5d |  | 0d → -0.5d |  | constraint start no earlier than 2010-09-23 → start no earlier than 2010-09-24 |
| 82 | Variations between ISO 21090 XSD and UML/pdf |  |  | 1d → 0.5d |  | -1d → -0.5d |  |  |
| 84 | Download Center updates | 2010-09-23 → 2010-09-24 (+1d) |  | 2d → 1d |  |  |  |  |
| 94 | **SDK 4.4 release (using 2.1 library, integrated with caGrid 1.4)** |  |  |  | 87% → 85% |  |  |  |
| 99 | **Construction** |  |  |  | 94% → 93% |  |  |  |
| 134 | **C3 - Sprint 4 (QA)** |  |  |  | 84% → 81% |  |  |  |
| 145 | **Update guides** |  | 2010-09-22 → 2010-09-23 (+1d) | 16d → 18d | 83% → 68% | 22d → 20d |  |  |
| 151 | Modifying HBM files for ISO 21090 and the writable API - in programmers guide | 2010-09-20 → 2010-09-22 (+2d) | 2010-09-20 → 2010-09-22 (+2d) | 0d → 1d |  | 24d → 21d |  | constraint start no earlier than 2010-09-20 → start no earlier than 2010-09-22; resources none → Dan |
| 152 | Configuring query filters in db for security - in programmers guide | 2010-09-22 → 2010-09-23 (+1d) | 2010-09-22 → 2010-09-23 (+1d) | 0d → 1d |  | 22d → 20d |  | constraint start no earlier than 2010-09-22 → start no earlier than 2010-09-23; resources none → Dan |
| 155 | Download Center updates | 2010-09-23 A → 2010-09-24 A (+1d) | 2010-09-24 A | 2d → 1d | 90% → 100% | 19d → none |  |  |
| 165 | **Tool enhancement prototypes** |  |  |  | 85% → 87% |  |  |  |
| 171 | **Construction** |  |  |  | 88% → 91% |  |  |  |
| 216 | **C3 - Sprint 4** |  |  |  | 66% → 79% |  |  |  |
| 217 | **Model Explorer and Translators** |  |  |  | 47% → 68% |  |  |  |
| 220 | Meaning Model - properties, operations, relationships | 2010-09-20 A |  |  | 0% → 40% |  | none → 219 |  |
| 221 | Generator Manager Screen | 2010-09-20 A |  |  | 0% → 40% |  |  |  |
| 240 | **Major events affecting availability** | 2010-06-01 A | 2010-09-15 A |  | 0% → 100% | 26d → none |  |  |
| 241 | VCDE-Architecture Face To Face & Prep | 2010-06-01 A | 2010-06-04 A |  | 0% → 100% | 97d → none |  |  |
| 242 | caBIG Annual Meeting prep | 2010-09-07 A | 2010-09-09 A |  | 0% → 100% | 30d → none |  |  |
| 243 | caBIG Annual Meeting | 2010-09-13 A | 2010-09-15 A |  | 0% → 100% | 26d → none |  |  |
| 245 | **Vacation** | 2010-07-20 A | 2010-08-27 A |  | 0% → 100% | 19d → none |  |  |
| 246 | Greg | 2010-07-20 A | 2010-07-20 A |  | 0% → 100% | 66d → none |  |  |
| 247 | Greg | 2010-08-09 A | 2010-08-13 A |  | 0% → 100% | 48d → none |  |  |
| 248 | Vijay | 2010-08-16 A | 2010-08-27 A |  | 0% → 100% | 0d → none |  |  |

## Version 13 (saved 2010-09-22)

Note of the change: git-svn-id: https://ncisvn.nci.nih.gov/svn/cacoresdk/trunk@1288 221b6c9c-8bdd-4aed-8ce9-b1cbd18b7e1b

Last finish stays 2010-10-21.

Added:

| ID | Task | Duration | Start | Finish | Predecessors | Constraint | Resources |
| --- | --- | --- | --- | --- | --- | --- | --- |
| 147 | General updates for 4.4 | 3d | 2010-09-02 A | 2010-09-07 |  | start no earlier than 2010-09-02 | Dan |
| 236 | **Prototype deliverables** | 4d | 2010-10-01 | 2010-10-07 | 233, 234 |  |  |
| 237 | Developer's guide | 3d | 2010-10-04 | 2010-10-06 |  | start no earlier than 2010-10-04 | Bediako |
| 238 | Requirements and uses cases considered | 1d | 2010-10-07 | 2010-10-07 |  | start no earlier than 2010-10-07 | Bediako |
| 239 | UML for prototype implementation | 3d | 2010-10-04 | 2010-10-06 | 233 | start no earlier than 2010-10-04 | John |
| 240 | Test cases, if any | 1d | 2010-10-07 | 2010-10-07 | 233 | start no earlier than 2010-10-07 | John |
| 241 | Overview: diagrams, technologies, features, desired features | 3d | 2010-10-04 | 2010-10-06 |  |  | Satish |
| 242 | Design document | 0d | 2010-10-01 | 2010-10-01 | 234 |  |  |
| 243 | Prototype code | 0d | 2010-10-01 | 2010-10-01 | 233 |  |  |
| 244 | Documentation review | 1d | 2010-10-11 | 2010-10-11 | 236 | start no earlier than 2010-10-11 |  |
| 248 | caGrid 1.4 integration testing post-caGrid release (?) | 5d? | 2010-10-11 | 2010-10-15 |  | start no earlier than 2010-10-11 |  |

Removed: 84 Download Center updates

Changed:

| ID | Task | Finish | Duration | Complete | Total float | Predecessors | Other |
| --- | --- | --- | --- | --- | --- | --- | --- |
| 15 | Project Summary Report |  |  |  |  |  | resources none → Greg |
| 49 | **ISO 21090 Java library 2.2 (embedded in SDK)** |  |  | 72% → 74% |  |  |  |
| 55 | **Construction** |  |  | 82% → 84% |  |  |  |
| 73 | **C3 - Sprint 4 (QA)** |  |  | 64% → 66% |  |  |  |
| 87 | User Acceptance Testing |  |  |  |  | 75, 77, Download Center updates → 75, 77 |  |
| 89 | ISO 21090 Java Library 2.2 Internal Release |  |  |  |  |  | was named ISO 21090 Java Library 2.2 Release |
| 146 | **caCORE SDK Programmers Guide for 4.4 (wiki)** | 2010-09-07 → 2010-09-23 (+16d) | 3d → 15d | 50% → 30% | 32d → 20d |  | constraint start no earlier than 2010-09-02 → none |
| 148 | Modifying HBM files for ISO 21090 and the writable API |  |  |  |  |  | was named Modifying HBM files for ISO 21090 and the writable API - in programmers guide |
| 149 | Configuring query filters in db for security |  |  |  |  |  | was named Configuring query filters in db for security - in programmers guide |
| 165 | **Tool enhancement prototypes** | 2010-10-04 → 2010-10-11 (+7d) | 74d → 79d | 87% → 81% | 13d → 8d |  |  |
| 231 | **Transition** | 2010-10-04 → 2010-10-11 (+7d) | 6d → 11d |  | 13d → 8d |  |  |

## Version 14 (saved 2010-09-29)

Note of the change: git-svn-id: https://ncisvn.nci.nih.gov/svn/cacoresdk/trunk@1340 221b6c9c-8bdd-4aed-8ce9-b1cbd18b7e1b

Last finish stays 2010-10-21. Complete tasks 142 → 156.

Added:

| ID | Task | Duration | Start | Finish | Predecessors | Constraint | Resources |
| --- | --- | --- | --- | --- | --- | --- | --- |
| 76 | PIM_21090.pdf - partial | 1d | 2010-09-21 A | 2010-09-21 A |  | start no earlier than 2010-09-21 | Vijay |
| 83 | QA Support (QA delayed) | 5d | 2010-09-27 A | 2010-10-01 |  | start no earlier than 2010-09-27 |  |
| 87 | **Documentation (delayed due to BRD)** | 2d | 2010-09-30 | 2010-10-01 | 77 |  |  |
| 160 | QA support (QA delayed) | 5d | 2010-09-27 A | 2010-10-01 |  | start no earlier than 2010-09-27 |  |
| 162 | Umbrella design document | 3d | 2010-10-05 | 2010-10-07 |  | start no earlier than 2010-10-05 | Dan |
| 166 | Deliverables checklist | 5d | 2010-10-04 | 2010-10-08 |  | start no earlier than 2010-10-04 |  |
| 167 | Deployment checklist | 5d | 2010-10-04 | 2010-10-08 |  | start no earlier than 2010-10-04 |  |

Changed:

| ID | Task | Start | Finish | Duration | Complete | Total float | Predecessors | Other |
| --- | --- | --- | --- | --- | --- | --- | --- | --- |
| 2 | **Project management and set-up tasks** |  |  | 108d → 107d |  |  |  |  |
| 16 | **Monthly status reports** |  | 2010-10-11 → 2010-10-12 (+1d) |  |  | 8d → 7d |  |  |
| 21 | Monthly status report 5 | 2010-10-11 → 2010-10-12 (+1d) | 2010-10-11 → 2010-10-12 (+1d) |  |  | 8d → 7d |  |  |
| 25 | QA support |  |  |  |  |  |  | resources Santhosh; Vijay [75%] → Santhosh; Vijay |
| 26 | Unit testing |  |  |  |  |  |  | resources John [50%]; Vijay [25%] → John; Vijay |
| 34 | ISO Common Architectural Overview |  |  |  |  |  |  | resources Prasad; Dan [50%] → Prasad; Dan |
| 35 | SDK release notes |  |  |  |  |  |  | resources Prasad; Dan [50%] → Prasad; Dan |
| 36 | Workbench release notes |  |  |  |  |  |  | resources Prasad; Dan [50%] → Prasad; Dan |
| 37 | ISO Common release notes |  |  |  |  |  |  | resources Prasad; Dan [50%] → Prasad; Dan |
| 38 | SDK:Example/ISOExample readme |  |  |  |  |  |  | resources Prasad; Dan [50%] → Prasad; Dan |
| 39 | Workbench readme |  |  |  |  |  |  | resources Prasad; Dan [50%] → Prasad; Dan |
| 40 | ISO Common readme |  |  |  |  |  |  | resources Prasad; Dan [50%] → Prasad; Dan |
| 41 | Release preparation (gforge, download center, etc.) |  |  |  |  |  |  | resources Dan [50%] → Dan |
| 49 | **ISO 21090 Java library 2.1.1 (embedded in SDK)** |  | 2010-10-11 → 2010-10-18 (+7d) | 79d → 83d | 74% → 81% | 8d → 3d |  | was named ISO 21090 Java library 2.2 (embedded in SDK) |
| 55 | **Construction** |  |  |  | 84% → 99% | 19d → 18d |  |  |
| 73 | **C3 - Sprint 4 (QA)** |  | 2010-09-24 A |  | 66% → 100% | 19d → none |  |  |
| 75 | QA Support |  | 2010-09-24 A |  | 75% → 100% | -1d → none |  |  |
| 77 | **Update documentation** |  | 2010-09-24 → 2010-09-23 A (-1d) | 12.5d → 11.5d | 0% → 100% | -0.5d → none |  |  |
| 79 | ISO Common release notes | 2010-09-23 A | 2010-09-23 A |  | 0% → 100% | 0.5d → none |  |  |
| 80 | ISO Common readme | 2010-09-23 A | 2010-09-23 A |  | 0% → 100% | 0.5d → none |  |  |
| 81 | Final product documentation to QA | 2010-09-20 A | 2010-09-20 A |  | 0% → 100% | 24d → none |  |  |
| 82 | **Transition** | 2010-09-27 A | 2010-10-11 → 2010-10-18 (+7d) | 11d → 15d | 0% → 18% | -1d → 3d |  |  |
| 84 | QA Complete | 2010-09-24 → 2010-10-01 (+7d) | 2010-09-24 → 2010-10-01 (+7d) |  |  | 20d → -6d | none → 83 |  |
| 85 | Check CI Server (exceptions previously fixed) | 2010-09-27 → 2010-10-04 (+7d) | 2010-09-27 → 2010-10-04 (+7d) |  |  | 18d → 12d |  | constraint start no earlier than 2010-09-27 → start no earlier than 2010-10-04; resources Vijay → Dan |
| 86 | User Acceptance Testing | 2010-09-27 → 2010-10-04 (+7d) | 2010-10-01 → 2010-10-08 (+7d) |  |  | -1d → -6d | 75, 77 → 84, 87 |  |
| 88 | Limitations and known issues | 2010-09-24 → 2010-09-30 (+6d) | 2010-09-24 → 2010-09-30 (+6d) |  |  | -0.5d → -4.5d |  | constraint start no earlier than 2010-09-24 → start no earlier than 2010-09-30; resources Vijay → Dan |
| 89 | Variations between ISO 21090 XSD and UML/pdf | 2010-09-24 → 2010-09-30 (+6d) | 2010-09-24 → 2010-09-30 (+6d) |  |  | -0.5d → -4.5d |  | constraint start no earlier than 2010-09-24 → start no earlier than 2010-09-30; resources Vijay → Dan |
| 90 | PIM_21090.pdf | 2010-09-21 A → 2010-10-01 (+10d) | 2010-09-22 → 2010-10-01 (+9d) | 2d → 1d | 50% → 0% | 21d → -6d | none → 76 | constraint start no earlier than 2010-09-21 → start no earlier than 2010-10-01; resources Vijay → Dan |
| 91 | (Test Package) |  |  |  |  | 8d → 7d | 86 → 84 |  |
| 92 | ISO 21090 Java Library 2.1.1 Internal Release | 2010-10-05 → 2010-10-12 (+7d) | 2010-10-05 → 2010-10-12 (+7d) |  |  | 8d → 3d | 91 → 91, 87, 86, 84 | was named ISO 21090 Java Library 2.2 Internal Release |
| 93 | Software Code Base (2.1.1) | 2010-10-11 → 2010-10-18 (+7d) | 2010-10-11 → 2010-10-18 (+7d) |  |  | 8d → 3d |  | was named Software Code Base (2.2) |
| 94 | Deployment Package (2.1.1) | 2010-10-11 → 2010-10-18 (+7d) | 2010-10-11 → 2010-10-18 (+7d) |  |  | 8d → 3d |  | was named Deployment Package (2.2) |
| 96 | **SDK 4.4 release (using 2.1 library, integrated with caGrid 1.4)** |  | 2010-10-11 → 2010-10-19 (+8d) | 79d → 84d | 85% → 83% | 8d → 2d |  |  |
| 101 | **Construction** |  |  |  | 93% → 99% | 19d → 0d |  |  |
| 127 | Bug fixes |  |  |  |  |  |  | resources Dan → Dan [66.7%] |
| 136 | **C3 - Sprint 4 (QA)** |  |  |  | 81% → 99% | 19d → 0d |  |  |
| 138 | QA Support |  | 2010-09-24 A |  | 75% → 100% | 19d → none |  |  |
| 147 | **Update guides** |  |  |  | 68% → 99% | 20d → 0d |  |  |
| 149 | **caCORE SDK Programmers Guide for 4.4 (wiki)** |  |  |  | 30% → 99% | 20d → 0d |  |  |
| 150 | General updates for 4.4 |  | 2010-09-07 A |  | 50% → 100% | 32d → none |  |  |
| 151 | Modifying HBM files for ISO 21090 and the writable API | 2010-09-22 A | 2010-09-22 A |  | 0% → 100% | 21d → none |  |  |
| 152 | Configuring query filters in db for security | 2010-09-23 A | 2010-09-23 A |  | 0% → 100% | 20d → none |  |  |
| 157 | Final product documentation to QA | 2010-09-20 → 2010-09-24 A (+4d) | 2010-09-20 → 2010-09-24 A (+4d) |  | 0% → 100% | 24d → none |  |  |
| 159 | **Transition** | 2010-09-27 A | 2010-10-11 → 2010-10-19 (+8d) | 11d → 16d | 0% → 10% | 8d → 2d |  |  |
| 161 | QA Complete | 2010-09-24 → 2010-10-01 (+7d) | 2010-09-24 → 2010-10-01 (+7d) |  |  | 20d → 3d | none → 160 |  |
| 163 | Spreadsheet of license requirements | 2010-09-28 → 2010-10-08 (+10d) | 2010-09-29 → 2010-10-12 (+13d) |  |  | 16d → 7d |  | constraint start no earlier than 2010-09-28 → start no earlier than 2010-10-08; resources Vijay → Dan |
| 164 | User Acceptance Testing | 2010-09-27 → 2010-10-04 (+7d) | 2010-10-01 → 2010-10-08 (+7d) |  |  | 14d → 2d | none → 161 |  |
| 165 | (Test Package) |  |  |  |  | 13d → 12d | none → 161 |  |
| 168 | SDK 4.4 Release | 2010-10-05 → 2010-10-13 (+8d) | 2010-10-05 → 2010-10-13 (+8d) |  |  | 8d → 2d | none → 161FS+1d, 164FS+1d |  |
| 169 | Software Code Base (4.4) | 2010-10-11 → 2010-10-19 (+8d) | 2010-10-11 → 2010-10-19 (+8d) |  |  | 8d → 2d |  |  |
| 170 | Deployment Package (4.4) | 2010-10-11 → 2010-10-19 (+8d) | 2010-10-11 → 2010-10-19 (+8d) |  |  | 8d → 2d |  |  |
| 172 | **Tool enhancement prototypes** |  | 2010-10-11 → 2010-10-12 (+1d) |  | 81% → 88% | 8d → 7d |  |  |
| 178 | **Construction** |  |  |  | 91% → 95% | 19d → 18d |  |  |
| 199 | **C2 - Sprint 3** |  | 2010-08-27 A |  | 99% → 100% | 38d → none |  |  |
| 202 | ServiceGenerationFramework_SRS.doc |  |  |  |  |  |  | resources Prasad → Prasad [50%] |
| 207 | Sub-project setup: repository, tasking, etc. | 2010-08-20 A | 2010-08-20 A |  | 0% → 100% | 44d → none |  |  |
| 223 | **C3 - Sprint 4** |  | 2010-09-24 A |  | 79% → 100% | 19d → none |  |  |
| 224 | **Model Explorer and Translators** |  | 2010-09-24 A |  | 68% → 100% | 19d → none |  |  |
| 227 | Meaning Model - properties, operations, relationships |  | 2010-09-24 A |  | 40% → 100% | 19d → none |  |  |
| 228 | Generator Manager Screen |  | 2010-09-24 A |  | 40% → 100% | 19d → none |  |  |
| 238 | **Transition** | 2010-09-27 A | 2010-10-11 → 2010-10-12 (+1d) |  | 0% → 26% | 8d → 7d |  |  |
| 239 | Model Converter Screen | 2010-09-27 A | 2010-09-28 A |  | 0% → 100% | 17d → none |  |  |
| 240 | Test, debug, and demo preparation | 2010-09-29 A |  |  | 0% → 33% | 13d → 9d |  |  |
| 241 | Refactor requirements and design documentation | 2010-09-27 A |  |  | 0% → 60% | 13d → 9d |  |  |
| 251 | Documentation review | 2010-10-11 → 2010-10-12 (+1d) | 2010-10-11 → 2010-10-12 (+1d) |  |  | 8d → 7d |  |  |
| 255 | caGrid 1.4 integration testing post-caGrid release (?) | 2010-10-11 → 2010-10-12 (+1d) | 2010-10-15 → 2010-10-18 (+3d) |  |  | 4d → 3d |  |  |

## Version 15 (saved 2010-10-01)

Note of the change: git-svn-id: https://ncisvn.nci.nih.gov/svn/cacoresdk/trunk@1353 221b6c9c-8bdd-4aed-8ce9-b1cbd18b7e1b

Last finish stays 2010-10-21.

Added:

| ID | Task | Duration | Start | Finish | Constraint | Resources |
| --- | --- | --- | --- | --- | --- | --- |
| 260 | caBIG Annual Meeting dummy | 3d | 2010-09-13 A | 2010-09-15 A | start no earlier than 2010-09-13 | Bediako; Satish; Vijay; John; Greg; Dan |

Removed: 260 caBIG Annual Meeting

Changed:

| ID | Task | Start | Finish | Duration | Complete | Total float | Other |
| --- | --- | --- | --- | --- | --- | --- | --- |
| 8 | Self study |  |  |  |  |  | resources Bediako; John → Bediako; John [75%] |
| 11 | Review and deliver Project Management Plan |  |  |  |  |  | resources Greg; Satish → Greg |
| 12 | Scope document (charter) |  |  |  |  |  | resources Greg; Satish → Greg [50%]; Satish [50%] |
| 13 | Design Review Package - note: will not be 10 days before C1 |  |  |  |  |  | resources All → All [25%] |
| 25 | QA support |  |  |  |  |  | resources Santhosh; Vijay → Santhosh |
| 26 | Unit testing |  |  |  |  |  | resources John; Vijay → John [75%]; Vijay [50%] |
| 34 | ISO Common Architectural Overview |  |  |  |  |  | resources Prasad; Dan → Prasad; Dan [50%] |
| 35 | SDK release notes |  |  |  |  |  | resources Prasad; Dan → Prasad; Dan [50%] |
| 36 | Workbench release notes |  |  |  |  |  | resources Prasad; Dan → Prasad; Dan [50%] |
| 37 | ISO Common release notes |  |  |  |  |  | resources Prasad; Dan → Prasad; Dan [50%] |
| 38 | SDK:Example/ISOExample readme |  |  |  |  |  | resources Prasad; Dan → Prasad; Dan [50%] |
| 39 | Workbench readme |  |  |  |  |  | resources Prasad; Dan → Prasad; Dan [50%] |
| 40 | ISO Common readme |  |  |  |  |  | resources Prasad; Dan → Prasad; Dan [50%] |
| 41 | Release preparation (gforge, download center, etc.) | 2010-06-07 A → 2010-06-08 A (+1d) |  | 10d → 9d |  |  | resources Dan → Dan [50%] |
| 65 | Sprint C1 Integration |  |  |  |  |  | resources Vijay; Santosh; Dan → Vijay [50%]; Santosh [50%]; Dan [50%] |
| 75 | QA Support |  |  |  |  |  | resources All → All [25%] |
| 86 | User Acceptance Testing |  |  |  |  |  | constraint none → start no earlier than 2010-09-29 |
| 101 | **Construction** |  | 2010-09-24 A |  | 99% → 100% | 0d → none |  |
| 119 | Sprint C1 Integration |  |  |  |  |  | resources Vijay; Santhosh; Dan → Vijay [50%]; Santhosh [50%]; Dan [50%] |
| 136 | **C3 - Sprint 4 (QA)** |  | 2010-09-24 A |  | 99% → 100% | 0d → none |  |
| 138 | QA Support |  |  |  |  |  | resources All → All [50%] |
| 139 | Additional system testing |  |  |  |  |  | resources Santhosh → Santhosh [50%] |
| 147 | **Update guides** |  | 2010-09-23 A |  | 99% → 100% | 0d → none |  |
| 149 | **caCORE SDK Programmers Guide for 4.4 (wiki)** |  | 2010-09-23 A |  | 99% → 100% | 0d → none | resources Dan → none |
| 154 | caCORE SDK Version 4.4 Object Relational Mapping (wiki) | 2010-09-13 A → 2010-09-08 A (-5d) | 2010-09-15 A → 2010-09-10 A (-5d) |  |  |  | constraint start no earlier than 2010-09-13 → start no earlier than 2010-09-08 |
| 172 | **Usability enhancements prototype** |  |  |  |  |  | was named Tool enhancement prototypes |
| 225 | Core Model Explorer Design |  |  |  |  |  | resources none → John |
| 243 | **Usability enhancements prototype deliverables** |  |  |  |  |  | was named Prototype deliverables |
| 253 | User support - ongoing |  |  |  |  |  | resources All → All [25%] |

## Version 16 (saved 2010-10-06)

Note of the change: git-svn-id: https://ncisvn.nci.nih.gov/svn/cacoresdk/trunk@1364 221b6c9c-8bdd-4aed-8ce9-b1cbd18b7e1b

Last finish 2010-10-21 → 2010-11-01 (+11d). Complete tasks 156 → 167.

Added:

| ID | Task | Duration | Start | Finish | Predecessors | Constraint | Resources |
| --- | --- | --- | --- | --- | --- | --- | --- |
| 162 | GF 29813, GF 29832, & GF 29833 | 1d | 2010-10-04 A | 2010-10-04 A | 161 |  | Dan |
| 163 | GF 29810 - Unable to search width attribute of the IVLTS datatype | 2d | 2010-10-05 A | 2010-10-06 | 160 | start no earlier than 2010-10-05 | Dan |
| 164 | GF 29818 - Unable to insert data once performing query through web interface | 4d | 2010-10-05 A | 2010-10-08 | 160 | start no earlier than 2010-10-05 | Vijay |
| 165 | GF 29782 - Inconsistent QBE search interface between AD and EN | 1d | 2010-10-08 | 2010-10-08 | 160 | start no earlier than 2010-10-08 | Dan |
| 168 | re-test | 1d | 2010-10-12 | 2010-10-12 | 162, 163, 164, 165 |  | Dan; Vijay |
| 170 | (Final QA) | 3d | 2010-10-13 | 2010-10-15 | 168 |  |  |
| 251 | **Hydra - Design.docx** | 3d | 2010-10-01 A | 2010-10-06 A |  |  |  |
| 255 | Internal reviews | 3d | 2010-10-04 A | 2010-10-06 A |  |  | Bediako |
| 260 | Mock-ups of additional UI screens | 6d | 2010-10-13 | 2010-10-20 |  | start no earlier than 2010-10-13 | John; Bediako |

Changed:

| ID | Task | Start | Finish | Duration | Complete | Total float | Predecessors | Other |
| --- | --- | --- | --- | --- | --- | --- | --- | --- |
| 49 | **ISO 21090 Java library 2.1.1 (embedded in SDK)** |  | 2010-10-18 → 2010-10-28 (+10d) | 83d → 91d |  | 3d → 2d |  |  |
| 82 | **Transition** |  | 2010-10-18 → 2010-10-28 (+10d) | 15d → 23d |  | 3d → 2d |  |  |
| 85 | Check CI Server (exceptions previously fixed) | 2010-10-04 → 2010-10-15 (+11d) | 2010-10-04 → 2010-10-15 (+11d) |  |  | 12d → 11d |  | constraint start no earlier than 2010-10-04 → start no earlier than 2010-10-15; resources Dan → Vijay |
| 86 | **Documentation (delayed due to BRD)** | 2010-09-30 → 2010-10-13 (+13d) | 2010-10-01 → 2010-10-14 (+13d) |  |  | -6d → -14d |  |  |
| 87 | Limitations and known issues | 2010-09-30 → 2010-10-13 (+13d) | 2010-09-30 → 2010-10-13 (+13d) |  |  | -4.5d → -12.5d |  | constraint start no earlier than 2010-09-30 → start no earlier than 2010-10-13; resources Dan → Vijay |
| 88 | Variations between ISO 21090 XSD and UML/pdf | 2010-09-30 → 2010-10-13 (+13d) | 2010-09-30 → 2010-10-13 (+13d) |  |  | -4.5d → -12.5d |  | constraint start no earlier than 2010-09-30 → start no earlier than 2010-10-13; resources Dan → Vijay |
| 89 | PIM_21090.pdf | 2010-10-01 → 2010-10-14 (+13d) | 2010-10-01 → 2010-10-14 (+13d) |  |  | -6d → -14d |  | constraint start no earlier than 2010-10-01 → start no earlier than 2010-10-14; resources Dan → Vijay |
| 90 | User Acceptance Testing | 2010-10-04 → 2010-10-15 (+11d) | 2010-10-08 → 2010-10-21 (+13d) |  |  | -6d → -14d |  |  |
| 92 | ISO 21090 Java Library 2.1.1 Internal Release | 2010-10-12 → 2010-10-22 (+10d) | 2010-10-12 → 2010-10-22 (+10d) |  |  | 3d → 2d |  |  |
| 93 | Software Code Base (2.1.1) | 2010-10-18 → 2010-10-28 (+10d) | 2010-10-18 → 2010-10-28 (+10d) |  |  | 3d → 2d |  |  |
| 94 | Deployment Package (2.1.1) | 2010-10-18 → 2010-10-28 (+10d) | 2010-10-18 → 2010-10-28 (+10d) |  |  | 3d → 2d |  |  |
| 96 | **SDK 4.4 release (using 2.1 library, integrated with caGrid 1.4)** |  | 2010-10-19 → 2010-11-01 (+13d) | 84d → 93d | 83% → 85% | 2d → 0d |  |  |
| 159 | **Transition** |  | 2010-10-19 → 2010-11-01 (+13d) | 16d → 25d | 10% → 28% | 2d → 0d |  |  |
| 160 | QA support (QA delayed) |  | 2010-10-01 A |  | 60% → 100% | 2d → none |  |  |
| 161 | Spreadsheet of license requirements | 2010-10-08 → 2010-09-30 A (-8d) | 2010-10-12 → 2010-09-30 A (-12d) | 2d → 1d | 0% → 100% | 7d → none |  | constraint start no earlier than 2010-10-08 → start no earlier than 2010-09-30 |
| 166 | Deliverables checklist | 2010-10-04 → 2010-10-07 (+3d) | 2010-10-08 → 2010-10-07 (-1d) | 5d → 1d |  | 8d → 16d |  | constraint start no earlier than 2010-10-04 → start no earlier than 2010-10-07 |
| 167 | Deployment checklist | 2010-10-04 → 2010-10-08 (+4d) |  | 5d → 1d |  | 8d → 15d |  | constraint start no earlier than 2010-10-04 → start no earlier than 2010-10-08 |
| 169 | Umbrella design document | 2010-10-05 → 2010-10-13 (+8d) | 2010-10-07 → 2010-10-15 (+8d) |  |  | 9d → 11d |  | constraint start no earlier than 2010-10-05 → start no earlier than 2010-10-13 |
| 171 | QA Complete | 2010-10-01 → 2010-10-15 (+14d) | 2010-10-01 → 2010-10-15 (+14d) |  |  | 2d → 0d | 160 → 170 |  |
| 172 | User Acceptance Testing | 2010-10-04 → 2010-10-18 (+14d) | 2010-10-08 → 2010-10-22 (+14d) |  |  | 2d → 0d |  |  |
| 173 | (Test Package) | 2010-10-04 → 2010-10-18 (+14d) | 2010-10-04 → 2010-10-18 (+14d) |  |  | 12d → 10d |  |  |
| 174 | SDK 4.4 Release | 2010-10-13 → 2010-10-26 (+13d) | 2010-10-13 → 2010-10-26 (+13d) |  |  | 2d → 0d |  |  |
| 175 | Software Code Base (4.4) | 2010-10-19 → 2010-11-01 (+13d) | 2010-10-19 → 2010-11-01 (+13d) |  |  | 2d → 0d |  |  |
| 176 | Deployment Package (4.4) | 2010-10-19 → 2010-11-01 (+13d) | 2010-10-19 → 2010-11-01 (+13d) |  |  | 2d → 0d |  |  |
| 178 | **Usability enhancements prototype** |  | 2010-10-12 → 2010-10-20 (+8d) | 79d → 85d | 88% → 90% | 7d → 8d |  |  |
| 244 | **Transition** |  | 2010-10-12 → 2010-10-20 (+8d) | 11d → 17d | 26% → 53% | 7d → 8d |  |  |
| 246 | Test, debug, and demo preparation |  | 2010-10-01 A |  | 33% → 100% | 9d → none |  |  |
| 247 | Refactor and extend requirements and design documentation |  | 2010-10-01 A |  | 60% → 100% | 9d → none |  | was named Refactor requirements and design documentation |
| 248 | Demo | 2010-10-04 A | 2010-10-04 A |  | 0% → 100% | 12d → none |  |  |
| 249 | **Usability enhancements prototype deliverables** | 2010-10-01 A | 2010-10-07 → 2010-10-12 (+5d) | 4d → 6d | 0% → 42% | 8d → 13d |  |  |
| 250 | Prototype code | 2010-10-01 → 2010-10-04 A (+3d) | 2010-10-01 → 2010-10-04 A (+3d) |  | 0% → 100% | 12d → none | 246 → 248 |  |
| 252 | Overview: diagrams, technologies, features, desired features | 2010-10-04 → 2010-10-01 A (-3d) | 2010-10-06 → 2010-10-01 A (-5d) | 3d → 0d | 0% → 100% | 9d → none | none → 247 | resources Satish → none |
| 253 | Requirements and uses cases considered | 2010-10-07 → 2010-10-01 A (-6d) | 2010-10-07 → 2010-10-01 A (-6d) | 1d → 0d | 0% → 100% | 8d → none | none → 247 | constraint start no earlier than 2010-10-07 → none; resources Bediako → none |
| 254 | Design document | 2010-10-01 A | 2010-10-01 A |  | 0% → 100% | 12d → none |  |  |
| 256 | Developer's guide | 2010-10-04 A | 2010-10-06 → 2010-10-07 (+1d) | 3d → 4d | 0% → 50% | 9d → 15d |  | resources Bediako → John |
| 257 | UML for prototype implementation | 2010-10-04 → 2010-10-08 (+4d) | 2010-10-06 → 2010-10-12 (+6d) | 3d → 2d |  | 9d → 13d |  | constraint start no earlier than 2010-10-04 → start no earlier than 2010-10-08 |
| 258 | Test cases, if any |  | 2010-10-07 → 2010-10-12 (+5d) | 1d → 3d |  | 8d → 13d |  | resources John → Bediako |
| 259 | Documentation review | 2010-10-12 → 2010-10-13 (+1d) | 2010-10-12 → 2010-10-13 (+1d) |  |  | 7d → 13d |  |  |

## Version 17 (saved 2010-10-13)

Note of the change: git-svn-id: https://ncisvn.nci.nih.gov/svn/cacoresdk/trunk@1398 221b6c9c-8bdd-4aed-8ce9-b1cbd18b7e1b

Last finish 2010-11-01 → 2010-10-21 (-11d). Complete tasks 167 → 176.

Added:

| ID | Task | Duration | Start | Finish | Predecessors | Resources |
| --- | --- | --- | --- | --- | --- | --- |
| 167 | test (dev) | 2d | 2010-10-12 A | 2010-10-13 | 165 | John [50%]; Dan [50%] |
| 257 | **Hydra Development Guide.docx** | 7d | 2010-10-04 A | 2010-10-13 |  |  |
| 261 | Internal reviews and "test" | 2d | 2010-10-08 A | 2010-10-12 A | 258FS-1d, 259FS-1d, 260FS-1d | Greg |
| 262 | Updates due to testing | 3d | 2010-10-08 A | 2010-10-13 | 261SS | John [50%] |

Removed: 259 Documentation review; 260 Mock-ups of additional UI screens

Changed:

| ID | Task | Start | Finish | Duration | Complete | Total float | Predecessors | Other |
| --- | --- | --- | --- | --- | --- | --- | --- | --- |
| 14 | **Transition** | 2010-10-01 → 2010-10-14 (+13d) | 2010-10-07 → 2010-10-20 (+13d) |  |  | 0d → 1d |  |  |
| 15 | Project Summary Report | 2010-10-01 → 2010-10-14 (+13d) | 2010-10-07 → 2010-10-20 (+13d) |  |  | -14d → 1d | 90 → 90FF+1d, 172FF+1d | constraint finish no later than 2010-10-07 → start no earlier than 2010-10-13 |
| 49 | **ISO 21090 Java library 2.1.1 (embedded in SDK)** |  | 2010-10-28 → 2010-10-19 (-9d) | 91d → 83.5d | 81% → 85% | 2d → 2.5d |  |  |
| 82 | **Transition** |  | 2010-10-28 → 2010-10-19 (-9d) | 23d → 15.5d | 18% → 31% | 2d → 2.5d |  |  |
| 83 | QA Support (QA delayed) |  | 2010-10-01 A |  | 60% → 100% | -6d → none |  |  |
| 85 | **Documentation (delayed due to BRD)** |  |  | 2d → 1.5d |  | -14d → 2.5d |  |  |
| 87 | PIM_21090.pdf | 2010-10-14 → 2010-10-13 (-1d) | 2010-10-14 → 2010-10-13 (-1d) |  |  | -14d → 0.5d |  | constraint start no earlier than 2010-10-14 → start no earlier than 2010-10-13 |
| 88 | Variations between ISO 21090 XSD and UML/pdf |  | 2010-10-13 → 2010-10-14 (+1d) | 0.5d → 1.5d |  | -12.5d → 2.5d |  |  |
| 90 | Deliverables Acceptance - documentation, code | 2010-10-15 → 2010-10-13 (-2d) | 2010-10-21 → 2010-10-18 (-3d) | 5d → 3d |  | -14d → 2.5d | 84, 85 → 84, 85FF+2d | was named User Acceptance Testing |
| 92 | ISO 21090 Java Library 2.1.1 Internal Release | 2010-10-22 → 2010-10-18 (-4d) | 2010-10-22 → 2010-10-19 (-3d) |  |  | 2d → 2.5d |  |  |
| 93 | Software Code Base (2.1.1) | 2010-10-28 → 2010-10-18 (-10d) | 2010-10-28 → 2010-10-19 (-9d) |  |  | 2d → 2.5d | 92FS+3d → 90 |  |
| 94 | Deployment Package (2.1.1) | 2010-10-28 → 2010-10-18 (-10d) | 2010-10-28 → 2010-10-19 (-9d) |  |  | 2d → 2.5d | 92FS+3d → 90 |  |
| 96 | **SDK 4.4 release (using 2.1 library, integrated with caGrid 1.4)** |  | 2010-11-01 → 2010-10-20 (-12d) | 93d → 85d | 85% → 89% | 0d → 2.5d |  |  |
| 159 | **Transition** |  | 2010-11-01 → 2010-10-20 (-12d) | 25d → 17d | 28% → 43% | 0d → 2.5d |  |  |
| 163 | GF 29810 - Unable to search width attribute of the IVLTS datatype |  | 2010-10-06 A |  | 50% → 100% | 2d → none |  |  |
| 164 | GF 29782 - Inconsistent QBE search interface between AD and EN | 2010-10-08 → 2010-10-07 A (-1d) | 2010-10-08 → 2010-10-07 A (-1d) |  | 0% → 100% | 0d → none | 160 → 160, 163 | constraint start no earlier than 2010-10-08 → start no earlier than 2010-10-07 |
| 165 | tag without writable API fix, ivy update, testing | 2010-10-12 → 2010-10-08 A (-4d) | 2010-10-12 → 2010-10-08 A (-4d) |  | 0% → 100% | 0d → none | 162, 163, 166, 164 → 162, 164, 163 | was named re-test; resources Dan; Vijay → Dan |
| 166 | GF 29818 - Unable to insert data once performing query through web interface | 2010-10-05 A → 2010-10-12 A (+7d) | 2010-10-08 → 2010-10-12 A (+4d) | 4d → 1d | 25% → 100% | 0d → none |  | constraint start no earlier than 2010-10-05 → start no earlier than 2010-10-12; resources Vijay → Vijay; Dan |
| 168 | (Final QA) | 2010-10-13 → 2010-10-14 (+1d) | 2010-10-15 → 2010-10-18 (+3d) |  |  | 0d → 5.5d | 165 → 167 |  |
| 169 | QA Complete | 2010-10-15 → 2010-10-18 (+3d) | 2010-10-15 → 2010-10-18 (+3d) |  |  | 0d → 5.5d |  |  |
| 170 | Umbrella design document |  |  |  |  | 11d → 8.5d |  | resources Dan → Bediako |
| 171 | Deliverables checklist | 2010-10-07 → 2010-10-13 (+6d) | 2010-10-07 → 2010-10-13 (+6d) |  |  | 16d → 5.5d |  | constraint start no earlier than 2010-10-07 → start no earlier than 2010-10-13 |
| 172 | Deliverables Acceptance - documentation, code, QA | 2010-10-18 → 2010-10-14 (-4d) | 2010-10-22 → 2010-10-19 (-3d) | 5d → 4d |  | 0d → 5.5d | 169 → 169FF+1d, 171 | was named User Acceptance Testing |
| 173 | (Test Package) | 2010-10-18 → 2010-10-19 (+1d) | 2010-10-18 → 2010-10-19 (+1d) |  |  | 10d → 6.5d |  |  |
| 174 | Deployment checklist | 2010-10-08 → 2010-10-15 (+7d) | 2010-10-08 → 2010-10-15 (+7d) |  |  | 15d → 7.5d |  | constraint start no earlier than 2010-10-08 → start no earlier than 2010-10-15; resources none → Dan |
| 175 | SDK 4.4 Release | 2010-10-26 → 2010-10-20 (-6d) | 2010-10-26 → 2010-10-20 (-6d) |  |  | 0d → 5.5d | 169FS+1d, 172FS+1d → 172, 174 |  |
| 176 | Software Code Base (4.4) | 2010-11-01 → 2010-10-20 (-12d) | 2010-11-01 → 2010-10-20 (-12d) |  |  | 0d → 5.5d | 175FS+3d → 172 |  |
| 177 | Deployment Package (4.4) | 2010-11-01 → 2010-10-20 (-12d) | 2010-11-01 → 2010-10-20 (-12d) |  |  | 0d → 5.5d | 175FS+3d → 172 |  |
| 179 | **Usability enhancements prototype** |  | 2010-10-20 → 2010-10-13 (-7d) | 85d → 80d | 90% → 96% | 8d → 7.5d |  |  |
| 245 | **Transition** |  | 2010-10-20 → 2010-10-13 (-7d) | 17d → 12d | 53% → 94% | 8d → 7.5d |  |  |
| 250 | **Usability enhancements prototype deliverables** |  | 2010-10-12 → 2010-10-13 (+1d) | 6d → 7d | 42% → 89% | 13d → 7.5d |  |  |
| 252 | **Hydra - Design.docx** |  | 2010-10-06 A → 2010-10-07 A (+1d) | 3d → 4d |  |  |  |  |
| 256 | Internal reviews |  | 2010-10-06 A → 2010-10-07 A (+1d) | 3d → 4d |  |  |  |  |
| 258 | Developer's guide |  | 2010-10-07 → 2010-10-05 A (-2d) | 4d → 2d | 50% → 100% | 15d → none |  |  |
| 259 | UML for prototype implementation | 2010-10-08 → 2010-10-06 A (-2d) | 2010-10-12 → 2010-10-07 A (-5d) |  | 0% → 100% | 13d → none |  | constraint start no earlier than 2010-10-08 → start no earlier than 2010-10-06 |
| 260 | Test cases, if any | 2010-10-07 → 2010-10-08 A (+1d) | 2010-10-12 → 2010-10-08 A (-4d) | 3d → 1d | 0% → 100% | 13d → none |  | constraint start no earlier than 2010-10-07 → start no earlier than 2010-10-08 |

## Version 18 (saved 2010-10-27)

Note of the change: git-svn-id: https://ncisvn.nci.nih.gov/svn/cacoresdk/trunk@1419 221b6c9c-8bdd-4aed-8ce9-b1cbd18b7e1b

Last finish 2010-10-21 → 2010-11-19 (+29d). Complete tasks 176 → 194.

Added:

| ID | Task | Duration | Start | Finish | Predecessors | Constraint | Resources |
| --- | --- | --- | --- | --- | --- | --- | --- |
| 22 | Monthly status report 6 | 1d | 2010-11-10 | 2010-11-10 |  | start no earlier than 2010-11-10 | Greg |
| 89 | **Archive unused versions** | 9d? | 2010-10-15 A | 2010-10-27 A |  |  |  |
| 90 | 2.1.1 branch - "on spec" for CIS, tested in sprint 3 but not released | 1d | 2010-10-26 A | 2010-10-26 A |  | start no earlier than 2010-10-26 | Vijay |
| 92 | 2.2 branch - full ISO support, incomplete, untested | 1d? | 2010-10-27 A | 2010-10-27 A |  | start no earlier than 2010-10-27 | Vijay |
| 165 | **trackers from 1st round** | 4d | 2010-10-04 A | 2010-10-07 A | 164 |  |  |
| 176 | Improve build documentation | 3d | 2010-10-19 A | 2010-10-21 A |  | start no earlier than 2010-10-19 | Bediako |
| 177 | **trackers from 2nd round** | 6d | 2010-10-18 A | 2010-10-25 A |  |  |  |
| 178 | GF 29808 - Search AD datatype returns incorrect ADXP parts | 4d | 2010-10-18 A | 2010-10-21 A | 172 |  | Vijay |
| 179 | GF 29809 - Incorrect QBE search for EN datatype | 3d | 2010-10-18 A | 2010-10-20 A | 172 |  | Dan |
| 180 | GF 29764 - AD, EN, ENON, ENPN ISO Data Types Require… | 1d | 2010-10-21 A | 2010-10-21 A | 172 | start no earlier than 2010-10-21 | Dan |
| 181 | GF 29927 - Incorrect RESTFul search for AD datatype | 1d | 2010-10-22 A | 2010-10-22 A | 172 | start no earlier than 2010-10-22 | Dan |
| 182 | test | 1d | 2010-10-25 A | 2010-10-25 A | 180, 178, 179, 181 |  | Dan; John |
| 183 | QA | 3d | 2010-10-26 A | 2010-10-28 | 177 |  |  |
| 185 | Deploy WB to stage | 2d | 2010-10-29 | 2010-11-01 | 184 |  | external |
| 186 | Deploy WB to production | 2d | 2010-11-02 | 2010-11-03 | 185 |  | external |
| 187 | Other deployment (see checklist) | 4d | 2010-10-29 | 2010-11-03 | 184 |  | external |

Removed: 92 ISO 21090 Java Library 2.1.1 Internal Release

Changed:

| ID | Task | Start | Finish | Duration | Complete | Total float | Predecessors | Other |
| --- | --- | --- | --- | --- | --- | --- | --- | --- |
| 2 | **Project management and set-up tasks** |  | 2010-10-21 → 2010-11-19 (+29d) | 107d → 128d |  |  |  |  |
| 14 | **Transition** | 2010-10-14 → 2010-10-29 (+15d) | 2010-10-20 → 2010-11-05 (+16d) |  |  | 1d → 10.5d |  |  |
| 15 | Project Summary Report | 2010-10-14 → 2010-10-29 (+15d) | 2010-10-20 → 2010-11-05 (+16d) |  |  | 1d → 10.5d |  |  |
| 16 | **Monthly status reports** |  | 2010-10-12 → 2010-11-10 (+29d) | 86d → 107d | 80% → 83% | 8.5d → 7d |  |  |
| 21 | Monthly status report 5 | 2010-10-12 A | 2010-10-12 A |  | 0% → 100% | 14d → none |  |  |
| 23 | Project Completion | 2010-10-21 → 2010-11-19 (+29d) | 2010-10-21 → 2010-11-19 (+29d) |  |  |  |  | constraint must finish on 2010-10-21 → must finish on 2010-11-19 |
| 50 | **ISO 21090 Java library** |  | 2010-10-19 → 2010-11-05 (+17d) | 83.5d → 96.5d? | 85% → 89% | 2.5d → 10.5d |  | was named ISO 21090 Java library 2.1.1 (embedded in SDK) |
| 83 | **Transition** |  | 2010-10-19 → 2010-11-05 (+17d) | 15.5d → 28.5d? | 31% → 53% | 2.5d → 10.5d |  |  |
| 84 | QA Support (QA delayed) - included with SDK 4.4 |  |  |  |  |  |  | was named QA Support (QA delayed) |
| 85 | QA Complete | 2010-10-01 → 2010-10-28 (+27d) | 2010-10-01 → 2010-10-28 (+27d) |  |  | 6.5d → 12d | 84 → 84, 184FF |  |
| 86 | **Documentation (delayed due to BRD)** | 2010-10-13 → 2010-10-15 A (+2d) | 2010-10-14 → 2010-11-02 (+19d) | 1.5d → 12.5d | 0% → 25% | 2.5d → 10.5d |  |  |
| 87 | Limitations and known issues | 2010-10-13 → 2010-10-15 A (+2d) | 2010-10-13 → 2010-10-15 A (+2d) |  | 0% → 100% | 1d → none |  | constraint start no earlier than 2010-10-13 → start no earlier than 2010-10-15 |
| 88 | Variations between ISO 21090 XSD and UML/pdf | 2010-10-13 → 2010-11-01 (+19d) | 2010-10-14 → 2010-11-02 (+19d) |  |  | 2.5d → 10.5d |  | constraint start no earlier than 2010-10-13 → start no earlier than 2010-11-01; resources Vijay → Dan |
| 91 | PIM_21090.pdf (updated for and checked into 2.1.1) | 2010-10-13 → 2010-10-15 A (+2d) | 2010-10-13 → 2010-10-15 A (+2d) |  | 0% → 100% | 0.5d → none |  | was named PIM_21090.pdf; constraint start no earlier than 2010-10-13 → start no earlier than 2010-10-15 |
| 93 | Check CI Server (exceptions previously fixed) - deferred | 2010-10-15 A | 2010-10-15 A | 1d → 0d | 0% → 100% | 8.5d → none |  | was named Check CI Server (exceptions previously fixed) |
| 94 | Deliverables Acceptance - documentation, code | 2010-10-13 → 2010-11-01 (+19d) | 2010-10-18 → 2010-11-04 (+17d) |  |  | 2.5d → 10.5d |  |  |
| 95 | (Test Package - included with SDK 4.4) | 2010-10-04 → 2010-10-29 (+25d) | 2010-10-04 → 2010-10-29 (+25d) |  |  | 11.5d → 15d |  | was named (Test Package) |
| 96 | Software Code Base (2.1.0.1 & 2.1.1) | 2010-10-18 → 2010-11-04 (+17d) | 2010-10-19 → 2010-11-05 (+17d) |  |  | 2.5d → 10.5d |  | was named Software Code Base (2.1.1) |
| 97 | Deployment Package (2.1.0.1) | 2010-10-18 → 2010-11-04 (+17d) | 2010-10-19 → 2010-11-05 (+17d) |  |  | 2.5d → 10.5d |  | was named Deployment Package (2.1.1) |
| 99 | **SDK 4.4 release (using 2.1 library, integrated with caGrid 1.4)** |  | 2010-10-20 → 2010-11-04 (+15d) | 85d → 96d | 89% → 90% | 2.5d → 11d |  |  |
| 162 | **Transition** |  | 2010-10-20 → 2010-11-04 (+15d) | 17d → 28d | 43% → 67% | 2.5d → 11d |  |  |
| 166 | GF 29813, GF 29832, & GF 29833 |  |  |  |  |  | 164 → none |  |
| 171 | test (dev) |  | 2010-10-13 A |  | 50% → 100% | 2.5d → none |  |  |
| 172 | (QA) | 2010-10-14 A | 2010-10-18 → 2010-10-15 A (-3d) | 3d → 2d | 0% → 100% | 5.5d → none |  | was named (Final QA) |
| 173 | "umbrella design doc": SDKDesignDocument-DeveloperSupport.doc | 2010-10-13 → 2010-10-14 A (+1d) | 2010-10-15 → 2010-10-18 A (+3d) |  | 0% → 100% | 8.5d → none |  | was named Umbrella design document; constraint start no earlier than 2010-10-13 → start no earlier than 2010-10-14 |
| 174 | Deliverables checklist | 2010-10-13 → 2010-10-18 A (+5d) | 2010-10-13 → 2010-10-18 A (+5d) |  | 0% → 100% | 5.5d → none |  | constraint start no earlier than 2010-10-13 → start no earlier than 2010-10-18; resources none → Greg |
| 175 | Deployment checklist | 2010-10-15 → 2010-10-19 A (+4d) | 2010-10-15 → 2010-10-19 A (+4d) |  | 0% → 100% | 7.5d → none |  | constraint start no earlier than 2010-10-15 → start no earlier than 2010-10-19; resources Dan → Greg |
| 184 | QA Complete | 2010-10-18 → 2010-10-28 (+10d) | 2010-10-18 → 2010-10-28 (+10d) |  |  | 5.5d → 11d | 172 → 183 |  |
| 188 | SDK 4.4 Release Announcement | 2010-10-20 → 2010-11-04 (+15d) | 2010-10-20 → 2010-11-04 (+15d) |  |  | 5.5d → 11d | 189, 175 → 187, 186 | was named SDK 4.4 Release |
| 189 | Deliverables Acceptance - documentation, code, QA | 2010-10-14 → 2010-10-26 (+12d) | 2010-10-19 → 2010-10-29 (+10d) |  |  | 5.5d → 14d |  |  |
| 190 | (Test Package) | 2010-10-19 → 2010-10-29 (+10d) | 2010-10-19 → 2010-10-29 (+10d) |  |  | 6.5d → 15d |  |  |
| 191 | Software Code Base (4.4) | 2010-10-20 → 2010-11-01 (+12d) | 2010-10-20 → 2010-11-01 (+12d) |  |  | 5.5d → 14d |  |  |
| 192 | Deployment Package (4.4) | 2010-10-20 → 2010-11-01 (+12d) | 2010-10-20 → 2010-11-01 (+12d) |  |  | 5.5d → 14d |  |  |
| 260 | **Transition** |  | 2010-10-13 A |  | 94% → 100% | 7.5d → none |  |  |
| 265 | **Usability enhancements prototype deliverables** |  | 2010-10-13 A |  | 89% → 100% | 7.5d → none |  |  |
| 272 | **Hydra Development Guide.docx** |  | 2010-10-13 A |  | 85% → 100% | 7.5d → none |  |  |
| 277 | Updates due to testing |  | 2010-10-13 A |  | 50% → 100% | 10.5d → none |  |  |

## Version 19 (saved 2010-11-04)

Note of the change: git-svn-id: https://ncisvn.nci.nih.gov/svn/cacoresdk/trunk@1431 221b6c9c-8bdd-4aed-8ce9-b1cbd18b7e1b

Last finish stays 2010-11-19. Complete tasks 194 → 200.

Added:

| ID | Task | Duration | Start | Finish | Predecessors | Constraint | Resources |
| --- | --- | --- | --- | --- | --- | --- | --- |
| 184 | **trackers from 3rd round** | 5d | 2010-10-29 A | 2010-11-04 A |  |  |  |
| 185 | GF 30007 - Browse EnDataType in Domain Class Browser Web Page for quering value4 generates exceptions | 1d | 2010-10-29 A | 2010-10-29 A | 183FS-2d |  | Dan |
| 186 | GF 30008 - Browse DsetAdDataType in Domain Class Browser Web Page for quering value8 generates exceptions | 1d | 2010-11-01 A | 2010-11-01 A | 183FS-2d | start no earlier than 2010-11-01 | Dan |
| 187 | workbench QA deployment issue (no tracker) | 1d | 2010-11-02 A | 2010-11-02 A |  | start no earlier than 2010-11-02 | Dan |
| 188 | resolve GF 29809 (no code changes) | 1d | 2010-11-03 A | 2010-11-03 A | 183 | start no earlier than 2010-11-03 | Dan |
| 189 | test & retag | 1d | 2010-11-04 A | 2010-11-04 A |  | start no earlier than 2010-11-04 | Dan |
| 190 | QA | 3d | 2010-11-05 | 2010-11-09 | 184 |  |  |

Changed:

| ID | Task | Start | Finish | Duration | Complete | Total float | Predecessors | Other |
| --- | --- | --- | --- | --- | --- | --- | --- | --- |
| 14 | **Transition** | 2010-10-29 → 2010-11-09 (+11d) | 2010-11-05 → 2010-11-15 (+10d) |  |  | 10.5d → 4d |  |  |
| 15 | Project Summary Report | 2010-10-29 → 2010-11-09 (+11d) | 2010-11-05 → 2010-11-15 (+10d) |  |  | 10.5d → 4d |  |  |
| 50 | **ISO 21090 Java library** |  | 2010-11-05 → 2010-11-15 (+10d) | 96.5d? → 103d |  | 10.5d → 4d |  |  |
| 83 | **Transition** |  | 2010-11-05 → 2010-11-15 (+10d) | 28.5d? → 35d |  | 10.5d → 4d |  |  |
| 85 | QA Complete | 2010-10-28 → 2010-11-09 (+12d) | 2010-10-28 → 2010-11-09 (+12d) |  |  | 12d → 4d |  |  |
| 86 | **Documentation (delayed due to BRD)** |  | 2010-11-02 → 2010-11-09 (+7d) | 12.5d → 17.5d |  | 10.5d → 5.5d |  |  |
| 88 | Variations between ISO 21090 XSD and UML/pdf | 2010-11-01 → 2010-11-08 (+7d) | 2010-11-02 → 2010-11-09 (+7d) |  |  | 10.5d → 5.5d |  | constraint start no earlier than 2010-11-01 → start no earlier than 2010-11-08 |
| 89 | **Archive unused versions** |  |  | 9d? → 9d |  |  |  |  |
| 92 | 2.2 branch - full ISO support, incomplete, untested |  |  | 1d? → 1d |  |  |  |  |
| 94 | Deliverables Acceptance - documentation, code | 2010-11-01 → 2010-11-10 (+9d) | 2010-11-04 → 2010-11-12 (+8d) |  |  | 10.5d → 4d |  |  |
| 95 | (Test Package - included with SDK 4.4) | 2010-10-29 → 2010-11-10 (+12d) | 2010-10-29 → 2010-11-10 (+12d) |  |  | 15d → 7d |  |  |
| 96 | Software Code Base (2.1.0.1 & 2.1.1) | 2010-11-04 → 2010-11-15 (+11d) | 2010-11-05 → 2010-11-15 (+10d) |  |  | 10.5d → 4d |  |  |
| 97 | Deployment Package (2.1.0.1) | 2010-11-04 → 2010-11-15 (+11d) | 2010-11-05 → 2010-11-15 (+10d) |  |  | 10.5d → 4d |  |  |
| 99 | **SDK 4.4 release (using 2.1 library, integrated with caGrid 1.4)** |  | 2010-11-04 → 2010-11-16 (+12d) | 96d → 104d |  | 11d → 3d |  |  |
| 162 | **Transition** |  | 2010-11-04 → 2010-11-16 (+12d) | 28d → 36d | 67% → 70% | 11d → 3d |  |  |
| 183 | QA |  | 2010-10-28 → 2010-11-01 A (+4d) | 3d → 5d | 50% → 100% | 11d → none |  |  |
| 191 | QA Complete | 2010-10-28 → 2010-11-09 (+12d) | 2010-10-28 → 2010-11-09 (+12d) |  |  | 11d → 3d | 183 → 190 |  |
| 192 | Deploy WB to stage | 2010-10-29 → 2010-11-10 (+12d) | 2010-11-01 → 2010-11-11 (+10d) |  |  | 11d → 3d |  |  |
| 193 | Deploy WB to production | 2010-11-02 → 2010-11-12 (+10d) | 2010-11-03 → 2010-11-15 (+12d) |  |  | 11d → 3d |  |  |
| 194 | Other deployment (see checklist) | 2010-10-29 → 2010-11-10 (+12d) | 2010-11-03 → 2010-11-15 (+12d) |  |  | 11d → 3d |  |  |
| 195 | SDK 4.4 Release Announcement | 2010-11-04 → 2010-11-16 (+12d) | 2010-11-04 → 2010-11-16 (+12d) |  |  | 11d → 3d |  |  |
| 196 | Deliverables Acceptance - documentation, code, QA | 2010-10-26 → 2010-11-05 (+10d) | 2010-10-29 → 2010-11-10 (+12d) |  |  | 14d → 6d |  |  |
| 197 | (Test Package) | 2010-10-29 → 2010-11-10 (+12d) | 2010-10-29 → 2010-11-10 (+12d) |  |  | 15d → 7d |  |  |
| 198 | Software Code Base (4.4) | 2010-11-01 → 2010-11-11 (+10d) | 2010-11-01 → 2010-11-11 (+10d) |  |  | 14d → 6d |  |  |
| 199 | Deployment Package (4.4) | 2010-11-01 → 2010-11-11 (+10d) | 2010-11-01 → 2010-11-11 (+10d) |  |  | 14d → 6d |  |  |

## Version 20 (saved 2010-11-11)

Note of the change: git-svn-id: https://ncisvn.nci.nih.gov/svn/cacoresdk/trunk@1433 221b6c9c-8bdd-4aed-8ce9-b1cbd18b7e1b

Last finish 2010-11-19 → 2010-12-08 (+19d).

Added:

| ID | Task | Duration | Start | Finish | Predecessors | Constraint | Resources |
| --- | --- | --- | --- | --- | --- | --- | --- |
| 93 | Re-version libraries, clean up unused tags and branches | 2d | 2010-11-16 | 2010-11-17 |  | start no earlier than 2010-11-16 | Dan |
| 94 | QA support - separate v2.2 testing | 5d? | 2010-11-24 | 2010-12-02 | 93, 193 |  |  |
| 192 | GF 30008 (Dset Value7 & Value8) | 2d | 2010-11-12 | 2010-11-15 |  | start no earlier than 2010-11-12 | Dan |

Changed:

| ID | Task | Start | Finish | Duration | Complete | Total float | Predecessors | Other |
| --- | --- | --- | --- | --- | --- | --- | --- | --- |
| 2 | **Project management and set-up tasks** |  | 2010-11-19 → 2010-12-08 (+19d) | 128d → 139d |  |  |  |  |
| 14 | **Transition** | 2010-11-09 → 2010-12-02 (+23d) | 2010-11-15 → 2010-12-08 (+23d) |  |  | 4d → 0d |  |  |
| 15 | Project Summary Report | 2010-11-09 → 2010-12-02 (+23d) | 2010-11-15 → 2010-12-08 (+23d) |  |  | 4d → 0d |  |  |
| 50 | **ISO 21090 Java library** |  | 2010-11-15 → 2010-12-08 (+23d) | 103d → 118d? | 89% → 81% | 4d → 0d |  |  |
| 83 | **Transition** |  | 2010-11-15 → 2010-12-08 (+23d) | 35d → 50d? | 53% → 37% | 4d → 0d |  |  |
| 85 | **Documentation (delayed due to BRD)** |  | 2010-11-09 → 2010-11-19 (+10d) | 17.5d → 25.5d |  | 5.5d → 8.5d |  |  |
| 87 | Variations between ISO 21090 XSD and UML/pdf | 2010-11-08 → 2010-11-18 (+10d) | 2010-11-09 → 2010-11-19 (+10d) |  |  | 5.5d → 8.5d |  | constraint start no earlier than 2010-11-08 → start no earlier than 2010-11-18 |
| 89 | (old version #) 2.1.1 branch - "on spec" for CIS, tested in sprint 3 but not released |  |  |  |  |  |  | was named 2.1.1 branch - "on spec" for CIS, tested in sprint 3 but not released |
| 90 | PIM_21090.pdf (updated for and checked into (old version #) 2.1.1) |  |  |  |  |  |  | was named PIM_21090.pdf (updated for and checked into 2.1.1) |
| 91 | (old version #) 2.2 branch - full ISO support, incomplete, untested |  |  |  |  |  |  | was named 2.2 branch - full ISO support, incomplete, untested |
| 95 | QA Complete (libraries) | 2010-11-09 → 2010-12-02 (+23d) | 2010-11-09 → 2010-12-02 (+23d) |  |  | 4d → 0d | 84, 194FF → 94 | was named QA Complete |
| 96 | Deliverables Acceptance - documentation, code | 2010-11-10 → 2010-12-03 (+23d) | 2010-11-12 → 2010-12-07 (+25d) |  |  | 4d → 0d |  |  |
| 97 | (Test Package - included with SDK 4.4) | 2010-11-10 → 2010-12-03 (+23d) | 2010-11-10 → 2010-12-03 (+23d) |  |  | 7d → 3d |  |  |
| 98 | Software Code Base (2.1.0.1 & 2.1.1) | 2010-11-15 → 2010-12-08 (+23d) | 2010-11-15 → 2010-12-08 (+23d) |  |  | 4d → 0d |  |  |
| 99 | Deployment Package (2.1.0.1) | 2010-11-15 → 2010-12-08 (+23d) | 2010-11-15 → 2010-12-08 (+23d) |  |  | 4d → 0d |  |  |
| 101 | **SDK 4.4 release (using 2.1 library, integrated with caGrid 1.4)** |  | 2010-11-16 → 2010-12-06 (+20d) | 104d → 116d | 90% → 88% | 3d → 2d |  |  |
| 164 | **Transition** |  | 2010-11-16 → 2010-12-06 (+20d) | 36d → 48d | 70% → 67% | 3d → 2d |  |  |
| 186 | **trackers from 3rd round** |  | 2010-11-04 A → 2010-11-15 (+11d) | 5d → 12d | 100% → 71% | none → 2d |  |  |
| 193 | QA | 2010-11-05 → 2010-11-18 (+13d) | 2010-11-09 → 2010-11-23 (+14d) | 3d → 4d |  | 3d → 0d | 186 → 186, 93 |  |
| 194 | QA Complete (SDK 4.4 with 2.1.1 library) | 2010-11-09 → 2010-11-23 (+14d) | 2010-11-09 → 2010-11-23 (+14d) |  |  | 3d → 4d |  | was named QA Complete |
| 195 | Deploy WB to stage | 2010-11-10 → 2010-11-24 (+14d) | 2010-11-11 → 2010-11-29 (+18d) |  |  | 3d → 4d |  |  |
| 196 | Deploy WB to production | 2010-11-12 → 2010-11-30 (+18d) | 2010-11-15 → 2010-12-01 (+16d) |  |  | 3d → 4d |  |  |
| 197 | Other deployment (see checklist) | 2010-11-10 → 2010-11-30 (+20d) | 2010-11-15 → 2010-12-03 (+18d) |  |  | 3d → 2d | 194 → 194, 95FF+1d |  |
| 198 | SDK 4.4 Release Announcement | 2010-11-16 → 2010-12-06 (+20d) | 2010-11-16 → 2010-12-06 (+20d) |  |  | 3d → 2d |  |  |
| 199 | Deliverables Acceptance - documentation, code, QA | 2010-11-05 → 2010-11-19 (+14d) | 2010-11-10 → 2010-11-24 (+14d) |  |  | 6d → 7d |  |  |
| 200 | (Test Package) | 2010-11-10 → 2010-11-24 (+14d) | 2010-11-10 → 2010-11-24 (+14d) |  |  | 7d → 8d |  |  |
| 201 | Software Code Base (4.4) | 2010-11-11 → 2010-11-29 (+18d) | 2010-11-11 → 2010-11-29 (+18d) |  |  | 6d → 7d |  |  |
| 202 | Deployment Package (4.4) | 2010-11-11 → 2010-11-29 (+18d) | 2010-11-11 → 2010-11-29 (+18d) |  |  | 6d → 7d |  |  |
| 281 | Internal reviews |  |  |  |  |  |  | resources Bediako → Bediako [14.3%] |

## Version 21 (saved 2010-11-17)

Note of the change: git-svn-id: https://ncisvn.nci.nih.gov/svn/cacoresdk/trunk@1450 221b6c9c-8bdd-4aed-8ce9-b1cbd18b7e1b

Last finish 2010-12-08 → 2010-12-15 (+7d). Complete tasks 200 → 201.

Changed:

| ID | Task | Start | Finish | Duration | Complete | Total float | Other |
| --- | --- | --- | --- | --- | --- | --- | --- |
| 2 | **Project management and set-up tasks** |  | 2010-12-08 → 2010-12-10 (+2d) | 139d → 141d |  | 0d → 3d |  |
| 14 | **Transition** | 2010-12-02 → 2010-12-06 (+4d) | 2010-12-08 → 2010-12-10 (+2d) |  |  | 0d → 3d |  |
| 15 | Project Summary Report | 2010-12-02 → 2010-12-06 (+4d) | 2010-12-08 → 2010-12-10 (+2d) |  |  | 0d → 3d |  |
| 50 | **ISO 21090 Java library** |  | 2010-12-08 → 2010-12-10 (+2d) | 118d? → 120d? |  | 0d → 3d |  |
| 83 | **Transition** |  | 2010-12-08 → 2010-12-10 (+2d) | 50d? → 52d? |  | 0d → 3d |  |
| 94 | QA support - separate v2.2 testing | 2010-11-24 → 2010-11-30 (+6d) | 2010-12-02 → 2010-12-06 (+4d) |  |  | 0d → 3d |  |
| 95 | QA Complete (libraries) | 2010-12-02 → 2010-12-06 (+4d) | 2010-12-02 → 2010-12-06 (+4d) |  |  | 0d → 3d |  |
| 96 | Deliverables Acceptance - documentation, code | 2010-12-03 → 2010-12-07 (+4d) | 2010-12-07 → 2010-12-09 (+2d) |  |  | 0d → 3d |  |
| 97 | (Test Package - included with SDK 4.4) | 2010-12-03 → 2010-12-07 (+4d) | 2010-12-03 → 2010-12-07 (+4d) |  |  |  |  |
| 98 | Software Code Base (2.1.1 & 2.2) | 2010-12-08 → 2010-12-10 (+2d) | 2010-12-08 → 2010-12-10 (+2d) |  |  | 0d → 3d | was named Software Code Base (2.1.0.1 & 2.1.1) |
| 99 | Deployment Package (2.1.1 & 2.2) | 2010-12-08 → 2010-12-10 (+2d) | 2010-12-08 → 2010-12-10 (+2d) |  |  | 0d → 3d | was named Deployment Package (2.1.0.1) |
| 101 | **SDK 4.4 release (using 2.1 library, integrated with caGrid 1.4)** |  | 2010-12-06 → 2010-12-08 (+2d) | 116d → 118d | 88% → 89% |  |  |
| 164 | **Transition** |  | 2010-12-06 → 2010-12-08 (+2d) | 48d → 50d | 67% → 70% |  |  |
| 186 | **trackers from 3rd round** |  | 2010-11-15 → 2010-11-17 A (+2d) | 12d → 14d | 71% → 100% | 2d → none |  |
| 192 | GF 30008 (Dset Value7 & Value8) | 2010-11-12 → 2010-11-16 A (+4d) | 2010-11-15 → 2010-11-17 A (+2d) |  | 0% → 100% | 2d → none | constraint start no earlier than 2010-11-12 → start no earlier than 2010-11-17 |
| 193 | QA | 2010-11-18 → 2010-11-22 (+4d) | 2010-11-23 → 2010-11-29 (+6d) |  |  | 0d → 3d | constraint none → start no earlier than 2010-11-22 |
| 194 | QA Complete (SDK 4.4 with 2.1.1 library) | 2010-11-23 → 2010-11-29 (+6d) | 2010-11-23 → 2010-11-29 (+6d) |  |  |  |  |
| 195 | Deploy WB to stage | 2010-11-24 → 2010-11-30 (+6d) | 2010-11-29 → 2010-12-01 (+2d) |  |  |  |  |
| 196 | Deploy WB to production | 2010-11-30 → 2010-12-02 (+2d) | 2010-12-01 → 2010-12-03 (+2d) |  |  |  |  |
| 197 | Other deployment (see checklist) | 2010-11-30 → 2010-12-02 (+2d) | 2010-12-03 → 2010-12-07 (+4d) |  |  |  |  |
| 198 | SDK 4.4 Release Announcement | 2010-12-06 → 2010-12-08 (+2d) | 2010-12-06 → 2010-12-08 (+2d) |  |  |  |  |
| 199 | Deliverables Acceptance - documentation, code, QA | 2010-11-19 → 2010-11-23 (+4d) | 2010-11-24 → 2010-11-30 (+6d) |  |  |  |  |
| 200 | (Test Package) | 2010-11-24 → 2010-11-30 (+6d) | 2010-11-24 → 2010-11-30 (+6d) |  |  |  |  |
| 201 | Software Code Base (4.4) | 2010-11-29 → 2010-12-01 (+2d) | 2010-11-29 → 2010-12-01 (+2d) |  |  |  |  |
| 202 | Deployment Package (4.4) | 2010-11-29 → 2010-12-01 (+2d) | 2010-11-29 → 2010-12-01 (+2d) |  |  |  |  |
| 289 | User support - ongoing | 2010-05-28 → 2010-08-03 (+67d) | 2010-10-08 → 2010-12-15 (+68d) |  |  | 31d → 0d | constraint start no earlier than 2010-05-28 → finish no earlier than 2010-12-15 |

## Version 22 (saved 2010-12-02)

Note of the change: git-svn-id: https://ncisvn.nci.nih.gov/svn/cacoresdk/trunk@1451 221b6c9c-8bdd-4aed-8ce9-b1cbd18b7e1b

Last finish 2010-12-15 → 2010-12-23 (+8d). Complete tasks 201 → 207.

Added:

| ID | Task | Duration | Start | Finish | Predecessors | Constraint | Resources |
| --- | --- | --- | --- | --- | --- | --- | --- |
| 23 | Monthly status report 7 | 1d | 2010-12-10 | 2010-12-10 |  | start no earlier than 2010-12-10 | Greg |
| 97 | "Deploy" v2.2 library on wiki | 1d | 2010-12-17 | 2010-12-17 | 96 |  |  |
| 195 | add fixes for caBIO patch: GF 30086 & 30088 | 1d | 2010-11-24 A | 2010-11-24 A |  | start no earlier than 2010-11-24 |  |
| 197 | **trackers from WB testing and additional dev testing** | 9d | 2010-11-18 A | 2010-12-02 A |  |  |  |
| 198 | GF 30255 - The get{association rolename} Link not Enabled in the SDK Search Critieria Results Page | 3d | 2010-11-18 A | 2010-11-22 A |  | start no earlier than 2010-11-18 | Dan |
| 199 | GF 30228 - Submit query on Domain Class Browser for example-project tables generates caCORE HTTP Servlet Error | 2d | 2010-11-29 A | 2010-11-30 A |  | start no earlier than 2010-11-29 | Dan |
| 200 | GF 30254 - ISO Example Project UI Missing Search Criteria Fields for Sample Non-ISO Inheritance Classes | 2d | 2010-12-01 A | 2010-12-02 A |  | start no earlier than 2010-12-01 | Dan |
| 201 | QA core SDK | 3d | 2010-12-03 | 2010-12-07 | 197 |  |  |
| 202 | QA SDK using WB | 2d | 2010-12-08 | 2010-12-09 | 201 |  |  |

Changed:

| ID | Task | Start | Finish | Duration | Complete | Total float | Predecessors | Other |
| --- | --- | --- | --- | --- | --- | --- | --- | --- |
| 2 | **Project management and set-up tasks** |  | 2010-12-10 → 2010-12-23 (+13d) | 141d → 150d |  | 3d → 0d |  |  |
| 14 | **Transition** | 2010-12-06 → 2010-12-17 (+11d) | 2010-12-10 → 2010-12-23 (+13d) |  |  | 3d → 0d |  |  |
| 15 | Project Summary Report | 2010-12-06 → 2010-12-17 (+11d) | 2010-12-10 → 2010-12-23 (+13d) |  |  | 3d → 0d |  |  |
| 16 | **Monthly status reports** |  | 2010-11-10 → 2010-12-10 (+30d) | 107d → 127d | 83% → 86% |  |  |  |
| 22 | Monthly status report 6 | 2010-11-10 A | 2010-11-10 A |  | 0% → 100% | 9d → none |  |  |
| 51 | **ISO 21090 Java library** |  | 2010-12-10 → 2010-12-23 (+13d) | 120d? → 129d? | 81% → 82% | 3d → 0d |  |  |
| 84 | **Transition** |  | 2010-12-10 → 2010-12-23 (+13d) | 52d? → 61d? | 37% → 40% | 3d → 0d |  |  |
| 94 | Re-version libraries, clean up unused tags and branches | 2010-11-16 A |  |  | 0% → 50% | 2d → 14d |  |  |
| 95 | QA support - separate v2.2 testing | 2010-11-30 → 2010-12-10 (+10d) | 2010-12-06 → 2010-12-16 (+10d) |  |  | 3d → 0d | 94, 196 → 94, 203 |  |
| 96 | QA Complete (libraries) | 2010-12-06 → 2010-12-16 (+10d) | 2010-12-06 → 2010-12-16 (+10d) |  |  | 3d → 0d |  |  |
| 98 | Deliverables Acceptance - documentation, code | 2010-12-07 → 2010-12-20 (+13d) | 2010-12-09 → 2010-12-22 (+13d) |  |  | 3d → 0d | 96, 86FF+2d → 86FF+2d, 97 |  |
| 99 | (Test Package - included with SDK 4.4) | 2010-12-07 → 2010-12-17 (+10d) | 2010-12-07 → 2010-12-17 (+10d) |  |  | 3d → 4d |  |  |
| 100 | Software Code Base (2.1.1 & 2.2) | 2010-12-10 → 2010-12-23 (+13d) | 2010-12-10 → 2010-12-23 (+13d) |  |  | 3d → 0d |  |  |
| 101 | Deployment Package (2.1.1 & 2.2) | 2010-12-10 → 2010-12-23 (+13d) | 2010-12-10 → 2010-12-23 (+13d) |  |  | 3d → 0d |  |  |
| 103 | **SDK 4.4 release (using 2.1 library, integrated with caGrid 1.4)** |  | 2010-12-08 → 2010-12-20 (+12d) | 118d → 126d |  | 2d → 3d |  |  |
| 166 | **Transition** |  | 2010-12-08 → 2010-12-20 (+12d) | 50d → 58d | 70% → 73% | 2d → 3d |  |  |
| 188 | **trackers from 3rd round** |  | 2010-11-17 A → 2010-11-24 A (+7d) | 14d → 19d |  |  |  |  |
| 196 | QA (including WB) | 2010-11-22 → 2010-11-29 A (+7d) | 2010-11-29 → 2010-12-01 A (+2d) | 4d → 3d | 0% → 100% | 3d → none |  | was named QA; constraint start no earlier than 2010-11-22 → start no earlier than 2010-11-24 |
| 203 | QA Complete (SDK 4.4 with 2.1.1 library plus using WB) | 2010-11-29 → 2010-12-09 (+10d) | 2010-11-29 → 2010-12-09 (+10d) |  |  | 4d → 0d | 196 → 201, 202 | was named QA Complete (SDK 4.4 with 2.1.1 library) |
| 204 | Deploy WB to stage | 2010-11-30 → 2010-12-10 (+10d) | 2010-12-01 → 2010-12-13 (+12d) |  |  | 4d → 5d |  |  |
| 205 | Deploy WB to production | 2010-12-02 → 2010-12-14 (+12d) | 2010-12-03 → 2010-12-15 (+12d) |  |  | 4d → 5d |  |  |
| 206 | Other deployment (see checklist) | 2010-12-02 → 2010-12-14 (+12d) | 2010-12-07 → 2010-12-17 (+10d) |  |  | 2d → 3d |  |  |
| 207 | SDK 4.4 Release Announcement | 2010-12-08 → 2010-12-20 (+12d) | 2010-12-08 → 2010-12-20 (+12d) |  |  | 2d → 3d |  |  |
| 208 | Deliverables Acceptance - documentation, code, QA | 2010-11-23 → 2010-12-07 (+14d) | 2010-11-30 → 2010-12-10 (+10d) |  |  | 7d → 8d |  |  |
| 209 | (Test Package) | 2010-11-30 → 2010-12-10 (+10d) | 2010-11-30 → 2010-12-10 (+10d) |  |  | 8d → 9d |  |  |
| 210 | Software Code Base (4.4) | 2010-12-01 → 2010-12-13 (+12d) | 2010-12-01 → 2010-12-13 (+12d) |  |  | 7d → 8d |  |  |
| 211 | Deployment Package (4.4) | 2010-12-01 → 2010-12-13 (+12d) | 2010-12-01 → 2010-12-13 (+12d) |  |  | 7d → 8d |  |  |

## Version 23 (saved 2010-12-07)

Note of the change: git-svn-id: https://ncisvn.nci.nih.gov/svn/cacoresdk/trunk@1460 221b6c9c-8bdd-4aed-8ce9-b1cbd18b7e1b

Last finish 2010-12-23 → 2010-12-28 (+5d). Complete tasks 207 → 209.

Added:

| ID | Task | Duration | Start | Finish | Predecessors | Constraint | Resources |
| --- | --- | --- | --- | --- | --- | --- | --- |
| 95 | Re-version libraries: 2.2, 2.3, clean up unused tags and branches | 1d | 2010-12-07 | 2010-12-07 |  | start no earlier than 2010-12-07 | Dan |
| 202 | test GF 30288 on additional databases | 3d | 2010-12-02 A | 2010-12-06 A | 200 | start no earlier than 2010-12-02 | Dan |

Changed:

| ID | Task | Start | Finish | Duration | Complete | Total float | Predecessors | Other |
| --- | --- | --- | --- | --- | --- | --- | --- | --- |
| 2 | **Project management and set-up tasks** |  | 2010-12-23 → 2010-12-28 (+5d) | 150d → 152d |  |  |  |  |
| 14 | **Transition** | 2010-12-17 → 2010-12-21 (+4d) | 2010-12-23 → 2010-12-28 (+5d) |  |  |  |  |  |
| 15 | Project Summary Report | 2010-12-17 → 2010-12-21 (+4d) | 2010-12-23 → 2010-12-28 (+5d) |  |  |  |  |  |
| 51 | **ISO 21090 Java library** |  | 2010-12-23 → 2010-12-28 (+5d) | 129d? → 131d? |  |  |  |  |
| 84 | **Transition** |  | 2010-12-23 → 2010-12-28 (+5d) | 61d? → 63d? |  |  |  |  |
| 89 | **Archive unused versions (version numbers reflect re-versioning)** |  |  |  |  |  |  | was named Archive unused versions |
| 90 | 2.2 branch - "on spec" for CIS, tested in sprint 3 and set aside |  |  |  |  |  |  | was named (old version #) 2.1.1 branch - "on spec" for CIS, tested in sprint 3 but not released |
| 91 | PIM_21090.pdf (updated for and checked into 2.2) |  |  |  |  |  |  | was named PIM_21090.pdf (updated for and checked into (old version #) 2.1.1) |
| 92 | 2.3 branch - full ISO support, incomplete, untested |  |  |  |  |  |  | was named (old version #) 2.2 branch - full ISO support, incomplete, untested |
| 94 | Re-version libraries: 2.1.1 |  | 2010-11-17 → 2010-11-16 A (-1d) | 2d → 1d | 50% → 100% | 14d → none |  | was named Re-version libraries, clean up unused tags and branches |
| 96 | QA support - separate v2.2 testing | 2010-12-10 → 2010-12-14 (+4d) | 2010-12-16 → 2010-12-20 (+4d) |  |  |  | 94, 205 → 205, 95 |  |
| 97 | QA Complete (libraries) | 2010-12-16 → 2010-12-20 (+4d) | 2010-12-16 → 2010-12-20 (+4d) |  |  |  |  |  |
| 98 | "Deploy" v2.2 library on wiki | 2010-12-17 → 2010-12-21 (+4d) | 2010-12-17 → 2010-12-21 (+4d) |  |  |  |  |  |
| 99 | Deliverables Acceptance - documentation, code | 2010-12-20 → 2010-12-22 (+2d) | 2010-12-22 → 2010-12-27 (+5d) |  |  |  |  |  |
| 100 | (Test Package - included with SDK 4.4) | 2010-12-17 → 2010-12-21 (+4d) | 2010-12-17 → 2010-12-21 (+4d) |  |  |  |  |  |
| 101 | Software Code Base (2.1.1 & 2.2) | 2010-12-23 → 2010-12-28 (+5d) | 2010-12-23 → 2010-12-28 (+5d) |  |  |  |  |  |
| 102 | Deployment Package (2.1.1 & 2.2) | 2010-12-23 → 2010-12-28 (+5d) | 2010-12-23 → 2010-12-28 (+5d) |  |  |  |  |  |
| 104 | **SDK 4.4 release (using 2.1 library, integrated with caGrid 1.4)** |  | 2010-12-20 → 2010-12-28 (+8d) | 126d → 131d | 89% → 90% | 3d → 0d |  |  |
| 167 | **Transition** |  | 2010-12-20 → 2010-12-28 (+8d) | 58d → 63d | 73% → 74% | 3d → 0d |  |  |
| 198 | **trackers from WB testing and additional dev testing** |  | 2010-12-02 A → 2010-12-06 A (+4d) | 9d → 11d |  |  |  |  |
| 203 | QA core SDK | 2010-12-03 → 2010-12-07 (+4d) | 2010-12-07 → 2010-12-09 (+2d) |  |  |  |  |  |
| 204 | QA SDK using WB | 2010-12-08 → 2010-12-10 (+2d) | 2010-12-09 → 2010-12-13 (+4d) |  |  |  |  |  |
| 205 | QA Complete (SDK 4.4 with 2.1.1 library plus using WB) | 2010-12-09 → 2010-12-13 (+4d) | 2010-12-09 → 2010-12-13 (+4d) |  |  |  |  |  |
| 206 | Deploy WB to stage | 2010-12-10 → 2010-12-21 (+11d) | 2010-12-13 → 2010-12-22 (+9d) |  |  | 5d → 0d | 205 → 205, 97 |  |
| 207 | Deploy WB to production | 2010-12-14 → 2010-12-23 (+9d) | 2010-12-15 → 2010-12-27 (+12d) |  |  | 5d → 0d |  |  |
| 208 | Other deployment (see checklist) | 2010-12-14 → 2010-12-16 (+2d) | 2010-12-17 → 2010-12-21 (+4d) |  |  |  |  |  |
| 209 | SDK 4.4 Release Announcement | 2010-12-20 → 2010-12-28 (+8d) | 2010-12-20 → 2010-12-28 (+8d) |  |  | 3d → 0d |  |  |
| 210 | Deliverables Acceptance - documentation, code, QA | 2010-12-07 → 2010-12-09 (+2d) | 2010-12-10 → 2010-12-14 (+4d) |  |  |  |  |  |
| 211 | (Test Package) | 2010-12-10 → 2010-12-14 (+4d) | 2010-12-10 → 2010-12-14 (+4d) |  |  |  |  |  |
| 212 | Software Code Base (4.4) | 2010-12-13 → 2010-12-15 (+2d) | 2010-12-13 → 2010-12-15 (+2d) |  |  |  |  |  |
| 213 | Deployment Package (4.4) | 2010-12-13 → 2010-12-15 (+2d) | 2010-12-13 → 2010-12-15 (+2d) |  |  |  |  |  |

## Version 24 (saved 2011-01-03)

Note of the change: git-svn-id: https://ncisvn.nci.nih.gov/svn/cacoresdk/trunk@1475 221b6c9c-8bdd-4aed-8ce9-b1cbd18b7e1b

Last finish 2010-12-28 → 2011-01-21 (+24d). Complete tasks 209 → 216.

Added:

| ID | Task | Duration | Start | Finish | Predecessors | Constraint |
| --- | --- | --- | --- | --- | --- | --- |
| 96 | Enhance v2.2 Junit tests (possible basis for QA test suite) | 10d | 2010-12-16 A | 2010-12-30 A |  | start no earlier than 2010-12-16 |
| 206 | GF 30329 | 1d | 2010-12-15 A | 2010-12-15 A | 205 |  |
| 207 | final QA | 4d | 2010-12-16 A | 2010-12-21 A | 206 |  |

Changed:

| ID | Task | Start | Finish | Duration | Complete | Total float | Predecessors | Other |
| --- | --- | --- | --- | --- | --- | --- | --- | --- |
| 2 | **Project management and set-up tasks** |  | 2010-12-28 → 2011-01-21 (+24d) | 152d → 169d |  |  |  |  |
| 14 | **Transition** | 2010-12-21 → 2011-01-17 (+27d) | 2010-12-28 → 2011-01-21 (+24d) |  |  |  |  |  |
| 15 | Project Summary Report | 2010-12-21 → 2011-01-17 (+27d) | 2010-12-28 → 2011-01-21 (+24d) |  |  |  |  |  |
| 51 | **ISO 21090 Java library** |  | 2010-12-28 → 2011-01-21 (+24d) | 131d? → 148d? | 82% → 81% |  |  |  |
| 84 | **Transition** |  | 2010-12-28 → 2011-01-21 (+24d) | 63d? → 80d? | 40% → 54% |  |  |  |
| 95 | Re-version libraries: 2.2, 2.3, clean up unused tags and branches | 2010-12-07 A | 2010-12-07 → 2010-12-08 A (+1d) | 1d → 2d | 0% → 100% | 4d → none |  | resources Dan → Dan [50%]; Vijay [50%] |
| 97 | QA support - separate v2.2 testing | 2010-12-14 → 2011-01-03 (+20d) | 2010-12-20 → 2011-01-14 (+25d) | 5d? → 10d? |  |  | 208, 95 → 208, 96 |  |
| 98 | QA Complete (libraries) | 2010-12-20 → 2011-01-14 (+25d) | 2010-12-20 → 2011-01-14 (+25d) |  |  |  |  |  |
| 99 | "Deploy" v2.2 library on wiki | 2010-12-21 → 2011-01-17 (+27d) | 2010-12-21 → 2011-01-17 (+27d) |  |  |  |  |  |
| 100 | Deliverables Acceptance - documentation, code | 2010-12-22 → 2011-01-18 (+27d) | 2010-12-27 → 2011-01-20 (+24d) |  |  |  |  |  |
| 101 | (Test Package - included with SDK 4.4) | 2010-12-21 → 2011-01-17 (+27d) | 2010-12-21 → 2011-01-17 (+27d) |  |  |  |  |  |
| 102 | Software Code Base (2.1.1 & 2.2) | 2010-12-28 → 2011-01-21 (+24d) | 2010-12-28 → 2011-01-21 (+24d) |  |  |  |  |  |
| 103 | Deployment Package (2.1.1 & 2.2) | 2010-12-28 → 2011-01-21 (+24d) | 2010-12-28 → 2011-01-21 (+24d) |  |  |  |  |  |
| 105 | **SDK 4.4 release (using 2.1 library, integrated with caGrid 1.4)** |  | 2010-12-28 → 2011-01-21 (+24d) | 131d → 148d | 90% → 92% |  |  |  |
| 168 | **Transition** |  | 2010-12-28 → 2011-01-21 (+24d) | 63d → 80d | 74% → 82% |  |  |  |
| 203 | test GF 30228 on additional databases |  |  |  |  |  |  | was named test GF 30288 on additional databases |
| 204 | QA core SDK | 2010-12-07 A | 2010-12-09 A |  | 0% → 100% | 0d → none |  |  |
| 205 | QA SDK using WB | 2010-12-10 A | 2010-12-13 → 2010-12-14 A (+1d) | 2d → 3d | 0% → 100% | 0d → none |  |  |
| 208 | QA Complete (SDK 4.4 with 2.1.1 library plus using WB) | 2010-12-13 → 2010-12-21 A (+8d) | 2010-12-13 → 2010-12-21 A (+8d) |  | 0% → 100% | 0d → none | 204, 205 → 204, 207 |  |
| 209 | Deploy WB to stage | 2010-12-21 → 2011-01-17 (+27d) | 2010-12-22 → 2011-01-18 (+27d) |  |  |  |  |  |
| 210 | Deploy WB to production | 2010-12-23 → 2011-01-19 (+27d) | 2010-12-27 → 2011-01-20 (+24d) |  |  |  |  |  |
| 211 | Other deployment (see checklist) | 2010-12-16 → 2011-01-12 (+27d) | 2010-12-21 → 2011-01-17 (+27d) |  |  |  |  |  |
| 212 | SDK 4.4 Release Announcement | 2010-12-28 → 2011-01-21 (+24d) | 2010-12-28 → 2011-01-21 (+24d) |  |  |  |  |  |
| 213 | Deliverables Acceptance - documentation, code, QA | 2010-12-09 → 2010-12-17 (+8d) | 2010-12-14 → 2010-12-22 (+8d) |  |  | 8d → 19d |  |  |
| 214 | (Test Package) | 2010-12-14 → 2010-12-22 (+8d) | 2010-12-14 → 2010-12-22 (+8d) |  |  | 9d → 20d |  |  |
| 215 | Software Code Base (4.4) | 2010-12-15 → 2010-12-23 (+8d) | 2010-12-15 → 2010-12-23 (+8d) |  |  | 8d → 19d |  |  |
| 216 | Deployment Package (4.4) | 2010-12-15 → 2010-12-23 (+8d) | 2010-12-15 → 2010-12-23 (+8d) |  |  | 8d → 19d |  |  |

## Version 25 (saved 2011-01-10)

Note of the change: git-svn-id: https://ncisvn.nci.nih.gov/svn/cacoresdk/trunk@1478 221b6c9c-8bdd-4aed-8ce9-b1cbd18b7e1b

Last finish stays 2011-01-21. Complete tasks 216 → 223.

Added:

| ID | Task | Duration | Start | Finish | Predecessors | Constraint |
| --- | --- | --- | --- | --- | --- | --- |
| 94 | **2.1.1** | 36d | 2010-11-16 A | 2011-01-10 |  |  |
| 96 | QA Complete (2.1.1 library tested with SDK 4.4) | 0d | 2010-12-21 A | 2010-12-21 A | 219 | start no earlier than 2010-09-24 |
| 97 | 2.1.1 Deliverables Available - documentation, code, QA | 0d | 2011-01-10 | 2011-01-10 | 86, 96 |  |
| 98 | (Test Package - 2.1.1 ISO library - included with SDK 4.4) | 0d | 2010-12-21 A | 2010-12-21 A | 96 |  |
| 99 | Software Code Base - 2.1.1 ISO library | 0d | 2010-12-21 A | 2010-12-21 A | 96 |  |
| 100 | Deployment Package - 2.1.1 ISO library | 0d | 2011-01-10 | 2011-01-10 | 97 |  |
| 101 | **2.2 (completion is out of scope given contract end date)** | 27d? | 2010-12-07 A | 2011-01-14 |  |  |
| 102 | Variations between ISO 21090 XSD and UML/pdf (updated for 2.2) | 0.5d | 2011-01-11 | 2011-01-11 | 88 |  |
| 103 | NCI_CBIIT_ISO_21090_Localization_Common_Project_ReleaseNotes_v2.2.txt | 0.5d | 2010-12-22 | 2010-12-22 | 96 |  |
| 107 | Resolution of issues from QA | 0d? | 2011-01-14 | 2011-01-14 | 106 |  |
| 113 | **Release** | 1d | 2011-01-17 | 2011-01-17 | 94, 101, 221 |  |
| 114 | "Deploy" v2.1.1 library on wiki | 1d | 2011-01-17 | 2011-01-17 |  |  |
| 225 | **Release** | 5d | 2011-01-17 | 2011-01-21 | 94, 101, 221 |  |

Changed:

| ID | Task | Start | Finish | Duration | Complete | Total float | Predecessors | Other |
| --- | --- | --- | --- | --- | --- | --- | --- | --- |
| 2 | **Project management and set-up tasks** |  | 2011-01-21 → 2011-01-12 (-9d) | 169d → 162d | 89% → 93% | 0d → 7d |  |  |
| 14 | **Transition** | 2011-01-17 → 2011-01-10 (-7d) | 2011-01-21 → 2011-01-12 (-9d) | 5d → 3d |  | 0d → 7d |  |  |
| 15 | Project Summary Report | 2011-01-17 → 2011-01-10 (-7d) | 2011-01-21 → 2011-01-12 (-9d) | 5d → 3d |  | 0d → 7d | 109FF+1d, 221FF+1d → none | constraint start no earlier than 2010-10-13 → start no earlier than 2011-01-10 |
| 51 | **ISO 21090 Java library** |  | 2011-01-21 → 2011-01-17 (-4d) | 148d? → 144d? | 81% → 90% | 0d → 4d |  |  |
| 84 | **Transition** |  | 2011-01-21 → 2011-01-14 (-7d) | 80d? → 75d? | 54% → 79% |  |  |  |
| 86 | **Documentation (delayed due to BRD)** |  | 2010-11-19 → 2011-01-10 (+52d) | 25.5d → 58d | 25% → 33% | 21.5d → 3.5d |  |  |
| 88 | Variations between ISO 21090 XSD and UML/pdf | 2010-11-18 → 2011-01-10 (+53d) | 2010-11-19 → 2011-01-10 (+52d) | 1.5d → 1d |  | 19.5d → 6d |  | constraint start no earlier than 2010-11-18 → start no earlier than 2011-01-10 |
| 106 | QA support - separate v2.2 testing | 2011-01-03 A |  |  | 0% → 50% |  |  |  |
| 108 | QA Complete (2.2 library) |  |  |  |  |  | 106 → 107 | was named QA Complete (libraries) |
| 109 | 2.2 Deliverables Available - documentation, code, QA | 2011-01-18 → 2011-01-14 (-4d) | 2011-01-20 → 2011-01-14 (-6d) | 3d → 0d |  |  | 86FF+2d, 115 → 108, 102, 86, 103 | was named Deliverables Acceptance - documentation, code |
| 110 | (Test Package - 2.2 ISO library) | 2011-01-17 → 2011-01-14 (-3d) | 2011-01-17 → 2011-01-14 (-3d) | 1d → 0d |  | 4d → 0d |  | was named (Test Package - included with SDK 4.4) |
| 111 | Software Code Base - 2.2 ISO library | 2011-01-21 → 2011-01-14 (-7d) | 2011-01-21 → 2011-01-14 (-7d) | 1d → 0d |  |  | 109 → 108 | was named Software Code Base (2.1.1 & 2.2) |
| 112 | Deployment Package - 2.2 ISO library | 2011-01-21 → 2011-01-14 (-7d) | 2011-01-21 → 2011-01-14 (-7d) | 1d → 0d |  |  |  | was named Deployment Package (2.1.1 & 2.2) |
| 115 | "Deploy" v2.2 library on wiki |  |  |  |  | 0d → 4d | 108 → none |  |
| 117 | **SDK 4.4 release (using 2.1.1 library)** |  |  |  | 92% → 96% |  |  | was named SDK 4.4 release (using 2.1 library, integrated with caGrid 1.4) |
| 180 | **Transition** |  | 2011-01-21 → 2010-12-21 A (-31d) | 80d → 59d | 82% → 100% | 0d → none |  |  |
| 221 | SDK 4.4 Deliverables Available - documentation, code, QA | 2010-12-17 → 2010-12-21 A (+4d) | 2010-12-22 → 2010-12-21 A (-1d) | 4d → 0d | 0% → 100% | 19d → none | 220FF+1d, 192 → 220 | was named Deliverables Acceptance - documentation, code, QA |
| 222 | (Test Package SDK 4.4) | 2010-12-22 → 2010-12-21 A (-1d) | 2010-12-22 → 2010-12-21 A (-1d) | 1d → 0d | 0% → 100% | 20d → none |  | was named (Test Package) |
| 223 | Software Code Base - SDK 4.4 | 2010-12-23 → 2010-12-21 A (-2d) | 2010-12-23 → 2010-12-21 A (-2d) | 1d → 0d | 0% → 100% | 19d → none |  | was named Software Code Base (4.4) |
| 224 | Deployment Package - SDK 4.4 | 2010-12-23 → 2010-12-21 A (-2d) | 2010-12-23 → 2010-12-21 A (-2d) | 1d → 0d | 0% → 100% | 19d → none |  | was named Deployment Package (4.4) |
| 226 | Deploy WB to stage |  |  |  |  |  | 220, 108 → 108 |  |
| 228 | Other deployment (see checklist) | 2011-01-12 → 2011-01-17 (+5d) | 2011-01-17 → 2011-01-20 (+3d) |  |  | 3d → 0d |  |  |

## Version 26 (saved 2011-01-12)

Note of the change: git-svn-id: https://ncisvn.nci.nih.gov/svn/cacoresdk/trunk@1479 221b6c9c-8bdd-4aed-8ce9-b1cbd18b7e1b

Last finish stays 2011-01-21. Complete tasks 223 → 229.

Added:

| ID | Task | Duration | Start | Finish | Predecessors | Constraint |
| --- | --- | --- | --- | --- | --- | --- |
| 97 | NCI_CBIIT_ISO_21090_Localization_Common_Project_ReleaseNotes_v2.1.1.txt updated | 0.5d | 2011-01-12 A | 2011-01-12 A | 96 | start no earlier than 2011-01-12 |

Changed:

| ID | Task | Start | Finish | Duration | Complete | Total float | Predecessors | Other |
| --- | --- | --- | --- | --- | --- | --- | --- | --- |
| 2 | **Project management and set-up tasks** |  | 2011-01-12 → 2011-01-17 (+5d) | 162d → 165d | 93% → 90% | 7d → 4d |  |  |
| 14 | **Transition** | 2011-01-10 → 2011-01-11 A (+1d) | 2011-01-12 → 2011-01-17 (+5d) | 3d → 5d | 0% → 10% | 7d → 4d |  |  |
| 15 | Project Summary Report | 2011-01-10 → 2011-01-11 A (+1d) | 2011-01-12 → 2011-01-17 (+5d) | 3d → 5d | 0% → 10% | 7d → 4d |  | constraint start no earlier than 2011-01-10 → start no earlier than 2011-01-11 |
| 51 | **ISO 21090 Java library** |  |  |  | 90% → 95% |  |  |  |
| 84 | **Transition** |  |  |  | 79% → 92% |  |  |  |
| 86 | **Documentation (delayed due to BRD)** |  | 2011-01-10 → 2011-01-11 A (+1d) |  | 33% → 100% | 3.5d → none |  |  |
| 88 | N/A, added to release notes instead - Variations between ISO 21090 XSD and UML/pdf | 2011-01-10 → 2011-01-11 A (+1d) | 2011-01-10 → 2011-01-11 A (+1d) | 1d → 0d | 0% → 100% | 6d → none |  | was named Variations between ISO 21090 XSD and UML/pdf; constraint start no earlier than 2011-01-10 → start no earlier than 2011-01-11 |
| 94 | **2.1.1** |  | 2011-01-10 → 2011-01-12 A (+2d) | 36d → 37.5d | 99% → 100% | 4d → none |  |  |
| 98 | 2.1.1 Deliverables Available - documentation, code, QA | 2011-01-10 → 2011-01-12 A (+2d) | 2011-01-10 → 2011-01-12 A (+2d) |  | 0% → 100% | 9d → none | 86, 96 → 86, 97 |  |
| 101 | Deployment Package - 2.1.1 ISO library | 2011-01-10 → 2011-01-12 A (+2d) | 2011-01-10 → 2011-01-12 A (+2d) |  | 0% → 100% | 9d → none |  |  |
| 102 | **2.2 (completion is out of scope given contract end date)** |  |  |  | 74% → 89% |  |  |  |
| 103 | N/A, added to release notes instead - Variations between ISO 21090 XSD and UML/pdf | 2011-01-11 A | 2011-01-11 A | 0.5d → 0d | 0% → 100% | 7.5d → none |  | was named Variations between ISO 21090 XSD and UML/pdf (updated for 2.2) |
| 104 | NCI_CBIIT_ISO_21090_Localization_Common_Project_ReleaseNotes_v2.2.txt | 2010-12-22 → 2011-01-12 A (+21d) | 2010-12-22 → 2011-01-12 A (+21d) | 0.5d → 0d | 0% → 100% | 15.5d → none |  | constraint none → start no earlier than 2011-01-12 |
| 107 | QA support - separate v2.2 testing |  |  |  | 50% → 75% |  |  |  |
