# Task Plan

How a schedule from MS Project changed from version to version. A marks actual dates.

## Version 1 (saved 2010-03-01, file SDK-CSM Task Plan.mpp)

Note of the change: Commit of SDK docs from Shared drive to SVN.

| ID | WBS | Task | Duration | Start | Finish | Predecessors | Complete | Total float | Constraint |
| --- | --- | --- | --- | --- | --- | --- | --- | --- | --- |
| 1 | 1 | **Task Plan** | 423d? | 2008-09-17 A | 2010-04-30 |  | 85% | 0d |  |
| 2 | 1.1 | **4.2 Release** | 320d | 2008-09-17 A | 2009-12-08 |  | 99% | 113d |  |
| 3 | 1.1.1 | **SDK 4.2** | 320d | 2008-09-17 A | 2009-12-08 A |  | 100% |  |  |
| 4 |  | Production support | 284d | 2008-09-17 A | 2009-11-02 A |  | 100% |  | finish no earlier than 2009-11-02 |
| 5 | 1.1.1.2 | **Inception** | 4d | 2008-11-03 A | 2008-11-06 A |  | 100% |  |  |
| 6 | 1.1.1.2.1 | **Requirements** | 4d | 2008-11-03 A | 2008-11-06 A |  | 100% |  |  |
| 7 |  | Create scope candidate spreadsheet for 4.2 | 3d | 2008-11-03 A | 2008-11-05 A |  | 100% |  |  |
| 8 |  | Submit scope candidate spreadsheet for review | 0d | 2008-11-05 A | 2008-11-05 A | 7 | 100% |  |  |
| 9 |  | Review and provide feedback on candidate spreadsheet | 1d | 2008-11-06 A | 2008-11-06 A | 8 | 100% |  |  |
| 10 | 1.1.1.3 | **Elaboration** | 61d | 2008-11-07 A | 2009-01-30 A |  | 100% |  |  |
| 11 | 1.1.1.3.1 | **Iteration 1** | 10.5d | 2008-11-07 A | 2008-11-21 A |  | 100% |  |  |
| 12 | 1.1.1.3.1.1 | **Project Management** | 9.5d | 2008-11-07 A | 2008-11-20 A |  | 100% |  |  |
| 13 |  | Provide LOE on scope candidate list | 1d | 2008-11-07 A | 2008-11-07 A | 9 | 100% |  |  |
| 14 |  | Develop schedule based on LOE | 1d | 2008-11-10 A | 2008-11-10 A | 13 | 100% |  |  |
| 15 |  | Submit schedule for review | 1d | 2008-11-11 A | 2008-11-11 A | 14 | 100% |  |  |
| 16 |  | Revise schedule | 0.5d | 2008-11-20 A | 2008-11-20 A | 15, 23 | 100% |  |  |
| 17 | 1.1.1.3.1.2 | **Requirements** | 9d | 2008-11-07 A | 2008-11-19 A |  | 100% |  |  |
| 18 | 1.1.1.3.1.2.1 | **Create scope document** | 9d | 2008-11-07 A | 2008-11-19 A |  | 100% |  |  |
| 19 |  | Create draft scope document | 2d | 2008-11-07 A | 2008-11-10 A | 9 | 100% |  |  |
| 20 |  | Prepare risk list | 2d | 2008-11-11 A | 2008-11-12 A | 19 | 100% |  |  |
| 21 |  | Review scope document | 3d | 2008-11-13 A | 2008-11-17 A | 20 | 100% |  |  |
| 22 |  | Revise scope document | 1d | 2008-11-18 A | 2008-11-18 A | 21 | 100% |  |  |
| 23 |  | Sign off scope document | 1d | 2008-11-19 A | 2008-11-19 A | 22 | 100% |  |  |
| 24 | 1.1.1.3.1.3 | **Analysis and Design** | 10d | 2008-11-07 A | 2008-11-20 A |  | 100% |  |  |
| 25 |  | ISO 21090 Support | 2d | 2008-11-19 A | 2008-11-20 A | 22 | 100% |  |  |
| 26 |  | SDK Installer | 7.5d | 2008-11-07 A | 2008-11-18 A | 9 | 100% |  |  |
| 27 |  | Iteration complete | 1d | 2008-11-20 A | 2008-11-21 A | 16, 26, 23 | 100% |  |  |
| 28 | 1.1.1.3.2 | **Iteration 2** | 44d | 2008-12-02 A | 2009-01-30 A |  | 100% |  |  |
| 29 | 1.1.1.3.2.1 | **Analysis and Design** | 43d | 2008-12-02 A | 2009-01-29 A |  | 100% |  |  |
| 30 | 1.1.1.3.2.1.1 | **ISO 21090 Support** | 43d | 2008-12-02 A | 2009-01-29 A |  | 100% |  |  |
| 31 |  | Research Java API | 20d | 2008-12-02 A | 2008-12-30 A | 27 | 100% |  |  |
| 32 |  | Research O/R mapping framework for datatype | 20d | 2009-01-02 A | 2009-01-29 A | 31 | 100% |  |  |
| 33 |  | Iteration complete | 1d | 2009-01-30 A | 2009-01-30 A | 32 | 100% |  |  |
| 34 | 1.1.1.4 | **Construction** | 192d | 2008-11-07 A | 2009-08-03 A |  | 100% |  |  |
| 35 | 1.1.1.4.1 | **Iteration 1** | 38d | 2008-11-21 A | 2009-01-14 A |  | 100% |  |  |
| 36 | 1.1.1.4.1.1 | **Implementation** | 21d | 2008-11-21 A | 2008-12-22 A |  | 100% |  |  |
| 37 | 1.1.1.4.1.1.1 | **Implement MySQL performance fix for EVS** | 6d | 2008-11-21 A | 2008-12-01 A |  | 100% |  |  |
| 38 |  | Investigate the generated queries | 4d | 2008-11-21 A | 2008-12-01 A | 27 | 100% |  |  |
| 39 | 1.1.1.4.1.1.2 | **Implement performance fix for caTissue** | 4d | 2008-12-01 A | 2008-12-05 A |  | 100% |  |  |
| 40 |  | Receive artifacts for investigation from caTissue team | 0d | 2008-12-01 A | 2008-12-01 A | 38 | 100% |  |  |
| 41 |  | Investigate performance issue | 4d | 2008-12-01 A | 2008-12-05 A | 40 | 100% |  |  |
| 42 | 1.1.1.4.1.1.3 | **Implement fix for caGrid defects** | 3d | 2008-12-05 A | 2008-12-10 A |  | 100% |  |  |
| 43 |  | Implement fix for ApplicationServiceProvider | 1d | 2008-12-05 A | 2008-12-08 A | 41 | 100% |  |  |
| 44 |  | Implement fix for caGrid CQL | 2d | 2008-12-08 A | 2008-12-10 A | 43 | 100% |  |  |
| 45 |  | Implement fix for ACEGI security context | 1d | 2008-12-10 A | 2008-12-11 A | 44 | 100% |  |  |
| 46 |  | Implement fix for subclass and set ordering | 1d | 2008-12-10 A | 2008-12-11 A | 44 | 100% |  |  |
| 47 |  | PKGeneratorValidator.java generates a NullPointerException | 1d | 2008-12-11 A | 2008-12-12 A | 46 | 100% |  |  |
| 48 |  | Implement fix for hibernate property error in query | 2d | 2008-12-12 A | 2008-12-16 A | 47 | 100% |  |  |
| 49 |  | Implement writable API façade | 4d | 2008-12-16 A | 2008-12-22 A | 48 | 100% |  |  |
| 50 | 1.1.1.4.1.2 | **Test** | 22d | 2008-12-15 A | 2009-01-14 A |  | 100% |  |  |
| 51 |  | Prepare test plan | 5d | 2008-12-15 A | 2008-12-22 A | 52SF | 100% |  |  |
| 52 |  | Execute test plan | 10d | 2008-12-22 A | 2009-01-08 A | 36 | 100% |  |  |
| 53 |  | Provide test support | 14d | 2008-12-22 A | 2009-01-14 A | 36 | 100% |  |  |
| 54 |  | Iteration complete / Release SDK 4.1.1 | 0d | 2009-01-09 A | 2009-01-09 A | 53 | 100% |  |  |
| 55 | 1.1.1.4.2 | **Iteration 2** | 61d | 2008-11-07 A | 2009-01-30 A |  | 100% |  |  |
| 56 | 1.1.1.4.2.1 | **Implementation** | 9.5d | 2009-01-09 A | 2009-01-22 A |  | 100% |  |  |
| 57 | 1.1.1.4.2.1.1 | **SDK Installer** | 9.5d | 2009-01-09 A | 2009-01-22 A |  | 100% |  |  |
| 58 |  | Implement tabs for installation | 7.5d | 2009-01-09 A | 2009-01-20 A | 54 | 100% |  |  |
| 59 |  | Review and check-in the code | 2d | 2009-01-21 A | 2009-01-22 A | 58 | 100% |  |  |
| 60 | 1.1.1.4.2.2 | **Software Configuration Management** | 45d | 2008-11-07 A | 2009-01-08 A |  | 100% |  |  |
| 61 | 1.1.1.4.2.2.1 | **BDA Activities** | 45d | 2008-11-07 A | 2009-01-08 A |  | 100% |  |  |
| 62 |  | Create directory structure and compilation scripts | 15d | 2008-11-07 A | 2008-12-01 A | 6 | 100% |  |  |
| 63 |  | Create code generation and Packaging scripts | 25d | 2008-12-02 A | 2009-01-08 A | 62 | 100% |  |  |
| 64 | 1.1.1.4.2.3 | **Test** | 8d | 2009-01-20 A | 2009-01-29 A |  | 100% |  |  |
| 65 |  | Prepare test plan | 3d | 2009-01-20 A | 2009-01-26 A | 66SF | 100% |  |  |
| 66 |  | Execute test plan | 5d | 2009-01-23 A | 2009-01-29 A | 61, 57 | 100% |  |  |
| 67 |  | Provide test support | 5d | 2009-01-23 A | 2009-01-29 A | 61, 57 | 100% |  |  |
| 68 |  | Iteration complete | 1d | 2009-01-30 A | 2009-01-30 A | 60, 64 | 100% |  |  |
| 69 | 1.1.1.4.3 | **Iteration 3** | 24d | 2009-02-02 A | 2009-03-05 A |  | 100% |  |  |
| 70 | 1.1.1.4.3.1 | **Implementation** | 12d | 2009-02-02 A | 2009-02-17 A |  | 100% |  |  |

| ID | WBS | Task | Duration | Start | Finish | Predecessors | Complete | Constraint |
| --- | --- | --- | --- | --- | --- | --- | --- | --- |
| 71 | 1.1.1.4.3.1.1 | **Freestyle search research** | 5d | 2009-02-02 A | 2009-02-06 A |  | 100% |  |
| 72 |  | Research/Prototype | 5d | 2009-02-02 A | 2009-02-06 A | 68 | 100% |  |
| 73 | 1.1.1.4.3.1.2 | **Defect Fixes** | 2d | 2009-02-09 A | 2009-02-10 A |  | 100% |  |
| 74 |  | Installer defects | 2d | 2009-02-09 A | 2009-02-10 A | 72 | 100% |  |
| 75 |  | Test case development/integration | 5d | 2009-02-11 A | 2009-02-17 A | 74 | 100% |  |
| 76 | 1.1.1.4.3.2 | **Software Configuration Management** | 20d | 2009-02-02 A | 2009-02-27 A |  | 100% |  |
| 77 | 1.1.1.4.3.2.1 | **BDA Activities** | 20d | 2009-02-02 A | 2009-02-27 A |  | 100% |  |
| 78 |  | Create automated deployment scripts | 12d | 2009-02-02 A | 2009-02-17 A | 68 | 100% |  |
| 79 |  | Migrate code to SVN | 3d | 2009-02-18 A | 2009-02-20 A | 78 | 100% |  |
| 80 |  | Configure Hudson server | 5d | 2009-02-23 A | 2009-02-27 A | 79 | 100% |  |
| 81 | 1.1.1.4.3.3 | **Test** | 12d | 2009-02-18 A | 2009-03-05 A |  | 100% |  |
| 82 |  | Prepare test plan | 3d | 2009-02-18 A | 2009-03-02 A | 83SF | 100% |  |
| 83 |  | Execute test plan | 4d | 2009-03-02 A | 2009-03-05 A | 71, 77 | 100% |  |
| 84 |  | Provide test support | 4d | 2009-03-02 A | 2009-03-05 A | 71, 77 | 100% |  |
| 85 |  | Iteration complete | 0d | 2009-03-05 A | 2009-03-05 A | 81 | 100% |  |
| 86 | 1.1.1.4.4 | **Iteration 4** | 17d | 2009-03-06 A | 2009-03-31 A |  | 100% |  |
| 87 | 1.1.1.4.4.1 | **Implementation** | 17d | 2009-03-06 A | 2009-03-31 A |  | 100% |  |
| 88 | 1.1.1.4.4.1.1 | **BDA Activities** | 15d | 2009-03-06 A | 2009-03-26 A |  | 100% |  |
| 89 |  | Integrate Junits in the build process | 5d | 2009-03-06 A | 2009-03-12 A | 85 | 100% |  |
| 90 |  | Create database auto-deployment configuration | 5d | 2009-03-13 A | 2009-03-19 A | 89 | 100% |  |
| 91 |  | Configure hudson server for build and test cases | 5d | 2009-03-20 A | 2009-03-26 A | 90 | 100% |  |
| 92 | 1.1.1.4.4.1.2 | **SDK Workbench** | 15d | 2009-03-06 A | 2009-03-26 A |  | 100% |  |
| 93 |  | Implement deployment scenario workflows | 10d | 2009-03-06 A | 2009-03-19 A | 85 | 100% |  |
| 94 |  | Implement fix for the defects/comments received | 5d | 2009-03-20 A | 2009-03-26 A | 93 | 100% |  |
| 95 |  | Iteration complete | 0d | 2009-03-31 A | 2009-03-31 A | 92, 88 | 100% | start no earlier than 2009-03-31 |
| 96 | 1.1.1.4.5 | **Iteration 5** | 27d | 2009-03-25 A | 2009-04-30 A |  | 100% |  |
| 97 | 1.1.1.4.5.1 | **Test** | 19d | 2009-03-25 A | 2009-04-20 A |  | 100% |  |
| 98 |  | Prepare test plan | 3d | 2009-03-25 A | 2009-03-31 A | 99SF | 100% |  |
| 99 |  | Execute test plan | 15d | 2009-03-31 A | 2009-04-20 A | 95 | 100% |  |
| 100 |  | Provide test support | 15d | 2009-03-31 A | 2009-04-20 A | 95 | 100% |  |
| 101 | 1.1.1.4.5.2 | **BDA Activities** | 8d | 2009-04-21 A | 2009-04-30 A |  | 100% |  |
| 102 |  | Investigate dashboard software | 4d | 2009-04-21 A | 2009-04-24 A | 100 | 100% |  |
| 103 |  | Install and configure code quality tools | 4d | 2009-04-27 A | 2009-04-30 A | 102 | 100% |  |
| 104 | 1.1.1.4.5.3 | **SDK Workbench** | 6d | 2009-04-21 A | 2009-04-28 A |  | 100% |  |
| 105 |  | Implement remote deployment scenarios | 2d | 2009-04-21 A | 2009-04-22 A | 100 | 100% |  |
| 106 |  | Implement Grid security scenarios | 2d | 2009-04-23 A | 2009-04-24 A | 105 | 100% |  |
| 107 |  | Defect fixes | 2d | 2009-04-27 A | 2009-04-28 A | 106 | 100% |  |
| 108 | 1.1.1.4.5.4 | **Bootcamp support** | 7d | 2009-04-21 A | 2009-04-29 A |  | 100% |  |
| 109 |  | Provide presentation & material | 7d | 2009-04-21 A | 2009-04-29 A | 97 | 100% |  |
| 110 |  | Iteration complete | 0d | 2009-04-30 A | 2009-04-30 A | 97, 101, 104 | 100% |  |
| 111 | 1.1.1.4.6 | **Iteration 6** | 22d | 2009-05-01 A | 2009-06-01 A |  | 100% |  |
| 112 |  | Bootcamp preperation and presentation | 5d | 2009-05-01 A | 2009-05-07 A | 110 | 100% |  |
| 113 |  | Arch FTF preperation and presentation | 6d | 2009-05-08 A | 2009-05-15 A | 112 | 100% |  |
| 114 | 1.1.1.4.6.3 | **SDK Workbench** | 22d | 2009-05-01 A | 2009-06-01 A |  | 100% |  |
| 115 |  | BDAfication of SDK workbench | 10d | 2009-05-01 A | 2009-05-14 A | 110 | 100% |  |
| 116 |  | SVN reorganization | 1d | 2009-05-15 A | 2009-05-15 A | 115 | 100% |  |
| 117 |  | Implement SDK download workflow | 5d | 2009-05-18 A | 2009-05-22 A | 116 | 100% |  |
| 118 |  | Fix defects | 6d | 2009-05-25 A | 2009-06-01 A | 117 | 100% |  |
| 119 | 1.1.1.4.6.4 | **BDA Activities** | 18d | 2009-05-01 A | 2009-05-26 A |  | 100% |  |
| 120 |  | Code quality plugin installation | 5d | 2009-05-01 A | 2009-05-07 A | 110 | 100% |  |
| 121 |  | Fix test cases | 3d | 2009-05-08 A | 2009-05-12 A | 120 | 100% |  |
| 122 |  | QA support | 10d | 2009-05-13 A | 2009-05-26 A | 121 | 100% |  |
| 123 |  | Iteration complete | 0d | 2009-06-01 A | 2009-06-01 A | 119, 114 | 100% |  |
| 124 | 1.1.1.4.7 | **Iteration 7** | 45d | 2009-06-02 A | 2009-08-03 A |  | 100% |  |
| 125 | 1.1.1.4.7.1 | **Continuous Integration configuration** | 4d | 2009-06-02 A | 2009-06-05 A |  | 100% |  |
| 126 |  | Fix database scripts | 2d | 2009-06-02 A | 2009-06-03 A | 123 | 100% |  |
| 127 |  | Re-deploy hudson on DEV environment | 1d | 2009-06-04 A | 2009-06-04 A | 126 | 100% |  |
| 128 |  | Configure SDK workbench track in Hudson | 1d | 2009-06-05 A | 2009-06-05 A | 127 | 100% |  |
| 129 | 1.1.1.4.7.2 | **WebSSO presentation** | 5d | 2009-06-18 A | 2009-06-24 A |  | 100% |  |
| 130 |  | Prepare presentation | 1d | 2009-06-18 A | 2009-06-18 A | 131SF | 100% |  |
| 131 |  | Internal review | 1d | 2009-06-18 A | 2009-06-19 A | 132SF-1d | 100% |  |
| 132 |  | External review | 0d | 2009-06-22 A | 2009-06-22 A | 133SF-2d | 100% | start no earlier than 2009-06-19 |
| 133 |  | Present to Novartis | 1d | 2009-06-24 A | 2009-06-24 A |  | 100% | start no earlier than 2009-06-24 |
| 134 | 1.1.1.4.7.3 | **Testing** | 40d | 2009-06-08 A | 2009-07-31 A |  | 100% |  |
| 135 |  | Test BDA scripts | 8d | 2009-06-08 A | 2009-06-17 A | 128 | 100% |  |
| 136 |  | Test SDK workbench | 8d | 2009-06-18 A | 2009-06-29 A | 135 | 100% |  |
| 137 |  | Fix defects | 5d | 2009-06-30 A | 2009-07-06 A | 136 | 100% |  |
| 138 |  | QA Testing | 15d | 2009-07-13 A | 2009-07-31 A |  | 100% | start no earlier than 2009-07-13 |
| 139 |  | Fix defects | 15d | 2009-07-13 A | 2009-07-31 A | 138SS | 100% | start no earlier than 2009-07-13 |
| 140 |  | Iteration complete/code freeze | 1d | 2009-08-03 A | 2009-08-03 A | 139 | 100% |  |

| ID | WBS | Task | Duration | Start | Finish | Predecessors | Complete | Total float | Constraint |
| --- | --- | --- | --- | --- | --- | --- | --- | --- | --- |
| 141 | 1.1.1.5 | **Transition** | 190.5d | 2008-12-01 A | 2009-08-24 A |  | 100% |  |  |
| 142 | 1.1.1.5.1 | **Annaul Meeting** | 167.5d | 2008-12-01 A | 2009-07-22 A |  | 100% |  |  |
| 143 |  | Prepare posters, video | 10.5d | 2008-12-01 A | 2008-12-15 A | 37 | 100% |  |  |
| 144 |  | Attend meeting | 3d | 2009-07-20 A | 2009-07-22 A |  | 100% |  | start no earlier than 2009-07-20 |
| 145 | 1.1.1.5.2 | **Deployment** | 28d | 2009-07-15 A | 2009-08-21 A |  | 100% |  |  |
| 146 |  | Review ARC with systems team | 1d | 2009-07-15 A | 2009-07-15 A |  | 100% |  | start no earlier than 2009-07-15 |
| 147 |  | Deploy on DEV | 1d | 2009-08-04 A | 2009-08-04 A | 140, 146 | 100% |  |  |
| 148 |  | Depoy on QA | 1d | 2009-08-07 A | 2009-08-07 A | 147FS+2d | 100% |  |  |
| 149 |  | Deploy on STAGE | 1d | 2009-08-13 A | 2009-08-13 A | 148FS+3d | 100% |  |  |
| 150 |  | App Scan | 1d | 2009-08-17 A | 2009-08-17 A | 149FS+1d | 100% |  |  |
| 151 |  | Deploy on PROD | 1d | 2009-08-21 A | 2009-08-21 A | 150FS+3d | 100% |  |  |
| 152 | 1.1.1.5.3 | **Documentation** | 31d | 2009-07-13 A | 2009-08-24 A |  | 100% |  |  |
| 153 |  | Prepare installation guide for workbench | 1d | 2009-07-13 A | 2009-07-13 A | 138SS | 100% |  |  |
| 154 |  | Develop Users guide for the workbench | 15d | 2009-07-14 A | 2009-08-03 A | 153 | 100% |  |  |
| 155 |  | Update developers guide | 4d | 2009-08-04 A | 2009-08-07 A | 154 | 100% |  |  |
| 156 |  | Prepare release packaging | 1d | 2009-07-14 A | 2009-07-14 A | 153 | 100% |  |  |
| 157 |  | Create workbench wiki site | 3d | 2009-08-04 A | 2009-08-06 A | 154, 143 | 100% |  |  |
| 158 |  | Update wiki | 2d | 2009-08-07 A | 2009-08-10 A | 157 | 100% |  |  |
| 159 |  | Update misc documents | 3d | 2009-08-11 A | 2009-08-13 A | 158, 144 | 100% |  |  |
| 160 |  | Prepare release notes | 2d | 2009-08-14 A | 2009-08-17 A | 144, 159 | 100% |  |  |
| 161 |  | Prepare training videos | 5d | 2009-08-18 A | 2009-08-24 A | 160 | 100% |  |  |
| 162 | 1.1.1.6 | **caGrid Integration Iteration** | 299d | 2008-10-14 A | 2009-12-04 A |  | 100% |  |  |
| 163 |  | Idenify gaps in SDK 4.2 and caGrid 1.3 | 5d | 2009-09-15 A | 2009-09-21 A |  | 100% |  | start no earlier than 2008-09-15 |
| 164 |  | Implement the changes in SDK | 10d | 2009-09-22 A | 2009-10-05 A | 163 | 100% |  |  |
| 165 |  | Provide tag to the cagrid team for testing | 1d | 2009-10-06 A | 2009-10-06 A | 164 | 100% |  |  |
| 166 |  | Acceptance testing | 10d | 2009-10-07 A | 2009-10-20 A | 165 | 100% |  |  |
| 167 |  | Fix defects | 3d | 2009-10-21 A | 2009-10-23 A | 166 | 100% |  |  |
| 168 |  | Acceptance testing | 25d | 2009-10-26 A | 2009-11-27 A | 167 | 100% |  |  |
| 169 | 1.1.1.6.7 | **QA** | 30d | 2009-10-26 A | 2009-12-04 A |  | 100% |  |  |
| 170 |  | Perform testing | 30d | 2009-10-26 A | 2009-12-04 A | 167 | 100% |  |  |
| 171 |  | Provide test support | 30d | 2009-10-26 A | 2009-12-04 A | 167 | 100% |  |  |
| 172 | 1.1.1.6.8 | **Bootcamp Support** | 7d | 2008-10-21 A | 2008-10-29 A |  | 100% |  |  |
| 173 |  | Participate in bootcamp coordination activities | 4d | 2008-10-21 A | 2008-10-24 A | 166 | 100% |  |  |
| 174 |  | Present in the bootcamp | 3d | 2008-10-27 A | 2008-10-29 A | 173 | 100% |  |  |
| 175 |  | Arch FTF Participation | 3d | 2008-10-14 A | 2008-10-16 A |  | 100% |  | start no earlier than 2008-10-14 |
| 176 | 1.1.1.7 | **Transition** | 2d | 2009-12-07 A | 2009-12-08 A |  | 100% |  |  |
| 177 |  | Download center and gforge, release notes update | 1d | 2009-12-07 A | 2009-12-07 A | 162, 170 | 100% |  |  |
| 178 |  | Release SDK 4.2 and caCORE workbench 1.0 | 1d | 2009-12-08 A | 2009-12-08 A | 177 | 100% |  |  |
| 179 | 1.1.2 | **CSM 4.2** | 207d | 2008-11-10 A | 2009-08-25 |  | 99% | 188d |  |
| 180 |  | Production support | 100d | 2008-11-17 A | 2009-04-10 A |  | 100% |  | start no earlier than 2008-11-17 |
| 181 | 1.1.2.2 | **Inception** | 8d | 2008-11-10 A | 2008-11-19 A |  | 100% |  |  |
| 182 | 1.1.2.2.1 | **Requirements** | 8d | 2008-11-10 A | 2008-11-19 A |  | 100% |  |  |
| 183 |  | Create scope candidate spreadsheet for 4.2 | 3d | 2008-11-10 A | 2008-11-12 A |  | 100% |  | start no earlier than 2008-11-10 |
| 184 |  | Submit scope candidate spreadsheet for review | 3d | 2008-11-13 A | 2008-11-17 A | 183 | 100% |  |  |
| 185 |  | Review and provide feedback on candidate spreadsheet | 2d | 2008-11-18 A | 2008-11-19 A | 184 | 100% |  |  |
| 186 | 1.1.2.3 | **Elaboration** | 27d | 2008-11-18 A | 2008-12-24 A |  | 100% |  |  |
| 187 | 1.1.2.3.1 | **Iteration 1** | 27d | 2008-11-18 A | 2008-12-24 A |  | 100% |  |  |
| 188 | 1.1.2.3.1.1 | **Project Management** | 25d | 2008-11-20 A | 2008-12-24 A |  | 100% |  |  |
| 189 |  | Provide LOE on scope candidate list | 2d | 2008-11-20 A | 2008-12-02 A | 185 | 100% |  |  |
| 190 |  | Develop schedule based on LOE | 2d | 2008-12-03 A | 2008-12-04 A | 189 | 100% |  |  |
| 191 |  | Submit schedule for review | 0d | 2008-12-04 A | 2008-12-04 A | 190 | 100% |  |  |
| 192 |  | Revise schedule | 2d | 2008-12-23 A | 2008-12-24 A | 199 | 100% |  |  |
| 193 | 1.1.2.3.1.2 | **Requirements** | 12d | 2008-12-05 A | 2008-12-22 A |  | 100% |  |  |
| 194 | 1.1.2.3.1.2.1 | **Create scope document** | 12d | 2008-12-05 A | 2008-12-22 A |  | 100% |  |  |
| 195 |  | Create draft scope document | 4d | 2008-12-05 A | 2008-12-10 A | 190 | 100% |  |  |
| 196 |  | Prepare risk list | 2d | 2008-12-11 A | 2008-12-12 A | 195 | 100% |  |  |
| 197 |  | Review scope document | 3d | 2008-12-15 A | 2008-12-17 A | 196 | 100% |  |  |
| 198 |  | Revise scope document | 2d | 2008-12-18 A | 2008-12-19 A | 197 | 100% |  |  |
| 199 |  | Sign off scope document | 1d | 2008-12-22 A | 2008-12-22 A | 198 | 100% |  |  |
| 200 | 1.1.2.3.1.3 | **Documentation** | 3d | 2008-11-18 A | 2008-11-20 A |  | 100% |  |  |
| 201 |  | Create wiki FAQ | 2d | 2008-11-18 A | 2008-11-19 A | 184 | 100% |  |  |
| 202 |  | Update Gforge trackers | 1d | 2008-11-20 A | 2008-11-20 A | 201 | 100% |  |  |
| 203 |  | Iteration complete | 0d | 2008-12-24 A | 2008-12-24 A | 188, 193, 200 | 100% |  |  |
| 204 | 1.1.2.4 | **Construction** | 189d | 2008-11-21 A | 2009-08-12 A |  | 100% |  |  |
| 205 | 1.1.2.4.1 | **Iteration 1** | 28d | 2008-11-21 A | 2008-12-30 A |  | 100% |  |  |
| 206 | 1.1.2.4.1.1 | **Implementation** | 23d | 2008-11-21 A | 2008-12-23 A |  | 100% |  |  |
| 207 |  | Validating Username | 3d | 2008-11-21 A | 2008-11-25 A | 202 | 100% |  |  |
| 208 |  | Validate the User details for the User registration | 3d | 2008-11-26 A | 2008-12-02 A | 207 | 100% |  |  |
| 209 |  | Deployment support for CSM UPT 4.1 on DEV, QA, STAGE, PROD | 2d | 2008-12-03 A | 2008-12-04 A | 208 | 100% |  |  |
| 210 |  | The getAccessibleGroups method is giving an session closed error | 2d | 2008-12-05 A | 2008-12-08 A | 209 | 100% |  |  |

| ID | WBS | Task | Duration | Start | Finish | Predecessors | Complete | Constraint |
| --- | --- | --- | --- | --- | --- | --- | --- | --- |
| 211 |  | Source code in JAR file | 1.5d | 2008-12-09 A | 2008-12-10 A | 210 | 100% |  |
| 212 |  | Incomplete list of attributes shown for instance level security when creating filter | 1.5d | 2008-12-10 A | 2008-12-11 A | 211 | 100% |  |
| 213 |  | CGMM + CLM Integration for Audit Logging | 4d | 2008-12-12 A | 2008-12-17 A | 212 | 100% |  |
| 214 |  | Investigate - users created in csmupt application are shown in other applications | 1d | 2008-12-18 A | 2008-12-18 A | 213 | 100% |  |
| 215 |  | Investigate removeGroupRoleFromProtectionGroup() does not remove any records | 2d | 2008-12-19 A | 2008-12-22 A | 214 | 100% |  |
| 216 |  | Investigate assigning a group to a user doesn’t assign the group's associated PG/Role | 1d | 2008-12-23 A | 2008-12-23 A | 215 | 100% |  |
| 217 |  | Implementation complete | 0d | 2008-12-23 A | 2008-12-23 A | 216 | 100% |  |
| 218 | 1.1.2.4.1.2 | **Test** | 8d | 2008-12-19 A | 2008-12-30 A |  | 100% |  |
| 219 |  | Prepare test plan | 3d | 2008-12-19 A | 2008-12-24 A | 220SF | 100% |  |
| 220 |  | Execute test plan | 4d | 2008-12-24 A | 2008-12-30 A | 217 | 100% |  |
| 221 |  | Provide test support | 4d | 2008-12-24 A | 2008-12-30 A | 217 | 100% |  |
| 222 |  | Iteration complete | 0d | 2008-12-30 A | 2008-12-30 A | 218, 206 | 100% |  |
| 223 | 1.1.2.4.2 | **Iteration 2** | 21d | 2009-01-02 A | 2009-01-30 A |  | 100% |  |
| 224 | 1.1.2.4.2.1 | **Implementation** | 16d | 2009-01-02 A | 2009-01-23 A |  | 100% |  |
| 225 | 1.1.2.4.2.1.1 | **Backwards compatibility of UPT** | 16d | 2009-01-02 A | 2009-01-23 A |  | 100% |  |
| 226 |  | Analyze backwards compatibility changes | 6d | 2009-01-02 A | 2009-01-09 A | 222 | 100% |  |
| 227 |  | Implement CSM schema version detection module | 4d | 2009-01-12 A | 2009-01-15 A | 226 | 100% |  |
| 228 |  | Implement version forwarding changes | 4d | 2009-01-16 A | 2009-01-21 A | 227 | 100% |  |
| 229 |  | Prepare build script for EAR file | 2d | 2009-01-22 A | 2009-01-23 A | 228 | 100% |  |
| 230 | 1.1.2.4.2.2 | **Test** | 12d | 2009-01-15 A | 2009-01-30 A |  | 100% |  |
| 231 |  | Prepare test plan | 5d | 2009-01-15 A | 2009-01-26 A | 232SF | 100% |  |
| 232 |  | Execute test plan | 5d | 2009-01-26 A | 2009-01-30 A | 224 | 100% |  |
| 233 |  | Provide test support | 5d | 2009-01-26 A | 2009-01-30 A | 224 | 100% |  |
| 234 |  | Iteration complete | 0d | 2009-01-30 A | 2009-01-30 A | 230 | 100% |  |
| 235 | 1.1.2.4.3 | **Iteration 3** | 23d | 2009-02-02 A | 2009-03-04 A |  | 100% |  |
| 236 | 1.1.2.4.3.1 | **Implementation** | 19d | 2009-02-02 A | 2009-02-26 A |  | 100% |  |
| 237 | 1.1.2.4.3.1.1 | **Defect Fix** | 1d | 2009-02-04 A | 2009-02-04 A |  | 100% |  |
| 238 |  | Last iteration defect fixes | 1d | 2009-02-04 A | 2009-02-04 A | 242 | 100% |  |
| 239 | 1.1.2.4.3.1.2 | **PHI Security Research** | 2d | 2009-02-05 A | 2009-02-06 A |  | 100% |  |
| 240 |  | Investigate PHI based security requirements | 2d | 2009-02-05 A | 2009-02-06 A | 238 | 100% |  |
| 241 | 1.1.2.4.3.1.3 | **caArray Container Managed security** | 19d | 2009-02-02 A | 2009-02-26 A |  | 100% |  |
| 242 |  | Research caArray change request | 2d | 2009-02-02 A | 2009-02-03 A | 234 | 100% |  |
| 243 |  | Implement custom JAAS login module | 5d | 2009-02-09 A | 2009-02-13 A | 240 | 100% |  |
| 244 |  | Implement custom authenticator with CGMM | 5d | 2009-02-16 A | 2009-02-20 A | 243 | 100% |  |
| 245 |  | Modify CGMM UI | 4d | 2009-02-23 A | 2009-02-26 A | 244 | 100% |  |
| 246 |  | Implementation complete | 0d | 2009-02-26 A | 2009-02-26 A | 239, 241, 237 | 100% |  |
| 247 | 1.1.2.4.3.2 | **Test** | 7d | 2009-02-24 A | 2009-03-04 A |  | 100% |  |
| 248 |  | Prepare test plan | 3d | 2009-02-24 A | 2009-02-27 A | 249SF | 100% |  |
| 249 |  | Execute test plan | 4d | 2009-02-27 A | 2009-03-04 A | 241 | 100% |  |
| 250 |  | Provide test support | 4d | 2009-02-27 A | 2009-03-04 A | 241 | 100% |  |
| 251 |  | Iteration complete | 0d | 2009-03-04 A | 2009-03-04 A | 236, 247 | 100% |  |
| 252 | 1.1.2.4.4 | **Iteration 4** | 22d | 2009-03-02 A | 2009-03-31 A |  | 100% |  |
| 253 | 1.1.2.4.4.1 | **Implementation** | 22d | 2009-03-02 A | 2009-03-31 A |  | 100% |  |
| 254 |  | App Scan hosting/request for CGMM | 1d | 2009-03-02 A | 2009-03-02 A |  | 100% | start no earlier than 2009-03-02 |
| 255 |  | PHI Security research | 10d | 2009-03-03 A | 2009-03-16 A | 254 | 100% |  |
| 256 | 1.1.2.4.4.1.3 | **caArray support** | 8d | 2009-03-20 A | 2009-03-31 A |  | 100% |  |
| 257 |  | Fix issues reported by caArray team | 8d | 2009-03-20 A | 2009-03-31 A | 259 | 100% |  |
| 258 | 1.1.2.4.4.2 | **Documentation** | 3d | 2009-03-17 A | 2009-03-19 A |  | 100% |  |
| 259 |  | CGMM Documentation | 3d | 2009-03-17 A | 2009-03-19 A | 255 | 100% |  |
| 260 |  | Iteration complete | 0d | 2009-03-31 A | 2009-03-31 A | 253, 258 | 100% |  |
| 261 | 1.1.2.4.5 | **Iteration 5** | 31d | 2009-03-23 A | 2009-05-04 A |  | 100% |  |
| 262 | 1.1.2.4.5.1 | **CGMM fix** | 7d | 2009-04-02 A | 2009-04-10 A |  | 100% |  |
| 263 |  | Workflow redirection instead of forwarding | 1d | 2009-04-02 A | 2009-04-02 A | 98 | 100% |  |
| 264 |  | Configurable home page | 1d | 2009-04-03 A | 2009-04-03 A | 263 | 100% |  |
| 265 |  | Email notification for new account | 2d | 2009-04-06 A | 2009-04-07 A | 264 | 100% |  |
| 266 |  | Text instruction changes | 1d | 2009-04-08 A | 2009-04-08 A | 265 | 100% |  |
| 267 |  | CGMM standalone mode changes | 1d | 2009-04-09 A | 2009-04-09 A | 266 | 100% |  |
| 268 |  | Configurable graphics files | 1d | 2009-04-10 A | 2009-04-10 A | 267 | 100% |  |
| 269 | 1.1.2.4.5.2 | **caArray Instance level security research** | 7d | 2009-04-13 A | 2009-04-21 A |  | 100% |  |
| 270 |  | Document existing issues and solution | 5d | 2009-04-13 A | 2009-04-17 A | 262 | 100% |  |
| 271 |  | Review document and solution | 2d | 2009-04-20 A | 2009-04-21 A | 270 | 100% |  |
| 272 | 1.1.2.4.5.3 | **Test** | 20d | 2009-03-23 A | 2009-04-17 A |  | 100% |  |
| 273 |  | Prepare test plan | 3d | 2009-03-23 A | 2009-04-13 A | 274SF | 100% |  |
| 274 |  | Execute test plan | 5d | 2009-04-13 A | 2009-04-17 A | 262 | 100% |  |
| 275 |  | Provide test support | 5d | 2009-04-13 A | 2009-04-17 A | 262 | 100% |  |
| 276 | 1.1.2.4.5.4 | **Documentation** | 8d | 2009-04-22 A | 2009-05-01 A |  | 100% |  |
| 277 |  | Update CGMM user guide | 5d | 2009-04-22 A | 2009-04-28 A | 269 | 100% |  |
| 278 |  | Complete documentation | 3d | 2009-04-29 A | 2009-05-01 A | 277 | 100% |  |
| 279 | 1.1.2.4.5.5 | **Release Planning** | 4d | 2009-04-29 A | 2009-05-04 A |  | 100% |  |
| 280 |  | Prepare release notes | 1d | 2009-04-29 A | 2009-04-29 A | 277, 269 | 100% |  |

| ID | WBS | Task | Duration | Start | Finish | Predecessors | Complete | Total float | Constraint |
| --- | --- | --- | --- | --- | --- | --- | --- | --- | --- |
| 281 |  | Prepare release bundles | 1d | 2009-04-30 A | 2009-04-30 A | 280 | 100% |  |  |
| 282 |  | Update Gforge site | 1d | 2009-05-04 A | 2009-05-04 A | 281, 278 | 100% |  |  |
| 283 |  | Iteration complete | 0d | 2009-05-04 A | 2009-05-04 A | 279 | 100% |  |  |
| 284 | 1.1.2.4.6 | **Iteration 6** | 20d | 2009-05-05 A | 2009-06-01 A |  | 100% |  |  |
| 285 |  | Release CGMM | 1d | 2009-05-05 A | 2009-05-05 A | 283 | 100% |  |  |
| 286 |  | User support | 2d | 2009-05-06 A | 2009-05-07 A | 285 | 100% |  |  |
| 287 |  | Arch FTF preperation and presentation | 4d | 2009-05-08 A | 2009-05-13 A | 286 | 100% |  |  |
| 288 |  | caArray Instance level security research & discussion | 5d | 2009-05-14 A | 2009-05-20 A | 287 | 100% |  |  |
| 289 | 1.1.2.4.6.5 | **Scope preperation** | 13d | 2009-05-14 A | 2009-06-01 A |  | 100% |  |  |
| 290 |  | Discuss scope items | 3d | 2009-05-14 A | 2009-05-18 A | 287 | 100% |  |  |
| 291 |  | Prepare scope documents | 4d | 2009-05-19 A | 2009-05-22 A | 290 | 100% |  |  |
| 292 |  | Review document internally | 2d | 2009-05-25 A | 2009-05-26 A | 291 | 100% |  |  |
| 293 |  | Submit for NCICB review | 4d | 2009-05-27 A | 2009-06-01 A | 292 | 100% |  |  |
| 294 |  | Iteration complete | 0d | 2009-06-01 A | 2009-06-01 A | 288, 289 | 100% |  |  |
| 295 | 1.1.2.4.7 | **Iteration 7** | 52d | 2009-06-02 A | 2009-08-12 A |  | 100% |  |  |
| 296 | 1.1.2.4.7.1 | **BDA Effort** | 27d | 2009-06-08 A | 2009-07-14 A |  | 100% |  |  |
| 297 |  | Upgrade BDA Utilities to version 1.0 | 3d | 2009-06-08 A | 2009-06-10 A | 128 | 100% |  |  |
| 298 |  | BDAfication of UPT backwards compatibility version | 8d | 2009-06-11 A | 2009-06-22 A | 303, 297 | 100% |  |  |
| 299 |  | BDAfication of CGMM | 8d | 2009-06-25 A | 2009-07-14 A | 129 | 100% |  |  |
| 300 |  | CSM Presentation | 3d | 2009-06-19 A | 2009-06-23 A | 298 | 100% |  |  |
| 301 | 1.1.2.4.7.3 | **Instance level security enhancements research** | 21d | 2009-06-02 A | 2009-06-30 A |  | 100% |  |  |
| 302 |  | Install caArray in local environment | 3d | 2009-06-02 A | 2009-06-04 A | 294 | 100% |  |  |
| 303 |  | Tune and execute queries | 3d | 2009-06-05 A | 2009-06-09 A | 302 | 100% |  |  |
| 304 |  | Document benchmark results of the queries | 6d | 2009-06-10 A | 2009-06-17 A | 303 | 100% |  |  |
| 305 |  | Prepare implementation plan | 2d | 2009-06-29 A | 2009-06-30 A | 304 | 100% |  |  |
| 306 | 1.1.2.4.7.4 | **Documentation** | 4d | 2009-06-24 A | 2009-06-29 A |  | 100% |  |  |
| 307 |  | Recommendation for UPT version | 4d | 2009-06-24 A | 2009-06-29 A | 300 | 100% |  |  |
| 308 |  | Document CSM maintanance plan | 4d | 2009-06-24 A | 2009-06-29 A | 300 | 100% |  |  |
| 309 | 1.1.2.4.7.5 | **Instance level security implementation** | 24d | 2009-06-30 A | 2009-07-31 A |  | 100% |  |  |
| 310 |  | Create refresh logic | 2d | 2009-06-30 A | 2009-07-07 A | 308, 321 | 100% |  |  |
| 311 |  | Create test data generation program | 2d | 2009-07-07 A | 2009-07-09 A | 310 | 100% |  |  |
| 312 |  | Enhance CSM API (Table and View management with filter create, delete, update actions) | 4d | 2009-07-09 A | 2009-07-15 A | 311 | 100% |  |  |
| 313 |  | Enhance UPT (incorporate table/view management) | 4d | 2009-07-23 A | 2009-07-28 A | 312, 322 | 100% |  |  |
| 314 |  | Fix defects | 3d | 2009-07-29 A | 2009-07-31 A | 313 | 100% |  |  |
| 315 | 1.1.2.4.7.6 | **Testing** | 15d | 2009-07-23 A | 2009-08-12 A |  | 100% |  |  |
| 316 |  | QA Testing | 15d | 2009-07-23 A | 2009-08-12 A |  | 100% |  | start no earlier than 2009-07-23 |
| 317 |  | Fix Defects | 15d | 2009-07-23 A | 2009-08-12 A | 316SS | 100% |  |  |
| 318 |  | Iteration complete/code freeze | 0d | 2009-08-12 A | 2009-08-12 A | 315 | 100% |  |  |
| 319 | 1.1.2.5 | **Transition** | 41d | 2009-06-30 A | 2009-08-25 |  | 90% | 188d |  |
| 320 | 1.1.2.5.1 | **Annual Meeting** | 17d | 2009-06-30 A | 2009-07-22 A |  | 100% |  |  |
| 321 |  | Prepare posters | 5d | 2009-06-30 A | 2009-07-06 A | 308 | 100% |  |  |
| 322 |  | Attend annual meeting | 3d | 2009-07-20 A | 2009-07-22 A |  | 100% |  | finish no earlier than 2009-07-22 |
| 323 | 1.1.2.5.2 | **Deployment** | 20d | 2009-07-29 A | 2009-08-25 |  | 50% | 188d |  |
| 324 |  | Review ARC and rollout plan | 1d | 2009-07-29 A | 2009-07-29 A |  | 100% |  | start no earlier than 2009-07-29 |
| 325 |  | Deploy on DEV | 1d | 2009-08-03 A | 2009-08-03 A | 309 | 100% |  |  |
| 326 |  | Deploy on QA | 1d | 2009-08-13 A | 2009-08-13 A | 318 | 100% |  |  |
| 327 |  | Deploy on STAGE | 1d | 2009-08-18 | 2009-08-18 | 326FS+2d, 318 |  | 68d |  |
| 328 |  | App Scan | 1d | 2009-08-20 | 2009-08-20 | 327FS+1d |  | 68d |  |
| 329 |  | Deploy on PROD | 1d | 2009-08-25 | 2009-08-25 | 328FS+2d |  | 68d |  |
| 330 | 1.1.2.5.3 | **Documentation** | 14d | 2009-08-03 A | 2009-08-20 A |  | 100% |  |  |
| 331 |  | Develop UPT installation & user guide for backwards compatible version | 5d | 2009-08-03 A | 2009-08-07 A | 309 | 100% |  | start no earlier than 2009-08-03 |
| 332 |  | Update UPT users guide | 1d | 2009-08-10 A | 2009-08-10 A | 331 | 100% |  |  |
| 333 |  | FAQ update on wiki | 2d | 2009-08-11 A | 2009-08-12 A | 332 | 100% |  |  |
| 334 |  | Update CSM developers guide | 3d | 2009-08-13 A | 2009-08-17 A | 333 | 100% |  |  |
| 335 |  | Wiki update | 2d | 2009-08-18 A | 2009-08-19 A | 334 | 100% |  |  |
| 336 |  | Prepare release notes | 1d | 2009-08-20 A | 2009-08-20 A | 335 | 100% |  |  |
| 337 |  | Download center & gforge update | 1d | 2009-08-21 A | 2009-08-21 A | 330 | 100% |  |  |
| 338 |  | Release CSM 4.2 | 0d | 2009-08-25 A | 2009-08-25 A | 337 | 100% |  |  |
| 339 | 1.2 | **CSM 4.2.1** | 23.5d | 2008-10-06 A | 2008-11-06 A |  | 100% |  |  |
| 340 | 1.2.1 | **Production support** | 20d | 2008-10-06 A | 2008-10-31 A |  | 100% |  |  |
| 341 |  | EVS support | 2d | 2008-10-06 A | 2008-10-07 A |  | 100% |  | start no earlier than 2008-10-06 |
| 342 |  | LSD support | 4d | 2008-10-08 A | 2008-10-13 A | 341 | 100% |  |  |
| 343 |  | Arch FTF participation | 3d | 2008-10-14 A | 2008-10-16 A | 342 | 100% |  |  |
| 344 |  | General support | 5d | 2008-10-17 A | 2008-10-23 A | 343 | 100% |  |  |
| 345 |  | Emory support | 6d | 2008-10-24 A | 2008-10-31 A | 344 | 100% |  |  |
| 346 | 1.2.2 | **4.2.1 Release** | 7.5d | 2008-10-28 A | 2008-11-06 A |  | 100% |  |  |
| 347 |  | Implement fix | 1d | 2008-10-28 A | 2008-10-28 A |  | 100% |  | start no earlier than 2008-10-28 |
| 348 |  | Documentation update | 1d | 2008-10-29 A | 2008-10-29 A | 347 | 100% |  |  |
| 349 |  | Release 4.2.1 to the LSD team | 0d | 2008-10-29 A | 2008-10-29 A | 348 | 100% |  |  |
| 350 |  | Acceptance testing | 5d | 2008-10-30 A | 2008-11-05 A | 349 | 100% |  |  |

| ID | WBS | Task | Duration | Start | Finish | Predecessors | Complete | Total float | Constraint |
| --- | --- | --- | --- | --- | --- | --- | --- | --- | --- |
| 351 |  | Release 4.2.1 to the gforge | 0.5d | 2008-11-06 A | 2008-11-06 A | 350 | 100% |  |  |
| 352 | 1.3 | **Workbench 0.1.1/SDK 4.2.1** | 47d | 2009-11-30 A | 2010-02-02 A |  | 100% |  |  |
| 353 | 1.3.1 | **Construction** | 45d | 2009-11-30 A | 2010-01-29 A |  | 100% |  |  |
| 354 | 1.3.1.1 | **Development** | 35d | 2009-11-30 A | 2010-01-15 A |  | 100% |  |  |
| 355 |  | Postgres support | 15d | 2009-11-30 A | 2009-12-18 A | 168 | 100% |  |  |
| 356 |  | Defect fixes | 10d | 2009-12-21 A | 2010-01-01 A | 355 | 100% |  |  |
| 357 |  | BDA Utils restructuring | 10d | 2010-01-04 A | 2010-01-15 A | 356 | 100% |  |  |
| 358 | 1.3.1.2 | **Testing** | 20d | 2010-01-04 A | 2010-01-29 A |  | 100% |  |  |
| 359 |  | Prepare test plan | 5d | 2010-01-04 A | 2010-01-08 A | 357 | 100% |  |  |
| 360 |  | Perform functional test | 15d | 2010-01-11 A | 2010-01-29 A | 359 | 100% |  |  |
| 361 |  | Provide test support | 15d | 2010-01-11 A | 2010-01-29 A | 360SS | 100% |  |  |
| 362 |  | Testing framework and code quality framework | 20d | 2010-01-04 A | 2010-01-29 A | 356 | 100% |  |  |
| 363 |  | Iteration complete | 0d | 2010-01-29 A | 2010-01-29 A | 354, 358 | 100% |  |  |
| 364 | 1.3.2 | **Transition** | 4d | 2010-01-28 A | 2010-02-02 A |  | 100% |  |  |
| 365 |  | Update documentation | 2d | 2010-01-28 A | 2010-01-29 A | 363FF | 100% |  |  |
| 366 |  | Prepare release notes | 1d | 2010-02-01 A | 2010-02-01 A | 365 | 100% |  |  |
| 367 |  | Update gforge site | 1d | 2010-02-02 A | 2010-02-02 A | 366 | 100% |  |  |
| 368 | 1.4 | **CLM 4.2.1** | 32d | 2010-01-25 A | 2010-03-09 |  | 48% | 48d |  |
| 369 | 1.4.1 | **Construction** | 30d | 2010-01-25 A | 2010-03-05 |  | 52% | 48d |  |
| 370 |  | Implement script changes for Oracle and Postgres support | 5d | 2010-01-25 A | 2010-01-29 A |  | 100% |  | start no earlier than 2010-01-25 |
| 371 |  | Implement defect fix in CLM API | 3d | 2010-02-01 A | 2010-02-03 A | 370 | 100% |  |  |
| 372 |  | Upgrade LLT to use new CLM API | 3d | 2010-02-04 A | 2010-02-08 A | 371 | 100% |  |  |
| 373 | 1.4.1.4 | **Testing** | 5d | 2010-03-01 | 2010-03-05 |  |  | 48d |  |
| 374 |  | Execute test cases | 5d | 2010-03-01 | 2010-03-05 |  |  | 48d | start no earlier than 2010-03-01 |
| 375 |  | Provide test support | 5d | 2010-03-01 | 2010-03-05 | 374SS |  | 33d |  |
| 376 | 1.4.2 | **Transition** | 2d | 2010-03-08 | 2010-03-09 |  |  | 48d |  |
| 377 |  | Release CLM and LLT | 2d | 2010-03-08 | 2010-03-09 | 375 |  | 33d |  |
| 378 | 1.5 | **Workbench 0.1.2/SDK 4.2.2** | 44d | 2010-02-01 A | 2010-04-01 |  | 14% | 31d |  |
| 379 | 1.5.1 | **Construction** | 35d | 2010-02-01 A | 2010-03-19 |  | 17% | 40d |  |
| 380 | 1.5.1.1 | **Development** | 35d | 2010-02-01 A | 2010-03-19 |  | 29% | 40d |  |
| 381 |  | Defect fixes | 10d | 2010-02-01 A | 2010-02-12 A | 363 | 100% |  |  |
| 382 |  | Implement changes needed for caGrid 1.4 integration | 10d | 2010-02-15 | 2010-02-26 | 381 |  | 2d |  |
| 383 |  | Code freeze/UAT | 10d | 2010-03-01 | 2010-03-12 | 382 |  | 25d |  |
| 384 |  | Fix issues | 5d | 2010-03-15 | 2010-03-19 | 383 |  | 25d |  |
| 385 | 1.5.1.2 | **Testing** | 15d | 2010-03-01 | 2010-03-19 |  |  | 31d |  |
| 386 |  | Prepare test plan | 5d | 2010-03-01 | 2010-03-05 | 382 |  | 16d |  |
| 387 |  | Perform functional test | 10d | 2010-03-08 | 2010-03-19 | 386 |  | 25d |  |
| 388 |  | Provide test support | 10d | 2010-03-08 | 2010-03-19 | 386 |  | 16d |  |
| 389 | 1.5.2 | **Transition** | 9d | 2010-03-22 | 2010-04-01 |  |  | 31d |  |
| 390 |  | Update documentation | 3d | 2010-03-22 | 2010-03-24 | 388 |  | 16d |  |
| 391 |  | Prepare release notes | 1d | 2010-03-25 | 2010-03-25 | 390 |  | 16d |  |
| 392 |  | Perform release activities | 5d | 2010-03-26 | 2010-04-01 | 391 |  | 16d |  |
| 393 | 1.6 | **SDK/Workbench - ISO Datatype** | 52d | 2010-02-18 A | 2010-04-30 |  | 6% | 0d |  |
| 394 | 1.6.1 | **Inception/Elaboration** | 8d | 2010-02-18 A | 2010-03-01 |  | 88% | 0d |  |
| 395 |  | Prepare short term scope document | 3d | 2010-02-18 A | 2010-02-22 A |  | 100% |  | start no earlier than 2010-02-18 |
| 396 |  | Prepare task plan | 1d | 2010-02-23 A | 2010-02-23 A | 395 | 100% |  |  |
| 397 |  | Planning the release activities | 2d | 2010-02-24 A | 2010-02-25 A | 396 | 100% |  |  |
| 398 |  | Prepare long term scope | 2d | 2010-02-26 A | 2010-03-01 | 397 | 50% | 0d |  |
| 399 | 1.6.2 | **Construction** | 34d | 2010-03-02 | 2010-04-16 |  |  | 0d |  |
| 400 |  | Hibernate Usertype Framework | 4d | 2010-03-02 | 2010-03-05 | 398 |  | 0d |  |
| 401 |  | JAXB serialization framework | 4d | 2010-03-02 | 2010-03-05 | 398 |  | 35d |  |
| 402 |  | SDK ISO datatype support enhancements | 4d | 2010-03-02 | 2010-03-05 | 398 |  | 0d |  |
| 403 |  | Hibernate Usertype implementation | 10d | 2010-03-08 | 2010-03-19 | 400, 402 |  | 0d |  |
| 404 |  | JAXB XML serialization implementation | 10d | 2010-03-08 | 2010-03-19 | 401 |  | 25d |  |
| 405 |  | QBE Implementation | 10d | 2010-03-22 | 2010-04-02 | 403 |  | 15d |  |
| 406 |  | Build script enhancement | 3d | 2010-04-05 | 2010-04-07 | 405 |  | 12d |  |
| 407 |  | Code generator enhancement | 10d | 2010-03-22 | 2010-04-02 | 403 |  | 20d |  |
| 408 |  | Generated system enhancement | 10d | 2010-03-22 | 2010-04-02 | 403 |  | 0d |  |
| 409 |  | Reference service project | 10d | 2010-04-05 | 2010-04-16 | 408 |  | 0d |  |
| 410 |  | Code baselined | 0d | 2010-04-16 | 2010-04-16 | 409 |  | 0d |  |
| 411 | 1.6.3 | **Testing** | 7d | 2010-04-19 | 2010-04-27 |  |  | 0d |  |
| 412 |  | QA Testing | 7d | 2010-04-19 | 2010-04-27 | 410 |  | 0d |  |
| 413 |  | Test support | 7d | 2010-04-19 | 2010-04-27 | 412SS |  | 0d |  |
| 414 | 1.6.4 | **Transition** | 10d | 2010-04-19 | 2010-04-30 |  |  | 0d |  |
| 415 |  | Prepare user documentation | 10d | 2010-04-19 | 2010-04-30 | 410 |  | 0d |  |
| 416 |  | Release product | 3d | 2010-04-28 | 2010-04-30 | 413 |  | 0d |  |
| 417 | 1.7 | **5.0 Release** | 415d? | 2008-09-22 A | 2010-04-23 |  | 63% | 5d |  |
| 418 | 1.7.1 | **Support** | 104d | 2009-10-06 A | 2010-02-26 A |  | 100% |  |  |
| 419 | 1.7.1.1 | **Management support** | 104d | 2009-10-06 A | 2010-02-26 A |  | 100% |  |  |
| 420 |  | Usability enhancement document | 2d | 2009-10-06 A | 2009-10-07 A |  | 100% |  | start no earlier than 2009-10-06 |

| ID | WBS | Task | Duration | Start | Finish | Predecessors | Complete | Total float | Constraint |
| --- | --- | --- | --- | --- | --- | --- | --- | --- | --- |
| 421 |  | SOA based workbench presentation | 3d | 2009-10-29 A | 2009-11-02 A |  | 100% |  |  |
| 422 |  | CGMM Support for CTRP | 10d | 2010-02-15 A | 2010-02-26 A |  | 100% |  | start no earlier than 2010-02-15 |
| 423 | 1.7.2 | **caCORE SDK 5.0** | 385d? | 2008-11-03 A | 2010-04-23 |  | 22% | 5d |  |
| 424 | 1.7.2.1 | **Inception** | 14d | 2009-10-08 A | 2009-10-27 A |  | 100% |  |  |
| 425 | 1.7.2.1.1 | **Scope document preperation** | 14d | 2009-10-08 A | 2009-10-27 A |  | 100% |  |  |
| 426 |  | Prepare initial draft | 4d | 2009-10-08 A | 2009-10-13 A |  | 100% |  | start no earlier than 2009-10-08 |
| 427 |  | Internal review | 1d | 2009-10-14 A | 2009-10-14 A | 426 | 100% |  |  |
| 428 |  | Incorporate comments | 1d | 2009-10-15 A | 2009-10-15 A | 427 | 100% |  |  |
| 429 |  | Submit draft for NCICB review | 5d | 2009-10-16 A | 2009-10-22 A | 428 | 100% |  |  |
| 430 |  | Update draft | 2d | 2009-10-23 A | 2009-10-26 A | 429 | 100% |  |  |
| 431 |  | Submit final version | 1d | 2009-10-27 A | 2009-10-27 A | 430 | 100% |  |  |
| 432 | 1.7.2.2 | **Elaboration** | 130d | 2009-10-26 A | 2010-04-23 |  | 11% | 15d |  |
| 433 | 1.7.2.2.1 | **Prototype** | 10d | 2009-10-26 A | 2009-11-06 A |  | 100% |  |  |
| 434 |  | Research Apache CXF | 10d | 2009-10-26 A | 2009-11-06 A |  | 100% |  | start no earlier than 2009-10-26 |
| 435 | 1.7.2.2.2 | **Research** | 40d | 2010-03-01 | 2010-04-23 |  |  | 15d |  |
| 436 |  | Research ISO 21079 Specification | 40d | 2010-03-01 | 2010-04-23 | 382 |  | 5d | start no earlier than 2008-11-17 |
| 437 |  | Prototype basic data types | 40d | 2010-03-01 | 2010-04-23 | 507, 436SS |  | 15d |  |
| 438 | 1.7.2.3 | **Construction** | 1d? | 2008-11-03 | 2008-11-03 |  |  | 399d |  |
| 439 |  | Iteration 1 | 1d? | 2008-11-03 | 2008-11-03 |  |  | 389d |  |
| 440 |  | Iteration 2 | 1d? | 2008-11-03 | 2008-11-03 |  |  | 389d |  |
| 441 |  | Iteration 3 | 1d? | 2008-11-03 | 2008-11-03 |  |  | 389d |  |
| 442 | 1.7.3 | **caCORE Workbench 0.2** | 271d? | 2008-11-03 A | 2009-11-16 |  | 80% | 119d |  |
| 443 | 1.7.3.1 | **Inception** | 14d | 2009-10-28 A | 2009-11-16 A |  | 100% |  |  |
| 444 | 1.7.3.1.1 | **Scope document preperation** | 14d | 2009-10-28 A | 2009-11-16 A |  | 100% |  |  |
| 445 |  | Prepare initial draft | 4d | 2009-10-28 A | 2009-11-02 A | 429 | 100% |  |  |
| 446 |  | Internal review | 1d | 2009-11-03 A | 2009-11-03 A | 445 | 100% |  |  |
| 447 |  | Incorporate comments | 1d | 2009-11-04 A | 2009-11-04 A | 446 | 100% |  |  |
| 448 |  | Submit draft for NCICB review | 5d | 2009-11-05 A | 2009-11-11 A | 447 | 100% |  |  |
| 449 |  | Update draft | 2d | 2009-11-12 A | 2009-11-13 A | 448 | 100% |  |  |
| 450 |  | Submit final version | 1d | 2009-11-16 A | 2009-11-16 A | 449 | 100% |  |  |
| 451 | 1.7.3.2 | **Elaboration** | 10d | 2009-10-29 A | 2009-11-11 |  | 75% | 132d |  |
| 452 | 1.7.3.2.1 | **Prototype** | 10d | 2009-10-29 A | 2009-11-11 |  | 75% | 132d |  |
| 453 |  | Research Eclipse plugin | 10d | 2009-10-29 A | 2009-11-11 |  | 75% | 122d |  |
| 454 | 1.7.3.3 | **Construction** | 1d? | 2008-11-03 | 2008-11-03 |  |  | 399d |  |
| 455 |  | Iteration 1 | 1d? | 2008-11-03 | 2008-11-03 |  |  | 389d |  |
| 456 |  | Iteration 2 | 1d? | 2008-11-03 | 2008-11-03 |  |  | 389d |  |
| 457 |  | Iteration 3 | 1d? | 2008-11-03 | 2008-11-03 |  |  | 389d |  |
| 458 | 1.7.4 | **XMI Handler 2.0** | 9d | 2009-11-12 | 2009-11-24 |  |  | 123d |  |
| 459 | 1.7.4.1 | **Inception** | 9d | 2009-11-12 | 2009-11-24 |  |  | 123d |  |
| 460 | 1.7.4.1.1 | **Scope document preperation** | 9d | 2009-11-12 | 2009-11-24 |  |  | 123d |  |
| 461 |  | Prepare initial draft | 2d | 2009-11-12 | 2009-11-13 | 448 |  | 113d |  |
| 462 |  | Internal review | 1d | 2009-11-16 | 2009-11-16 | 461 |  | 113d |  |
| 463 |  | Incorporate comments | 1d | 2009-11-17 | 2009-11-17 | 462 |  | 113d |  |
| 464 |  | Submit draft for NCICB review | 5d | 2009-11-18 | 2009-11-24 | 463 |  | 113d |  |
| 465 | 1.7.5 | **CSM 5.0** | 67d | 2009-10-05 A | 2010-01-05 A |  | 100% |  |  |
| 466 | 1.7.5.1 | **Inception** | 54d | 2009-10-05 A | 2009-12-17 A |  | 100% |  |  |
| 467 | 1.7.5.1.1 | **Scope document preperation** | 54d | 2009-10-05 A | 2009-12-17 A |  | 100% |  |  |
| 468 |  | Prepare initial draft | 5d | 2009-10-05 A | 2009-10-09 A |  | 100% |  | start no earlier than 2009-10-05 |
| 469 |  | Internal review | 1d | 2009-10-12 A | 2009-10-12 A | 468 | 100% |  |  |
| 470 |  | Incorporate comments | 1d | 2009-10-13 A | 2009-10-13 A | 469 | 100% |  |  |
| 471 |  | Submit draft for NCICB review | 10d | 2009-10-14 A | 2009-10-27 A | 470 | 100% |  |  |
| 472 |  | Update draft | 2d | 2009-12-15 A | 2009-12-16 A |  | 100% |  | start no earlier than 2009-12-15 |
| 473 |  | Submit final version | 1d | 2009-12-17 A | 2009-12-17 A | 472 | 100% |  |  |
| 474 | 1.7.5.2 | **Elaboration** | 47d | 2009-11-02 A | 2010-01-05 A |  | 100% |  |  |
| 475 | 1.7.5.2.1 | **Technology Research** | 30d | 2009-11-02 A | 2009-12-11 A |  | 100% |  |  |
| 476 |  | Research candidate technologies | 10d | 2009-11-02 A | 2009-11-13 A | 473 | 100% |  |  |
| 477 |  | Prepare presentation | 2d | 2009-11-16 A | 2009-11-17 A | 476 | 100% |  |  |
| 478 |  | Internal review | 1d | 2009-11-18 A | 2009-11-18 A | 477 | 100% |  |  |
| 479 |  | Prototype candidate security framework | 15d | 2009-11-19 A | 2009-12-09 A | 478 | 100% |  |  |
| 480 |  | Update presentation | 2d | 2009-12-10 A | 2009-12-11 A | 479 | 100% |  |  |
| 481 | 1.7.5.2.2 | **Usability Enhancements** | 17d | 2009-12-14 A | 2010-01-05 A |  | 100% |  |  |
| 482 |  | Research improvement areas | 15d | 2009-12-14 A | 2010-01-01 A | 480 | 100% |  |  |
| 483 |  | Prepare presentation | 2d | 2010-01-04 A | 2010-01-05 A | 482 | 100% |  |  |
| 484 | 1.7.6 | **CLM 5.0** | 108d | 2009-10-28 A | 2010-03-26 |  | 71% | 35d |  |
| 485 | 1.7.6.1 | **Inception** | 15d | 2009-10-28 A | 2009-11-17 A |  | 100% |  |  |
| 486 | 1.7.6.1.1 | **Scope document preperation** | 15d | 2009-10-28 A | 2009-11-17 A |  | 100% |  |  |
| 487 |  | Prepare initial draft | 5d | 2009-10-28 A | 2009-11-03 A | 471 | 100% |  | start no earlier than 2009-10-05 |
| 488 |  | Internal review | 1d | 2009-11-04 A | 2009-11-04 A | 487 | 100% |  |  |
| 489 |  | Incorporate comments | 1d | 2009-11-05 A | 2009-11-05 A | 488 | 100% |  |  |
| 490 |  | Submit draft for NCICB review | 5d | 2009-11-06 A | 2009-11-12 A | 489 | 100% |  |  |

| ID | WBS | Task | Duration | Start | Finish | Predecessors | Complete | Total float | Constraint |
| --- | --- | --- | --- | --- | --- | --- | --- | --- | --- |
| 491 |  | Update draft | 2d | 2009-11-13 A | 2009-11-16 A | 490 | 100% |  |  |
| 492 |  | Submit final version | 1d | 2009-11-17 A | 2009-11-17 A | 491 | 100% |  |  |
| 493 | 1.7.6.2 | **Elaboration** | 58d | 2010-01-06 A | 2010-03-26 |  | 64% | 35d |  |
| 494 | 1.7.6.2.1 | **Requirements analysis/Design** | 58d | 2010-01-06 A | 2010-03-26 |  | 64% | 35d |  |
| 495 |  | Prepare list of initial requirements | 4d | 2010-01-06 A | 2010-01-11 A |  | 100% |  | start no earlier than 2010-01-06 |
| 496 |  | Prepare functional specifications | 14d | 2010-01-12 A | 2010-01-29 A | 495 | 100% |  |  |
| 497 |  | Review Functional specification | 5d | 2010-02-01 A | 2010-02-05 A | 496 | 100% |  |  |
| 498 |  | Update requirements and functional specification | 10d | 2010-02-08 A | 2010-02-19 A | 497 | 100% |  |  |
| 499 |  | Prepare design specification | 20d | 2010-02-22 A | 2010-03-19 | 498 | 20% | 35d |  |
| 500 |  | Review design specifications | 5d | 2010-03-22 | 2010-03-26 | 499 |  | 25d |  |
| 501 | 1.7.7 | **CGMM 1.0** | 1d? | 2008-11-03 | 2008-11-03 |  |  | 399d |  |
| 502 |  | TBD | 1d? | 2008-11-03 | 2008-11-03 |  |  | 389d |  |
| 503 | 1.7.8 | **WebSSO 1.4** | 61d | 2008-09-22 A | 2008-12-15 A |  | 100% |  |  |
| 504 | 1.7.8.1 | **Inception** | 10d | 2008-09-22 A | 2008-10-03 A |  | 100% |  |  |
| 505 |  | Research and prototype | 10d | 2008-09-22 A | 2008-10-03 A |  | 100% |  | start no earlier than 2008-09-22 |
| 506 | 1.7.8.2 | **Construction** | 16d | 2008-11-24 A | 2008-12-15 A |  | 100% |  |  |
| 507 |  | Defect fixes | 4d | 2008-11-24 A | 2008-12-01 A |  | 100% |  | start no earlier than 2008-11-24 |
| 508 |  | Research/Support | 10d | 2008-12-02 A | 2008-12-15 A | 507 | 100% |  |  |
| 509 | 1.7.9 | **caFramework** | 1d? | 2008-11-03 | 2008-11-03 |  |  | 399d |  |
| 510 |  | TBD | 1d? | 2008-11-03 | 2008-11-03 |  |  | 389d |  |

## Version 2 (saved 2010-03-02, file SDK-CSM Task Plan_CGMM.mpp)

Note of the change: Commit of SDK docs from Shared drive to SVN.

Last finish 2010-04-30 → 2010-05-14 (+14d). Complete tasks 302 → 301.

Added:

| ID | Task | Duration | Start | Finish | Predecessors | Constraint | Resources |
| --- | --- | --- | --- | --- | --- | --- | --- |
| 382 | **CGMM 0.7** | 23d | 2010-03-02 | 2010-04-01 |  |  |  |
| 383 | **Construction** | 4d | 2010-03-02 | 2010-03-05 |  |  |  |
| 384 | Upgrade to caGrid 1.3 jars | 2d | 2010-03-02 | 2010-03-03 |  | start no earlier than 2010-03-02 | Vijay |
| 385 | Update BDA build script | 2d | 2010-03-04 | 2010-03-05 | 384 |  | Vijay |
| 386 | **Testing** | 5d | 2010-03-08 | 2010-03-12 |  |  |  |
| 387 | Execute test cases | 5d | 2010-03-08 | 2010-03-12 | 385 |  | Vijay |
| 388 | Provide test support | 5d | 2010-03-08 | 2010-03-12 | 385 |  | Vijay |
| 389 | **Transition** | 4d | 2010-03-29 | 2010-04-01 |  |  |  |
| 390 | Update Documentation | 2d | 2010-03-29 | 2010-03-30 |  | start no earlier than 2010-03-29 | Vijay |
| 391 | Release CGMM | 2d | 2010-03-31 | 2010-04-01 | 390 |  | Vijay |

Removed: 1 Task Plan

Changed:

| ID | Task | Start | Finish | Duration | Complete | Total float | Predecessors | Other |
| --- | --- | --- | --- | --- | --- | --- | --- | --- |
| 411 | Prepare task plan |  |  |  |  |  | 410 → none | resources Satish → none |
| 412 | Planning the release activities |  |  |  |  |  | 411 → none | resources Satish → none |
| 413 | Prepare long term scope |  |  |  |  | 0d → 10d | 412 → none |  |
| 434 | **5.0 Release** |  | 2010-04-23 → 2010-05-14 (+21d) | 415d? → 430d? | 63% → 62% | 5d → 0d |  |  |
| 435 | **Support** |  | 2010-02-26 A → 2009-11-02 A (-116d) | 104d → 20d |  |  |  |  |
| 436 | **Management support** |  | 2010-02-26 A → 2009-11-02 A (-116d) | 104d → 20d |  |  |  |  |
| 440 | **caCORE SDK 5.0** |  | 2010-04-23 → 2010-05-14 (+21d) | 385d? → 400d? | 22% → 36% | 5d → 0d |  |  |
| 449 | **Elaboration** |  | 2010-04-23 → 2010-05-14 (+21d) | 130d → 145d | 11% → 20% | 15d → 0d |  |  |
| 452 | **Research** | 2010-03-01 → 2010-03-22 (+21d) | 2010-04-23 → 2010-05-14 (+21d) |  |  | 15d → 0d |  |  |
| 454 | Prototype basic data types | 2010-03-01 → 2010-03-22 (+21d) | 2010-04-23 → 2010-05-14 (+21d) |  |  | 15d → 0d |  |  |
| 501 | **CLM 5.0** |  |  |  | 71% → 91% |  |  |  |
| 510 | **Elaboration** |  |  |  | 64% → 87% |  |  |  |
| 511 | **Requirements analysis/Design** |  |  |  | 64% → 87% |  |  |  |
| 518 | **CGMM 1.0** | 2008-11-03 → 2008-09-22 A (-42d) | 2008-11-03 → 2010-02-24 (+478d) | 1d? → 373d? | 0% → 91% | 399d → 12d |  |  |
| 520 | **WebSSO 1.4** |  | 2008-12-15 A → 2010-02-24 (+436d) | 61d → 373d? | 100% → 95% | none → 12d |  |  |
| 523 | **TBD** | 2008-11-03 → 2008-12-02 A (+29d) | 2008-11-03 → 2010-02-24 (+478d) | 1d? → 322d? | 0% → 91% | 389d → 12d |  |  |
| 526 | **caFramework** |  | 2008-11-03 → 2010-04-23 (+536d) | 1d? → 385d? |  | 399d → 15d |  |  |
| 529 | **Defect fixes** | 2008-11-24 A → 2010-02-15 A (+448d) | 2008-12-01 A → 2010-03-19 (+473d) | 4d → 25d | 100% → 47% | none → 0d |  | constraint start no earlier than 2008-11-24 → none |
| 530 | **Construction** | 2008-11-24 A → 2010-02-15 A (+448d) | 2008-12-15 A → 2010-03-19 (+459d) | 16d → 25d | 100% → 47% | none → 0d |  |  |
